# Ngwedi Onderstepoort 1 220MW Solar Power Project£¨Draft Baseline Rev.00)

Schedule from Primavera P6, 2026-08-25 to 2028-10-31, data date 2026-08-25.
Must finish by 2028-10-31

## Calendars

- Infinity Project Calender: Mon-Fri 08:00-12:00, 13:00-17:00; Sat-Sun off. Exceptions (off unless hours are given): 2026-09-24, 2026-12-16, 2026-12-25, 2027-01-01, 2027-03-22, 2027-03-26, 2027-03-29, 2027-04-27, 2027-06-16, 2027-08-09, 2027-09-24, 2027-12-16, 2027-12-27, 2028-03-21, 2028-04-14, 2028-04-17, 2028-04-27, 2028-05-01, 2028-06-16, 2028-08-09, 2028-09-25.

## Schedule

| ID | WBS | Activity | Type | Duration | Start | Finish | Predecessors | Total float | Free float | Constraint |
| --- | --- | --- | --- | --- | --- | --- | --- | --- | --- | --- |
|  | 1 | **Contract Milestone** |  |  | 2026-12-15 | 2028-08-03 |  |  |  |  |
| A15300 |  | Unconditional Approval of all Schedule 07 Management Plans | milestone | 0d | 2026-12-15 | 2026-12-15 | A1100 FS+20d | 470d |  |  |
| A15330 |  | Complete Major Earthworks (Access Roads, Levelling & Drainage) | milestone | 0d | 2027-02-26 | 2027-02-26 | A15660 | 420d |  |  |
| A15310 |  | Site Establishment 100% completed, all legal and PR Eng requirements complied with and signed off by OE | milestone | 0d | 2027-03-31 | 2027-03-31 | A15740 | 400d |  |  |
| A15320 |  | Engineering & Design: 75% IFC drawings issued | milestone | 0d | 2027-05-18 | 2027-05-18 | A16940 | 367d |  |  |
| A15410 |  | IPP substation foundations (including main transformer) 100% completed and signed off | milestone | 0d | 2027-07-29 | 2027-07-29 | A11500, A11470 | 316d |  |  |
| A15360 |  | 25% of Piles installed and signed off | milestone | 0d | 2027-08-24 | 2027-08-24 | A6540 | 299d |  |  |
| A15370 |  | 25% of tracker installed and signed off | milestone | 0d | 2027-09-10 | 2027-09-10 | A6580 | 286d |  |  |
| A15390 |  | 25% of PV modules installed and signed off | milestone | 0d | 2027-09-29 | 2027-09-29 | A6620 | 274d |  |  |
| A15380 |  | 50% of tracker installed and signed off | milestone | 0d | 2027-10-11 | 2027-10-11 | A6760 | 266d |  |  |
| A15400 |  | 25% of OHL towers installed and signed off | milestone | 0d | 2027-10-21 | 2027-10-21 | A11330 SS+35d | 258d |  |  |
| A15350 |  | Major Civil works Complete (Piling if required and Foundations of all works on site) | milestone | 0d | 2027-12-09 | 2027-12-09 | A7260 FF, A11570 FF, A12050 FF, A9031 FF, A12380 FF | 223d |  |  |
| A15340 |  | Mechanical Completion of Substation & Eskom Self-Build Works ready for electrical integration | milestone | 0d | 2028-06-09 | 2028-06-09 | A12880 | 99d |  |  |
| A15420 |  | First Section Ready for Energization (complete pre-commissioning; Eskom connection approval) | milestone | 0d | 2028-06-09 | 2028-06-09 | A12880 FF | 99d |  |  |
| A15430 |  | First Synchronization / Energization to National Grid | milestone | 0d | 2028-08-03 | 2028-08-03 | 688 | 61d |  |  |
|  | 9 | **Payment Milestone** |  |  | 2027-02-26 | 2028-10-31 |  |  |  |  |
|  | 1 | **Purchase orders** |  |  | 2027-04-02 | 2027-04-26 |  |  |  |  |
| A15790 |  | Inverters purchase order issued | milestone | 0d | 2027-04-02 | 2027-04-02 | A2730 FF | 0d | 398d | finish on 2027-04-02 |
| A15760 |  | Piles purchase order issued | milestone | 0d | 2027-04-12 | 2027-04-12 | A1190 FF | 0d | 392d | finish on 2027-04-12 |
| A15780 |  | PV modules purchase order issued | milestone | 0d | 2027-04-23 | 2027-04-23 | A1930 FF | 0d | 383d | finish on 2027-04-23 |
| A15770 |  | Trackers structure order issued | milestone | 0d | 2027-04-26 | 2027-04-26 | A1600 FF | 0d | 382d | finish on 2027-04-26 |
|  | 2 | **Site Mobilisation** |  |  | 2027-03-05 | 2027-03-31 |  |  |  |  |
| A15810 |  | Site office complete | milestone | 0d | 2027-03-05 | 2027-03-05 | A15720 FF | 0d | 415d | finish on 2027-03-05 |
| A15820 |  | All other temporary facilities complete | milestone | 0d | 2027-03-19 | 2027-03-19 | A15730 FF | 0d | 405d | finish on 2027-03-19 |
| A15800 |  | Project key personnel 100% on site | milestone | 0d | 2027-03-31 | 2027-03-31 | A15740 FF | 0d | 400d | finish on 2027-03-31 |

| ID | WBS | Activity | Type | Duration | Start | Finish | Predecessors | Total float | Free float | Constraint |
| --- | --- | --- | --- | --- | --- | --- | --- | --- | --- | --- |
|  | 3 | **Fencing & Site Roads** |  |  | 2027-02-26 | 2028-05-24 |  |  |  |  |
| A15850 |  | Internal temporary road complete | milestone | 0d | 2027-02-26 | 2027-02-26 | A15450 FF | 0d | 420d | finish on 2027-02-26 |
| A15830 |  | Site fence construction 50% complete | milestone | 0d | 2027-08-19 | 2027-08-19 | A8530 FF | 0d | 302d | finish on 2027-08-19 |
| A15840 |  | Site fence construction 100% complete | milestone | 0d | 2027-12-30 | 2027-12-30 | A8720 FF | 0d | 210d | finish on 2027-12-30 |
| A15860 |  | Internal road construction 100% complete | milestone | 0d | 2028-05-24 | 2028-05-24 | A15290 FF, A14540 FF, A14690 FF, A14840 FF, A14990 FF, A15140 FF, A15290 SF | 0d | 111d | finish on 2028-05-24 |
|  | 4 | **Piles Ex Works** |  |  | 2027-05-12 | 2027-08-27 |  |  |  |  |
| A15870 |  | Piles Ex Works for the 1st batch | milestone | 0d | 2027-05-12 | 2027-05-12 | A1220 FF | 0d | 371d | finish on 2027-05-12 |
| A15880 |  | Piles Ex Works for the 2nd batch | milestone | 0d | 2027-06-02 | 2027-06-02 | A1270 FF | 0d | 356d | finish on 2027-06-02 |
| A15890 |  | Piles Ex Works for the 3rd batch | milestone | 0d | 2027-06-24 | 2027-06-24 | A1320 FF | 0d | 341d | finish on 2027-06-24 |
| A15900 |  | Piles Ex Works for the 4th batch | milestone | 0d | 2027-07-15 | 2027-07-15 | A1370 FF | 0d | 326d | finish on 2027-07-15 |
| A15910 |  | Piles Ex Works for the 5th batch | milestone | 0d | 2027-08-05 | 2027-08-05 | A1420 FF | 0d | 311d | finish on 2027-08-05 |
| A15920 |  | Piles Ex Works for the 6th batch | milestone | 0d | 2027-08-27 | 2027-08-27 | A1470 FF | 0d | 296d | finish on 2027-08-27 |
|  | 5 | **Piles Delivery** |  |  | 2027-06-24 | 2027-10-11 |  |  |  |  |
| A15930 |  | Piles Delivery for the 1st batch | milestone | 0d | 2027-06-24 | 2027-06-24 | A1250 FF | 0d | 341d | finish on 2027-06-24 |
| A15940 |  | Piles Delivery for the 2nd batch | milestone | 0d | 2027-07-15 | 2027-07-15 | A1300 FF | 0d | 326d | finish on 2027-07-15 |
| A15950 |  | Piles Delivery for the 3rd batch | milestone | 0d | 2027-08-05 | 2027-08-05 | A1350 FF | 0d | 311d | finish on 2027-08-05 |
| A15960 |  | Piles Delivery for the 4th batch | milestone | 0d | 2027-08-27 | 2027-08-27 | A1400 FF | 0d | 296d | finish on 2027-08-27 |
| A15970 |  | Piles Delivery for the 5th batch | milestone | 0d | 2027-09-17 | 2027-09-17 | A1450 FF | 0d | 281d | finish on 2027-09-17 |
| A15980 |  | Piles Delivery for the 6th batch | milestone | 0d | 2027-10-11 | 2027-10-11 | A1500 FF | 0d | 266d | finish on 2027-10-11 |
|  | 6 | **Piles Installation** |  |  | 2027-07-27 | 2027-12-09 |  |  |  |  |
| A15990 |  | Piles installation for the 1st 36.6MW | milestone | 0d | 2027-07-27 | 2027-07-27 | A2340 FF | 0d | 318d | finish on 2027-07-27 |
| A16000 |  | Piles installation for the 2nd 36.6MW | milestone | 0d | 2027-08-24 | 2027-08-24 | A6540 FF | 0d | 299d | finish on 2027-08-24 |
| A16010 |  | Piles installation for the 3rd 36.6MW | milestone | 0d | 2027-09-20 | 2027-09-20 | A6720 FF | 0d | 280d | finish on 2027-09-20 |
| A16020 |  | Piles installation for the 4th 36.6MW | milestone | 0d | 2027-10-18 | 2027-10-18 | A6900 FF | 0d | 261d | finish on 2027-10-18 |
| A16030 |  | Piles installation for the 5th 36.6MW | milestone | 0d | 2027-11-12 | 2027-11-12 | A7080 FF | 0d | 242d | finish on 2027-11-12 |
| A16040 |  | Piles installation for the 6th 36.6MW | milestone | 0d | 2027-12-09 | 2027-12-09 | A7260 FF | 0d | 223d | finish on 2027-12-09 |

| ID | WBS | Activity | Type | Duration | Start | Finish | Predecessors | Total float | Free float | Constraint |
| --- | --- | --- | --- | --- | --- | --- | --- | --- | --- | --- |
|  | 7 | **Inverters Ex Works** |  |  | 2027-07-30 | 2027-08-30 |  |  |  |  |
| A16050 |  | Inverters Ex Works for the 1st batch | milestone | 0d | 2027-07-30 | 2027-07-30 | A2770 FF | 0d | 315d | finish on 2027-07-30 |
| A16060 |  | Inverters Ex Works for the 2nd batch | milestone | 0d | 2027-08-30 | 2027-08-30 | A2830 FF | 0d | 295d | finish on 2027-08-30 |
|  | 8 | **Inverters Delivery** |  |  | 2027-08-31 | 2027-09-29 |  |  |  |  |
| A16070 |  | Inverters Delivery for the 1st batch | milestone | 0d | 2027-08-31 | 2027-08-31 | A2800 FF | 0d | 294d | finish on 2027-08-31 |
| A16080 |  | Inverters Delivery for the 2st batch | milestone | 0d | 2027-09-29 | 2027-09-29 | A2860 FF | 0d | 274d | finish on 2027-09-29 |
|  | 9 | **Inverters Installation** |  |  | 2027-12-06 | 2028-01-19 |  |  |  |  |
| A16090 |  | Inverters Installation 50% complete | milestone | 0d | 2027-12-06 | 2027-12-06 | A5330 FF | 0d | 226d | finish on 2027-12-06 |
| A16100 |  | Inverters Installation 100% complete | milestone | 0d | 2028-01-19 | 2028-01-19 | A5630 FF | 0d | 196d | finish on 2028-01-19 |
|  | 10 | **Strucutre Ex Works** |  |  | 2027-06-02 | 2027-10-25 |  |  |  |  |
| A16110 |  | Trackers Ex Works for the 1st batch | milestone | 0d | 2027-06-02 | 2027-06-02 | A1630 FF | 0d | 356d | finish on 2027-06-02 |
| A16120 |  | Trackers Ex Works for the 2nd batch | milestone | 0d | 2027-07-01 | 2027-07-01 | A1680 FF | 0d | 336d | finish on 2027-07-01 |
| A16130 |  | Trackers Ex Works for the 3rd batch | milestone | 0d | 2027-07-29 | 2027-07-29 | A1730 FF | 0d | 316d | finish on 2027-07-29 |
| A16140 |  | Trackers Ex Works for the 4th batch | milestone | 0d | 2027-08-27 | 2027-08-27 | A1780 FF | 0d | 296d | finish on 2027-08-27 |
| A16150 |  | Trackers Ex Works for the 5th batch | milestone | 0d | 2027-09-27 | 2027-09-27 | A1830 FF | 0d | 276d | finish on 2027-09-27 |
| A16160 |  | Trackers Ex Works for the 6th batch | milestone | 0d | 2027-10-25 | 2027-10-25 | A1880 FF | 0d | 256d | finish on 2027-10-25 |
|  | 11 | **Structure Delivery** |  |  | 2027-07-15 | 2027-12-06 |  |  |  |  |
| A16170 |  | Trackers Delivery for the 1st batch | milestone | 0d | 2027-07-15 | 2027-07-15 | A1660 FF | 0d | 326d | finish on 2027-07-15 |
| A16180 |  | Trackers Delivery for the 2nd batch | milestone | 0d | 2027-08-13 | 2027-08-13 | A1710 FF | 0d | 306d | finish on 2027-08-13 |
| A16190 |  | Trackers Delivery for the 3rd batch | milestone | 0d | 2027-09-10 | 2027-09-10 | A1760 FF | 0d | 286d | finish on 2027-09-10 |
| A16200 |  | Trackers Delivery for the 4th batch | milestone | 0d | 2027-10-11 | 2027-10-11 | A1810 FF | 0d | 266d | finish on 2027-10-11 |
| A16210 |  | Trackers Delivery for the 5th batch | milestone | 0d | 2027-11-08 | 2027-11-08 | A1860 FF | 0d | 246d | finish on 2027-11-08 |
| A16220 |  | Trackers Delivery for the 6th batch | milestone | 0d | 2027-12-06 | 2027-12-06 | A1910 FF | 0d | 226d | finish on 2027-12-06 |
|  | 12 | **Structure Installation** |  |  | 2027-08-13 | 2028-01-05 |  |  |  |  |
| A16230 |  | Trackers installation for the 1st 36.6MW | milestone | 0d | 2027-08-13 | 2027-08-13 | A2380 FF | 0d | 306d | finish on 2027-08-13 |
| A16240 |  | Trackers installation for the 2nd 36.6MW | milestone | 0d | 2027-09-10 | 2027-09-10 | A6580 FF | 0d | 286d | finish on 2027-09-10 |
| A16250 |  | Trackers installation for the 3rd 36.6MW | milestone | 0d | 2027-10-11 | 2027-10-11 | A6760 FF | 0d | 266d | finish on 2027-10-11 |
| A16260 |  | Trackers installation for the 4th 36.6MW | milestone | 0d | 2027-11-08 | 2027-11-08 | A6940 FF | 0d | 246d | finish on 2027-11-08 |
| A16270 |  | Trackers installation for the 5th 36.6MW | milestone | 0d | 2027-12-06 | 2027-12-06 | A7120 FF | 0d | 226d | finish on 2027-12-06 |
| A16280 |  | Trackers installation for the 6th 36.6MW | milestone | 0d | 2028-01-05 | 2028-01-05 | A7300 FF | 0d | 206d | finish on 2028-01-05 |

| ID | WBS | Activity | Type | Duration | Start | Finish | Predecessors | Total float | Free float | Constraint |
| --- | --- | --- | --- | --- | --- | --- | --- | --- | --- | --- |
|  | 13 | **PV Modules Ex Works** |  |  | 2027-06-09 | 2027-12-06 |  |  |  |  |
| A16290 |  | PV modules Ex Works for the 1st batch | milestone | 0d | 2027-06-09 | 2027-06-09 | A1960 FF | 0d | 351d | finish on 2027-06-09 |
| A16300 |  | PV modules Ex Works for the 2st batch | milestone | 0d | 2027-07-15 | 2027-07-15 | A2010 FF | 0d | 326d | finish on 2027-07-15 |
| A16310 |  | PV modules Ex Works for the 3st batch | milestone | 0d | 2027-08-20 | 2027-08-20 | A2060 FF | 0d | 301d | finish on 2027-08-20 |
| A16320 |  | PV modules Ex Works for the 4st batch | milestone | 0d | 2027-08-20 | 2027-08-20 | A2060 FF | 0d | 301d | finish on 2027-08-20 |
| A16330 |  | PV modules Ex Works for the 5st batch | milestone | 0d | 2027-09-27 | 2027-09-27 | A2110 FF | 0d | 276d | finish on 2027-09-27 |
| A16340 |  | PV modules Ex Works for the 6st batch | milestone | 0d | 2027-11-01 | 2027-11-01 | A2160 FF | 0d | 251d | finish on 2027-11-01 |
| A16350 |  | PV modules Ex Works for the 7st batch | milestone | 0d | 2027-12-06 | 2027-12-06 | A2210 FF | 0d | 226d | finish on 2027-12-06 |
| A16360 |  | PV modules Ex Works for the 8st batch | milestone | 0d | 2027-12-06 | 2027-12-06 | A2210 FF | 0d | 226d | finish on 2027-12-06 |
|  | 14 | **PV Modules Delivery** |  |  | 2027-07-22 | 2028-01-19 |  |  |  |  |
| A16370 |  | PV modules delivery for the 1st batch | milestone | 0d | 2027-07-22 | 2027-07-22 | A1990 FF | 0d | 321d | finish on 2027-07-22 |
| A16380 |  | PV modules delivery for the 2nd batch | milestone | 0d | 2027-08-27 | 2027-08-27 | A2040 FF | 0d | 296d | finish on 2027-08-27 |
| A16390 |  | PV modules delivery for the 3rd batch | milestone | 0d | 2027-10-04 | 2027-10-04 | A2090 FF | 0d | 271d | finish on 2027-10-04 |
| A16400 |  | PV modules delivery for the 4th batch | milestone | 0d | 2027-10-04 | 2027-10-04 | A2090 FF | 0d | 271d | finish on 2027-10-04 |
| A16410 |  | PV modules delivery for the 5th batch | milestone | 0d | 2027-11-08 | 2027-11-08 | A2140 FF | 0d | 246d | finish on 2027-11-08 |
| A16420 |  | PV modules delivery for the 6th batch | milestone | 0d | 2027-12-13 | 2027-12-13 | A2190 FF | 0d | 221d | finish on 2027-12-13 |
| A16430 |  | PV modules delivery for the 7th batch | milestone | 0d | 2028-01-19 | 2028-01-19 | A2240 FF | 0d | 196d | finish on 2028-01-19 |
| A16440 |  | PV modules delivery for the 8th batch | milestone | 0d | 2028-01-19 | 2028-01-19 | A2240 FF | 0d | 196d | finish on 2028-01-19 |
|  | 15 | **PV Modules Installation** |  |  | 2027-08-31 | 2028-02-18 |  |  |  |  |
| A16450 |  | PV modules installation for the 1st 62 MW | milestone | 0d | 2027-08-31 | 2027-08-31 | A2420 FF | 0d | 294d | finish on 2027-08-31 |
| A16460 |  | PV modules installation for the 2nd 63 MW | milestone | 0d | 2027-09-29 | 2027-09-29 | A6620 FF | 0d | 274d | finish on 2027-09-29 |
| A16470 |  | PV modules installation for the 3rd 63 MW | milestone | 0d | 2027-11-03 | 2027-11-03 | A6800 FF | 0d | 249d | finish on 2027-11-03 |
| A16480 |  | PV modules installation for the 4th 100 MW | milestone | 0d | 2027-11-03 | 2027-11-03 | A6800 FF | 0d | 249d | finish on 2027-11-03 |
| A16490 |  | PV modules installation for the 5th 100 MW | milestone | 0d | 2027-12-08 | 2027-12-08 | A6980 FF | 0d | 224d | finish on 2027-12-08 |
| A16500 |  | PV modules installation for the 6th 100 MW | milestone | 0d | 2028-01-14 | 2028-01-14 | A7160 FF | 0d | 199d | finish on 2028-01-14 |
| A16510 |  | PV modules installation for the 7th 100 MW | milestone | 0d | 2028-02-18 | 2028-02-18 | A7340 FF | 0d | 174d | finish on 2028-02-18 |
| A16520 |  | PV modules installation for the 8th 100 MW | milestone | 0d | 2028-02-18 | 2028-02-18 | A7340 FF | 0d | 174d | finish on 2028-02-18 |

| ID | WBS | Activity | Type | Duration | Start | Finish | Predecessors | Total float | Free float | Constraint |
| --- | --- | --- | --- | --- | --- | --- | --- | --- | --- | --- |
|  | 16 | **MV Cables** |  |  | 2027-08-12 | 2027-12-23 |  |  |  |  |
| A16530 |  | The 1st batch of Material delivery to site | milestone | 0d | 2027-08-12 | 2027-08-12 | A3230 FF | 0d | 307d | finish on 2027-08-12 |
| A16540 |  | The 2nd batch of Material delivery to site | milestone | 0d | 2027-09-02 | 2027-09-02 | A3270 FF | 0d | 292d | finish on 2027-09-02 |
| A16550 |  | The 1st batch of Material installed | milestone | 0d | 2027-11-12 | 2027-11-12 | A5820 FF | 0d | 242d | finish on 2027-11-12 |
| A16560 |  | The 2nd batch of Material installed | milestone | 0d | 2027-12-23 | 2027-12-23 | A5910 FF | 0d | 214d | finish on 2027-12-23 |
|  | 17 | **DC Cables** |  |  | 2027-10-11 | 2028-06-14 |  |  |  |  |
| A16570 |  | The 1st batch of Material delivery to site | milestone | 0d | 2027-10-11 | 2027-10-11 | A3590 FF | 0d | 266d | finish on 2027-10-11 |
| A16580 |  | The 2nd batch of Material delivery to site | milestone | 0d | 2027-11-01 | 2027-11-01 | A3610 FF | 0d | 251d | finish on 2027-11-01 |
| A16590 |  | The 1st batch of Material installed | milestone | 0d | 2028-02-23 | 2028-02-23 | A7620 FF | 0d | 171d | finish on 2028-02-23 |
| A16600 |  | The 2nd batch of Material installed | milestone | 0d | 2028-06-14 | 2028-06-14 | A7950 FF | 0d | 96d | finish on 2028-06-14 |
|  | 18 | **Fibre Optic cables** |  |  | 2028-02-02 | 2028-03-29 |  |  |  |  |
| A16620 |  | The substation cables installed | milestone | 0d | 2028-02-02 | 2028-02-02 | A11890 FF | 0d | 186d | finish on 2028-02-02 |
| A16610 |  | The PV area cables installed | milestone | 0d | 2028-03-29 | 2028-03-29 | A11210 FF | 0d | 147d | finish on 2028-03-29 |
|  | 19 | **Substation Completion** |  |  | 2027-05-19 | 2028-05-03 |  |  |  |  |
| A16630 |  | Substation earth works up to ¡À0.000 complete | milestone | 0d | 2027-05-19 | 2027-05-19 | A11460 FF, A11960 FF, A12300 FF | 0d | 366d | finish on 2027-05-19 |
| A16640 |  | Substation civil structure works complete | milestone | 0d | 2027-09-27 | 2027-09-27 | A11510 FF, A11990 FF | 0d | 276d | finish on 2027-09-27 |
| A16650 |  | Substation auxiliary and MEP works complete | milestone | 0d | 2027-12-06 | 2027-12-06 | A11840 FF, A11640 FF | 0d | 226d | finish on 2027-12-06 |
| A16660 |  | Substation equipment installed complete | milestone | 0d | 2028-05-03 | 2028-05-03 | A12280 FF, A11940 FF | 0d | 126d | finish on 2028-05-03 |
|  | 20 | **Self-built Dx works** |  |  | 2028-06-02 | 2028-06-02 |  |  |  |  |
| A16670 |  | Provision of signed Distribution Substation Completion Certificate | milestone | 0d | 2028-06-02 | 2028-06-02 | A12990 FF | 0d | 104d | finish on 2028-06-02 |
|  | 21 | **Self-built Tx works** |  |  | 2028-05-05 | 2028-05-05 |  |  |  |  |
| A16680 |  | Provision of signed Transmission Self-Build Works Completion Certificate | milestone | 0d | 2028-05-05 | 2028-05-05 | A13030 FF | 0d | 124d | finish on 2028-05-05 |
|  | 22 | **Substation Energisation** |  |  | 2028-06-09 | 2028-06-09 |  |  |  |  |
| A16690 |  | Provision of signed Substation Completion Certificate signed | milestone | 0d | 2028-06-09 | 2028-06-09 | A12880 FF | 0d | 99d | finish on 2028-06-09 |

| ID | WBS | Activity | Type | Duration | Start | Finish | Predecessors | Total float | Free float | Constraint |
| --- | --- | --- | --- | --- | --- | --- | --- | --- | --- | --- |
|  | 23 | **Cold Commissioning** |  |  | 2028-06-09 | 2028-07-27 |  |  |  |  |
| A16700 |  | Cold Commissioning 50% | milestone | 0d | 2028-06-09 | 2028-06-09 | A13310 FF | 0d | 99.5d | finish on 2028-06-09 |
| A16710 |  | Cold Commissioning 100% | milestone | 0d | 2028-07-27 | 2028-07-27 | A13460 FF | 0d | 66.5d | finish on 2028-07-27 |
|  | 24 | **Energization** |  |  | 2028-06-09 | 2028-06-09 |  |  |  |  |
| A16720 |  | Energization | milestone | 0d | 2028-06-09 | 2028-06-09 | A12880 FF | 0d | 99d | finish on 2028-06-09 |
|  | 25 | **Commercial Operations Date** |  |  | 2028-10-03 | 2028-10-03 |  |  |  |  |
| A16730 |  | Commercial Operations Date | milestone | 0d | 2028-10-03 | 2028-10-03 | 701 FF | 0d | 21d | finish on 2028-10-03 |
|  | 26 | **Taking-Over achieved** |  |  | 2028-10-31 | 2028-10-31 |  |  |  |  |
| A16740 |  | The Taking-Over Certificate as per EPC Contract issued and signed by Employer | milestone | 0d | 2028-10-31 | 2028-10-31 | A15690 FF | 0d |  | finish on 2028-10-31 |
|  | 2 | **Early Work** |  |  | 2026-08-25 | 2026-11-17 |  |  |  |  |
| A1010 |  | Award of design subcontracts for the grid-works facilities |  | 20d | 2026-08-25 | 2026-09-21 |  | 0d |  |  |
| A1020 |  | Design for the temporary site office |  | 27d | 2026-08-25 | 2026-10-01 |  | 33d |  |  |
| A1030 |  | Transformer slot booking and design document submission for the 800 MVA main transformer |  | 45d | 2026-08-25 | 2026-10-27 |  | 15d |  |  |
| A1040 |  | Design for ESKOM works - NTCSA works |  | 45d | 2026-08-25 | 2026-10-27 |  | 15d |  |  |
| A1050 |  | Stakeholder Engagement Plan |  | 35d | 2026-08-25 | 2026-10-13 |  | 25d |  |  |
| A1060 |  | Project Labour Plan |  | 35d | 2026-08-25 | 2026-10-13 |  | 25d |  |  |
| A1070 |  | Grievance Mechanism |  | 35d | 2026-08-25 | 2026-10-13 |  | 25d |  |  |
| A1080 |  | Security subcontract negotiation |  | 28d | 2026-08-25 | 2026-10-02 |  | 32d |  |  |
| A1090 |  | Fence subcontract negotiation |  | 28d | 2026-08-25 | 2026-10-02 |  | 32d |  |  |
| A1100 |  | Short listing and compliance verification of construction subcontracts for the grid-works |  | 60d | 2026-08-25 | 2026-11-17 |  | 0d |  |  |
| A1110 |  | PV Design awards |  | 20d | 2026-08-25 | 2026-09-21 |  | 0d |  |  |
| A1120 |  | Early Work period complete | milestone | 0d | 2026-11-17 | 2026-11-17 | A1010 FF, A1020 FF, A1030 FF, A1040 FF, A1050 FF, A1060 FF, A1070 FF, A1080 FF, A1090 FF, A1100 FF, A1110 FF | 0d |  |  |
|  | 8 | **Pre-NTP** |  |  | 2026-11-18 | 2027-03-31 |  |  |  |  |
| A15750 |  | Issue of NTP | milestone | 0d | 2026-11-18 | 2026-11-18 | A1120 | 0d |  |  |

| ID | WBS | Activity | Duration | Start | Finish | Predecessors | Total float | Free float |
| --- | --- | --- | --- | --- | --- | --- | --- | --- |
|  | 1 | **Pull Out Test** |  | 2026-11-18 | 2027-01-28 |  |  |  |
| A2250 |  | Mobilization of piling rig & pull?out test equipment to site | 5d | 2026-11-18 | 2026-11-24 | A1000, A1100, A15750 SS | 0d |  |
| A2260 |  | Delivery of test?pile specimens to site | 6d | 2026-11-25 | 2026-12-02 | A2250 | 0d |  |
| A2270 |  | Site layout & clearing for test?pile locations | 13d | 2026-12-03 | 2026-12-22 | A2260 | 0d |  |
| A2280 |  | Installation of test?screw piles | 10d | 2026-12-23 | 2027-01-07 | A2270 | 0d |  |
| A2290 |  | Pull?out & horizontal load testing | 10d | 2027-01-08 | 2027-01-21 | A2280 | 0d |  |
| A2300 |  | Third?party test report compilation, review & client?consultant approval | 5d | 2027-01-22 | 2027-01-28 | A2290 | 0d |  |
|  | 2 | **Temporary Facility** |  | 2026-11-18 | 2027-03-31 |  |  |  |
| A15700 |  | Material Procurement | 30d | 2026-11-18 | 2026-12-31 | A1100, A15750 SS, A3740 | 0d |  |
| A15710 |  | Platform clearance and leveling | 25d | 2026-12-02 | 2027-01-08 | A15700 SS+10d | 0d |  |
| A15720 |  | Temporary office eraction | 40d | 2027-01-11 | 2027-03-05 | A15710 | 0d |  |
| A15730 |  | funiture installation | 25d | 2027-02-15 | 2027-03-19 | A15720 FF+10d, A15700 FF+10d | 0d |  |
| A15740 |  | key member mobilizase | 5d | 2027-03-23 | 2027-03-31 | A15730 | 0d |  |
|  | 3 | **Access Road** |  | 2026-11-18 | 2027-02-26 |  |  |  |
| A15460 |  | Measurement and layout | 5d | 2026-11-18 | 2026-11-24 | A15750 SS | 123d | 0d |
| A15470 |  | Clearing and obstacle removal | 8d | 2026-11-25 | 2026-12-04 | A15460 | 123d | 0d |
| A15480 |  | Excavation and backfilling of the roadbed | 10d | 2026-12-07 | 2026-12-21 | A15470 | 123d | 0d |
| A15490 |  | Compaction and watering of the roadbed | 4d | 2026-12-22 | 2026-12-28 | A15480 | 123d | 0d |
| A15500 |  | Leveling and compaction of the roadbed | 4d | 2026-12-29 | 2027-01-04 | A15490 | 123d | 0d |
| A15510 |  | Detection of roadbed compaction degree | 2d | 2027-01-05 | 2027-01-06 | A15500 | 123d | 0d |
| A15520 |  | Inspection of G6 materials | 2d | 2027-01-07 | 2027-01-08 | A15510 | 123d | 0d |
| A15530 |  | Compaction of G6 base layer | 6d | 2027-01-11 | 2027-01-18 | A15520 | 123d | 0d |
| A15540 |  | Spraying and mixing of G6 base layer | 3d | 2027-01-19 | 2027-01-21 | A15530 | 123d | 0d |
| A15550 |  | Leveling and compaction of G6 base layer | 4d | 2027-01-22 | 2027-01-27 | A15540 | 123d | 0d |
| A15560 |  | Detection of compaction degree of G6 base layer | 1d | 2027-01-28 | 2027-01-28 | A15550 | 123d | 0d |
| A15570 |  | Inspection of G5 materials | 2d | 2027-01-29 | 2027-02-01 | A15560 | 123d | 0d |
| A15580 |  | Compaction of G5 surface layer | 5d | 2027-02-02 | 2027-02-08 | A15570 | 123d | 0d |
| A15610 |  | Excavation of side ditch | 8d | 2027-02-02 | 2027-02-11 | A15570 | 123d | 0d |
| A15590 |  | Spraying and rolling of G5 surface layer | 3d | 2027-02-09 | 2027-02-11 | A15580 | 123d | 0d |
| A15600 |  | Detection of compaction degree of G5 surface layer | 1d | 2027-02-12 | 2027-02-12 | A15590 | 123d | 0d |
| A15620 |  | Concrete protection of side ditch | 7d | 2027-02-12 | 2027-02-22 | A15610 | 123d | 0d |
| A15630 |  | Repair of shoulder | 4d | 2027-02-15 | 2027-02-18 | A15600 | 123d | 0d |
| A15640 |  | Installation of signboards | 2d | 2027-02-19 | 2027-02-22 | A15630 | 123d | 0d |
| A15650 |  | Completion measurement | 2d | 2027-02-23 | 2027-02-24 | A15620, A15640 | 123d | 0d |
| A15660 |  | Acceptance inspection | 2d | 2027-02-25 | 2027-02-26 | A15650 | 123d | 0d |

| ID | WBS | Activity | Duration | Start | Finish | Predecessors | Total float |
| --- | --- | --- | --- | --- | --- | --- | --- |
|  | 3 | **Design** |  | 2026-09-22 | 2027-07-01 |  |  |
|  | 4 | **General Design** |  | 2026-09-22 | 2026-10-26 |  |  |
| A3730 |  | Block Plan Layout | 18d | 2026-09-22 | 2026-10-16 | A1110 | 0d |
| A3740 |  | Temporary Building Layout Drawing | 24d | 2026-09-22 | 2026-10-26 | A3730 SS | 16d |
|  | 1 | **PV Field** |  | 2026-09-22 | 2027-07-01 |  |  |
|  | 1 | **Pile post** |  | 2026-09-22 | 2027-03-10 |  |  |
| A1000 |  | Issue Vendor Info Requirement & Receive Vendor Submission | 7d | 2026-09-22 | 2026-10-01 | A1110 | 33d |
| A1130 |  | Develop & Review Drawings (Internal / Client / Consultant) | 20d | 2027-01-29 | 2027-02-25 | A1000, A2300, A3730 | 0d |
| A1140 |  | Resolve Technical Clarifications & Prepare Return?for?Manufacture Package | 5d | 2027-02-26 | 2027-03-04 | A1130 | 0d |
| A1150 |  | Issue Return?for?Manufacture Info & Obtain Vendor Acknowledgement | 4d | 2027-03-05 | 2027-03-10 | A1140 | 0d |
|  | 2 | **Structure** |  | 2026-09-22 | 2027-03-25 |  |  |
| A1510 |  | Issue Vendor Info Requirement & Receive Vendor Submission | 10d | 2026-09-22 | 2026-10-06 | A1110 | 79d |
| A1520 |  | Develop & Review Drawings (Internal / Client / Consultant) | 25d | 2027-01-29 | 2027-03-04 | A1510, A3730, A1130 SS | 0d |
| A1530 |  | Resolve Technical Clarifications & Prepare Return?for?Manufacture Package | 10d | 2027-03-05 | 2027-03-18 | A1520 | 0d |
| A1540 |  | Issue Return?for?Manufacture Info & Obtain Vendor Acknowledgement | 4d | 2027-03-19 | 2027-03-25 | A1530 | 0d |
|  | 3 | **PV Module** |  | 2026-09-22 | 2027-03-24 |  |  |
| A1550 |  | Issue Vendor Info Requirement & Receive Vendor Submission | 5d | 2026-09-22 | 2026-09-29 | A1110 | 84d |
| A1560 |  | Develop & Review Drawings (Internal / Client / Consultant) | 29d | 2027-01-29 | 2027-03-10 | A1550, A1520 SS, A3730 | 0d |
| A1570 |  | Resolve Technical Clarifications & Prepare Return?for?Manufacture Package | 5d | 2027-03-11 | 2027-03-17 | A1560 | 0d |
| A1580 |  | Issue Return?for?Manufacture Info & Obtain Vendor Acknowledgement | 4d | 2027-03-18 | 2027-03-24 | A1570 | 0d |
|  | 4 | **Power Station** |  | 2026-09-22 | 2027-02-03 |  |  |
| A2900 |  | Issue Vendor Info Requirement & Receive Vendor Submission | 15d | 2026-09-22 | 2026-10-13 | A1110 | 3d |
| A2910 |  | Develop & Review Drawings (Internal / Client / Consultant) | 50d | 2026-10-19 | 2026-12-29 | A2900, A3730 | 0d |
| A2920 |  | Resolve Technical Clarifications & Prepare Return?for?Manufacture Package | 15d | 2026-12-30 | 2027-01-20 | A2910 | 0d |
| A2930 |  | Issue Return?for?Manufacture Info & Obtain Vendor Acknowledgement | 10d | 2027-01-21 | 2027-02-03 | A2920 | 0d |

Notes:
- A1130: Steps: Design Develop; Client Approvel 12 Days
- A1520: Steps: Design Develop; Client review and approvel 12 Days
- A1560: Steps: Design develop; Client review and approvel 12 Days
- A2910: Steps: Design Develop; Client review and approvel 12 Days

| ID | WBS | Activity | Duration | Start | Finish | Predecessors | Total float | Free float |
| --- | --- | --- | --- | --- | --- | --- | --- | --- |
|  | 5 | **Inverter** |  | 2026-11-04 | 2027-02-16 |  |  |  |
| A2430 |  | Issue Vendor Info Requirement & Receive Vendor Submission | 10d | 2026-11-04 | 2026-11-17 | A1110 FS+30d | 0d |  |
| A2440 |  | Develop & Review Drawings (Internal / Client / Consultant) | 37d | 2026-11-18 | 2027-01-12 | A2430, A3730 | 0d |  |
| A2450 |  | Resolve Technical Clarifications & Prepare Return?for?Manufacture Package | 21d | 2027-01-13 | 2027-02-10 | A2440 | 0d |  |
| A2460 |  | Issue Return?for?Manufacture Info & Obtain Vendor Acknowledgement | 4d | 2027-02-11 | 2027-02-16 | A2450 | 0d |  |
|  | 6 | **Cable Schedule** |  | 2027-01-29 | 2027-07-01 |  |  |  |
|  | 1 | **MV Cable** |  | 2027-02-17 | 2027-05-18 |  |  |  |
| A3120 |  | SLD single-line diagram + short circuit/protective setting value calculation | 20d | 2027-02-17 | 2027-03-16 | A3180 FF+5d, A2930, A2460, A2930 FF, A3730 | 0d |  |
| A3130 |  | MV collector line consists of the list and the list of joint terminals. | 15d | 2027-03-17 | 2027-04-09 | A3120 | 0d |  |
| A3140 |  | Review Drawings (Internal / Client / Consultant) | 21d | 2027-04-12 | 2027-05-11 | A3130 | 0d |  |
| A3150 |  | issue for IFC and Procurement | 5d | 2027-05-12 | 2027-05-18 | A3140 | 0d |  |
|  | 2 | **LV Cable** |  | 2027-02-17 | 2027-05-18 |  |  |  |
| A3390 |  | LV routing + cross-sectional area / pressure drop calculation + list of contents | 15d | 2027-02-17 | 2027-03-09 | A1110, A2930, A2460, A3730 | 85d | 0d |
| A3400 |  | LV Construction Drawings | 20d | 2027-03-10 | 2027-04-09 | A3390 | 85d | 0d |
| A3410 |  | Review Drawings (Internal / Client / Consultant) | 21d | 2027-04-12 | 2027-05-11 | A3400 | 85d | 0d |
| A3420 |  | issue for IFC and Procurement | 5d | 2027-05-12 | 2027-05-18 | A3410, A3410 FF | 85d | 0d |
|  | 3 | **DC Cable** |  | 2027-03-30 | 2027-07-01 |  |  |  |
| A3500 |  | String connection diagram + DC cable list | 20d | 2027-03-30 | 2027-04-26 | A1580, A1540, A1150, A3730 | 0d |  |
| A3510 |  | DC construction drawing IFC | 20d | 2027-04-28 | 2027-05-25 | A3500 | 0d |  |
| A3530 |  | Review Drawings (Internal / Client / Consultant) | 21d | 2027-05-26 | 2027-06-24 | A3510 | 0d |  |
| A3540 |  | issue for IFC and Procurement | 5d | 2027-06-25 | 2027-07-01 | A3530, A3530 FF, A3530 SS | 0d |  |
|  | 4 | **Optical Fiber** |  | 2027-02-17 | 2027-06-08 |  |  |  |
| A3920 |  | Network Cable Datasheet | 15d | 2027-02-17 | 2027-03-09 | A3120 SS | 101d | 0d |
| A3930 |  | Cable Schedule | 10d | 2027-02-17 | 2027-03-02 | A3920 SS | 101d | 0d |
| A3940 |  | Route and Trench Details | 15d | 2027-03-03 | 2027-03-24 | A3930 | 101d | 25d |
| A3950 |  | Review Drawings (Internal / Client / Consultant) | 21d | 2027-05-04 | 2027-06-01 | A3940, A17060 | 76d | 0d |
| A3960 |  | issue for IFC and Procurement | 5d | 2027-06-02 | 2027-06-08 | A3950 | 76d | 0d |

Notes:
- A2440: Steps: Design Develop; Client review and approvel 12 Days

| ID | WBS | Activity | Duration | Start | Finish | Predecessors | Total float | Free float |
| --- | --- | --- | --- | --- | --- | --- | --- | --- |
|  | 5 | **Earthing** |  | 2027-01-29 | 2027-05-10 |  |  |  |
| A5640 |  | Earthing Cable Datasheet | 10d | 2027-01-29 | 2027-02-11 | A2300 | 91d | 0d |
| A5650 |  | Earthing and Lightning Layout | 12d | 2027-02-12 | 2027-03-01 | A5640 | 91d | 0d |
| A5660 |  | Earthing System and lighting protection report | 12d | 2027-02-12 | 2027-03-01 | A5650 SS | 91d | 0d |
| A5690 |  | Develop & Review Drawings (Internal / Client / Consultant) | 21d | 2027-03-02 | 2027-04-02 | A5660 | 91d | 0d |
| A5700 |  | Resolve Technical Clarifications & Prepare Return?for?Manufacture Package | 15d | 2027-04-05 | 2027-04-23 | A5690, A5690 FF | 91d | 0d |
| A5710 |  | Issue IFC Drawing for Procurement and Construction | 10d | 2027-04-26 | 2027-05-10 | A5700, A5700 FF | 91d | 0d |
|  | 7 | **Road** |  | 2026-09-22 | 2027-01-07 |  |  |  |
| A3750 |  | Roads Layout (Preliminary) | 12d | 2026-09-22 | 2026-10-08 | A1110 | 347d | 0d |
| A3760 |  | Site access - Layout details | 12d | 2026-10-09 | 2026-10-26 | A3750 | 347d | 0d |
| A3770 |  | Road Cross-section details | 12d | 2026-10-09 | 2026-10-26 | A3760 SS | 347d | 0d |
| A3780 |  | Road Long Section Chainages details | 12d | 2026-10-09 | 2026-10-26 | A3770 SS | 347d | 0d |
| A3790 |  | Flood Line (1% AEP event) | 12d | 2026-10-09 | 2026-10-26 | A3780 SS | 347d | 0d |
| A3800 |  | Storm Water Management Plan | 12d | 2026-10-27 | 2026-11-11 | A3790 | 347d | 0d |
| A3810 |  | Material Layer Works | 12d | 2026-11-12 | 2026-11-27 | A3800 | 347d | 0d |
| A3820 |  | Review Drawings (Internal / Client / Consultant) | 21d | 2026-11-30 | 2026-12-30 | A3810 | 347d | 0d |
| A3830 |  | Issue for IFC | 5d | 2026-12-31 | 2027-01-07 | A3820 | 347d | 331d |
|  | 8 | **O&M Building** |  | 2026-09-22 | 2026-12-24 |  |  |  |
| A8100 |  | Architectural Drawing | 20d | 2026-09-22 | 2026-10-20 | A1110 | 263d | 0d |
| A8110 |  | Strip Foundation Reinforcing Details | 20d | 2026-09-22 | 2026-10-20 | A1110 | 263d | 0d |
| A8120 |  | O&M building area Fence Details and Specifications | 20d | 2026-09-22 | 2026-10-20 | A1110 | 263d | 0d |
| A8130 |  | O&M building structural steel | 20d | 2026-09-22 | 2026-10-20 | A1110 | 263d | 0d |
| A8140 |  | O&M building area Platform earthworks | 20d | 2026-09-22 | 2026-10-20 | A1110 | 263d | 0d |
| A8150 |  | All the Package | 20d | 2026-10-21 | 2026-11-17 | A8140, A8110, A8120, A8130, A8100 | 263d | 0d |
| A8170 |  | Review Drawings (Internal / Client / Consultant) | 21d | 2026-11-18 | 2026-12-17 | A8150 | 263d | 0d |
| A8180 |  | Issue for IFC | 5d | 2026-12-18 | 2026-12-24 | A8170, A8170 FF | 263d | 44d |

Notes:
- A5690: Steps: Design Develop; Client review and approvel 12 Days

| ID | WBS | Activity | Duration | Start | Finish | Predecessors | Total float | Free float |
| --- | --- | --- | --- | --- | --- | --- | --- | --- |
|  | 9 | **Fencing & CCTV** |  | 2026-09-22 | 2027-02-01 |  |  |  |
| A3840 |  | Fence Coordinates | 10d | 2026-09-22 | 2026-10-06 | A1110 | 0d |  |
| A3850 |  | Fence Details & Specification | 15d | 2026-10-07 | 2026-10-27 | A3840 | 0d |  |
| A3860 |  | Gate Motor Supply and Installation Detail | 10d | 2026-10-28 | 2026-11-10 | A3850 | 0d |  |
| A3870 |  | Security System & CCTV Pole Layout & Coverage | 15d | 2026-11-11 | 2026-12-01 | A3860 | 0d |  |
| A3880 |  | Electric fence zone layout | 15d | 2026-12-02 | 2026-12-23 | A3870 | 340d | 104d |
| A3890 |  | CCTV design package | 15d | 2026-12-02 | 2026-12-23 | A3870 | 0d |  |
| A3900 |  | Review Drawings (Internal / Client / Consultant) | 21d | 2026-12-24 | 2027-01-25 | A3890 | 0d |  |
| A3910 |  | Issue for IFC | 5d | 2027-01-26 | 2027-02-01 | A3900 | 0d |  |
|  | 10 | **NCU** |  | 2027-02-11 | 2027-05-13 |  |  |  |
| A16750 |  | NCU System Architecture Design (configured by blocks) | 7d | 2027-02-11 | 2027-02-19 | A3730, A2450 | 61d | 0d |
| A16760 |  | NCU On-site Layout Design (location of NCU in each block) | 7d | 2027-02-22 | 2027-03-02 | A16750 | 102d | 0d |
| A16770 |  | NCU Communication Network Design (fiber optic topology/switch) | 10d | 2027-02-22 | 2027-03-05 | A16750 | 109d | 7d |
| A16780 |  | NCU Communication Interface Design with Inverters/Box Transformers | 10d | 2027-03-03 | 2027-03-16 | A16760 | 102d | 0d |
| A16790 |  | NCU Point Table Design (data collection points of inverters/box transformers) | 12d | 2027-03-17 | 2027-04-06 | A16780, A16770, A16780 FF | 102d | 0d |
| A16830 |  | Review Drawings (Internal / Client / Consultant) | 21d | 2027-04-07 | 2027-05-06 | A16790, A16770 | 102d | 0d |
| A16840 |  | Issue for IFC | 5d | 2027-05-07 | 2027-05-13 | A16830 | 102d | 0d |
|  | 11 | **TCU** |  | 2027-02-11 | 2027-05-18 |  |  |  |
| A16850 |  | TCU System Architecture Design (configured for trackers/battery boxes) | 7d | 2027-02-11 | 2027-02-19 | A16750 SS | 61d | 0d |
| A16860 |  | TCU On-site Layout Design (installation positions at tracker/battery box locations) | 7d | 2027-02-22 | 2027-03-02 | A16850 | 86d | 25d |
| A16870 |  | TCU Control Logic Design (tracker angle control/battery box monitoring) | 12d | 2027-02-22 | 2027-03-09 | A16850 | 61d | 0d |
| A16880 |  | TCU Control Interface Design with Tracker/Battery Box | 10d | 2027-03-10 | 2027-03-24 | A16870 | 61d | 0d |
| A16890 |  | TCU Communication Interface Design with NCU/PVSCADA | 7d | 2027-03-10 | 2027-03-18 | A16870 | 74d | 13d |
| A16900 |  | TCU Point Table Design (control/status/alarm point table) | 10d | 2027-03-25 | 2027-04-09 | A16880 | 61d | 0d |
| A16930 |  | Review Drawings (Internal / Client / Consultant) | 21d | 2027-04-12 | 2027-05-11 | A16900, A16890, A16860 | 61d | 0d |
| A16940 |  | Issue for IFC | 5d | 2027-05-12 | 2027-05-18 | A16930, A16930 FF | 61d | 0d |

| ID | WBS | Activity | Duration | Start | Finish | Predecessors | Total float | Free float |
| --- | --- | --- | --- | --- | --- | --- | --- | --- |
|  | 12 | **Weather station** |  | 2027-02-22 | 2027-05-10 |  |  |  |
| A16960 |  | Meteorological station site selection design (representative positions within the site) | 7d | 2027-02-22 | 2027-03-02 | A16850 | 76d | 0d |
| A16970 |  | Meteorological station mast foundation design (concrete foundation) | 7d | 2027-03-03 | 2027-03-11 | A16960 | 81d | 0d |
| A16980 |  | Meteorological sensor layout design (irradiation/temperature/wind speed and direction) | 7d | 2027-03-03 | 2027-03-11 | A16960 | 76d | 0d |
| A16990 |  | Meteorological station equipment selection design (sensors/data collectors) | 5d | 2027-03-12 | 2027-03-18 | A16980 | 76d | 0d |
| A17000 |  | Meteorological station signal/power line routing design | 7d | 2027-03-12 | 2027-03-23 | A16970 | 81d | 5d |
| A17010 |  | Meteorological station communication interface with NCU/PVSCADA design | 7d | 2027-03-19 | 2027-04-01 | A16990 | 76d | 0d |
| A17020 |  | Meteorological station table design (meteorological data point table) | 5d | 2027-03-19 | 2027-03-30 | A16990 | 78d | 2d |
| A17060 |  | Review Drawings (Internal / Client / Consultant) | 21d | 2027-04-02 | 2027-05-03 | A17020, A17010, A16970, A17000 | 76d | 0d |
| A17070 |  | Issue for IFC | 5d | 2027-05-04 | 2027-05-10 | A17060 | 123d | 0d |
|  | 2 | **Grid Work** |  | 2026-09-22 | 2027-04-21 |  |  |  |
|  | 1 | **IPP Substataion** |  | 2026-09-22 | 2026-12-14 |  |  |  |
|  | 1 | **Civil** |  | 2026-09-22 | 2026-11-18 |  |  |  |
| A9010 |  | Platform Layout and Detail Drawing | 6d | 2026-09-22 | 2026-09-30 | A1010 | 8d | 0d |
| A9020 |  | Drainage Layout | 5d | 2026-10-01 | 2026-10-07 | A9010 | 8d | 0d |
| A9030 |  | Transformer Foundation with Oil Pit/Barrier/Drainage (Transformer plinth & oil containment) | 8d | 2026-10-01 | 2026-10-12 | A9010 | 13d | 5d |
| A9040 |  | Station Road Design (Internal road) | 5d | 2026-10-08 | 2026-10-14 | A9020 | 8d | 0d |
| A9050 |  | Fence Layout | 3d | 2026-10-15 | 2026-10-19 | A9040 | 8d | 0d |
| A9060 |  | Detail Drawing of Control Building Structure | 10d | 2026-10-20 | 2026-11-02 | A9010, A9050, A9030 | 8d | 0d |
| A9070 |  | Equipment support foundation | 7d | 2026-11-03 | 2026-11-11 | A9060 | 8d | 0d |
| A9080 |  | Detailed design report/BOQ | 5d | 2026-11-12 | 2026-11-18 | A9070 | 8d | 0d |
|  | 2 | **Primary** |  | 2026-09-22 | 2026-11-17 |  |  |  |
| A9090 |  | SLD single line diagram | 7d | 2026-09-22 | 2026-10-01 | A1010 | 22d | 0d |
| A9100 |  | indoor switchgear design (MV indoor switchgear) | 8d | 2026-10-02 | 2026-10-13 | A9090 | 22d | 0d |
| A9110 |  | Transformer sizing and review | 10d | 2026-10-02 | 2026-10-15 | A9090 | 26d | 0d |
| A9130 |  | Bay section and clamps | 5d | 2026-10-02 | 2026-10-08 | A9090 | 36d | 13d |
| A9120 |  | LV/MV cable design (selection/stock list/frame diagram/termination/laying) | 10d | 2026-10-14 | 2026-10-27 | A9100 | 23d | 0d |
| A9140 |  | Control room panel layout | 5d | 2026-10-14 | 2026-10-20 | A9100 | 22d | 0d |
| A9150 |  | Labelling layout | 3d | 2026-10-14 | 2026-10-16 | A9100 | 30d | 7d |
| A9160 |  | Equipment technical schedules | 5d | 2026-10-16 | 2026-10-22 | A9110 | 26d | 3d |
| A9170 |  | Detailed design report | 7d | 2026-10-28 | 2026-11-05 | A9090, A9100, A9110, A9120, A9130, A9140, A9150, A9160 | 23d | 0d |
| A9180 |  | Detailed design presentation (presentation) | 3d | 2026-11-06 | 2026-11-10 | A9170 | 74d | 0d |
| A9190 |  | Detailed BOQ | 5d | 2026-11-11 | 2026-11-17 | A9180 | 74d | 0d |

| ID | WBS | Activity | Duration | Start | Finish | Predecessors | Total float | Free float |
| --- | --- | --- | --- | --- | --- | --- | --- | --- |
|  | 3 | **Secondary** |  | 2026-09-22 | 2026-12-14 |  |  |  |
| A9200 |  | Component selection and data sheet review | 7d | 2026-09-22 | 2026-10-01 | A1010 | 21d | 0d |
| A9290 |  | Telecommunication panel design | 5d | 2026-09-22 | 2026-09-29 | A9200 SS | 21d | 0d |
| A9270 |  | Signal list | 6d | 2026-09-30 | 2026-10-07 | A9290, A9200 SS | 21d | 0d |
| A9300 |  | Control building and site lighting and small power | 5d | 2026-10-01 | 2026-10-07 | A9010 | 17d | 0d |
| A9280 |  | Protection and metering design | 10d | 2026-10-02 | 2026-10-15 | A9090 | 30d |  |
| A9240 |  | RTU engineering (configuration/drawings) | 8d | 2026-10-08 | 2026-10-19 | A9270, A9200 SS | 21d | 0d |
| A9310 |  | DC charger and battery selection | 5d | 2026-10-08 | 2026-10-14 | A9300 | 17d | 0d |
| A9350 |  | Control cable schedules | 5d | 2026-10-08 | 2026-10-14 | A9270 | 31d |  |
| A9320 |  | NECRT and Generator Selection | 5d | 2026-10-15 | 2026-10-21 | A9310 | 17d | 0d |
| A9250 |  | HMI engineering | 7d | 2026-10-20 | 2026-10-28 | A9240 | 21d |  |
| A9230 |  | Fire protection design | 5d | 2026-10-21 | 2026-10-27 | A9140 | 22d |  |
| A9330 |  | Control building equipment layout | 4d | 2026-10-22 | 2026-10-27 | A9320 | 17d | 0d |
| A9340 |  | Equipment technical schedules/standard documents | 5d | 2026-10-28 | 2026-11-03 | A9330 | 17d |  |
| A9360 |  | Detailed design report | 7d | 2026-11-27 | 2026-12-07 | A9200, A9230, A9240, A9250, A9270, A9280, A9290, A9300, A9310, A9320, A9330, A9340, A9350, A17140 | 0d |  |
| A9370 |  | Detailed BOQ | 5d | 2026-12-08 | 2026-12-14 | A9360 | 0d |  |
|  | 4 | **PPC&SCADA System design** |  | 2026-09-22 | 2026-11-26 |  |  |  |
| A17080 |  | PVSCADA System Architecture Design (Server/Network/Software) | 10d | 2026-09-22 | 2026-10-06 | A1010 | 0d |  |
| A17090 |  | Selection Design of SCADA Server/Workstation/Switch | 7d | 2026-10-07 | 2026-10-15 | A17080 | 18d |  |
| A17100 |  | Function Design of SCADA Software (Alarm/History/Report/Web) | 10d | 2026-10-07 | 2026-10-20 | A17080 | 0d |  |
| A17130 |  | Communication Design with Superior Dispatching/Owner Monitoring System | 7d | 2026-10-07 | 2026-10-15 | A17080 | 18d |  |
| A17110 |  | HMI Screen Design (Overview/Primary Wiring/Trend/Alarm) | 5d | 2026-10-21 | 2026-10-27 | A17100 | 0d |  |
| A17120 |  | SCADA Point Table Design (Telemetry/Telemetry Input/Remote Control Point Table) | 10d | 2026-10-28 | 2026-11-10 | A17110 | 0d |  |
| A17140 |  | PPCSCADA design Package complete | 12d | 2026-11-11 | 2026-11-26 | A17130, A17120, A17090 | 0d |  |

| ID | WBS | Activity | Duration | Start | Finish | Predecessors | Total float | Free float |
| --- | --- | --- | --- | --- | --- | --- | --- | --- |
|  | 2 | **Switching Stataion** |  | 2026-09-22 | 2026-12-01 |  |  |  |
|  | 1 | **Civil** |  | 2026-09-22 | 2026-10-13 |  |  |  |
| A9380 |  | Platform layout and detailed drawings | 6d | 2026-09-22 | 2026-09-30 | A1010 | 34d | 0d |
| A9390 |  | Drainage layout | 5d | 2026-09-22 | 2026-09-29 | A9380 SS | 34d | 0d |
| A9400 |  | Station internal road design | 5d | 2026-09-22 | 2026-09-29 | A9390 SS | 34d | 0d |
| A9410 |  | Fence and gate layout | 4d | 2026-09-22 | 2026-09-28 | A9400 SS | 34d | 0d |
| A9420 |  | Control building plan/section/sectional view | 10d | 2026-09-22 | 2026-10-06 | A9410 SS | 34d | 0d |
| A9430 |  | Equipment support foundation | 7d | 2026-09-22 | 2026-10-01 | A9420 SS | 37d | 3d |
| A9440 |  | Detailed design report/BOQ | 5d | 2026-10-07 | 2026-10-13 | A9380, A9390, A9400, A9410, A9420, A9430 | 34d | 0d |
|  | 2 | **Primary** |  | 2026-09-22 | 2026-11-23 |  |  |  |
| A9450 |  | Substation SLD | 7d | 2026-09-22 | 2026-10-01 | A1010 | 23d | 0d |
| A9510 |  | Soil Resistivity Test (Soil resistivity) | 15d | 2026-09-22 | 2026-10-13 | A1010 | 14d | 0d |
| A9460 |  | Substation general layout (GA) | 7d | 2026-10-02 | 2026-10-12 | A9450 | 23d | 0d |
| A9500 |  | Equipment Specification Document | 5d | 2026-10-02 | 2026-10-08 | A9450 | 29d | 0d |
| A9550 |  | Bay Section and Terminal | 5d | 2026-10-02 | 2026-10-08 | A9450 | 34d | 20d |
| A9560 |  | Tubular Busbar Layout/Section/Terminal | 7d | 2026-10-02 | 2026-10-12 | A9450 | 32d | 18d |
| A9540 |  | Lightning Protection Layout | 5d | 2026-10-09 | 2026-10-15 | A9500 | 29d | 15d |
| A9470 |  | Foundation / fence / cable trench layout | 6d | 2026-10-13 | 2026-10-20 | A9460 | 26d | 12d |
| A9480 |  | Steel structure marking drawing (Steelwork marking) | 6d | 2026-10-13 | 2026-10-20 | A9460 | 26d | 12d |
| A9490 |  | Electrical equipment layout | 5d | 2026-10-13 | 2026-10-19 | A9460 | 27d | 13d |
| A9570 |  | Control Room Equipment Layout | 4d | 2026-10-13 | 2026-10-16 | A9460 | 23d | 0d |
| A9520 |  | CDEGS Grounding Simulation | 10d | 2026-10-14 | 2026-10-27 | A9510 | 14d | 0d |
| A9580 |  | Identification Layout | 3d | 2026-10-19 | 2026-10-21 | A9570 | 25d | 11d |
| A9590 |  | Equipment Technical List | 5d | 2026-10-19 | 2026-10-23 | A9570 | 23d | 9d |
| A9530 |  | Earth Grid Layout | 7d | 2026-10-28 | 2026-11-05 | A9520 | 14d | 0d |
| A9600 |  | Detailed Design Report | 7d | 2026-11-06 | 2026-11-16 | A9450, A9460, A9470, A9480, A9490, A9500, A9510, A9520, A9530, A9540, A9550, A9560, A9570, A9580, A9590 | 14d | 0d |
| A9610 |  | Detailed BOQ | 5d | 2026-11-17 | 2026-11-23 | A9600 | 76d | 0d |

| ID | WBS | Activity | Duration | Start | Finish | Predecessors | Total float | Free float |
| --- | --- | --- | --- | --- | --- | --- | --- | --- |
|  | 3 | **Secondaryt** |  | 2026-09-22 | 2026-12-01 |  |  |  |
| A9620 |  | Detail design report for secondary | 45d | 2026-09-22 | 2026-11-24 | A1010 | 11d | 0d |
| A9630 |  | Detail BOQ | 5d | 2026-11-25 | 2026-12-01 | A9620 | 110d | 0d |
|  | 3 | **OverHead Line** |  | 2026-09-22 | 2026-12-15 |  |  |  |
| A9640 |  | Lidar strip measurement (60m corridor, including permanent measurement stakes) | 20d | 2026-09-22 | 2026-10-20 | A1010 | 0d |  |
| A9650 |  | Line path | 5d | 2026-10-21 | 2026-10-27 | A9640 | 0d |  |
| A9660 |  | PLS-CADD line profile (Line profiles) | 12d | 2026-10-21 | 2026-11-05 | A9640 | 1d | 0d |
| A9680 |  | Conductor selection | 7d | 2026-10-21 | 2026-10-29 | A9640 | 13d | 12d |
| A9690 |  | Structure selection | 7d | 2026-10-21 | 2026-10-29 | A9640 | 13d | 12d |
| A9710 |  | Hardware selection | 5d | 2026-10-21 | 2026-10-27 | A9640 | 15d | 14d |
| A9720 |  | Insulator selection | 5d | 2026-10-21 | 2026-10-27 | A9640 | 15d | 14d |
| A9740 |  | Line specification | 5d | 2026-10-21 | 2026-10-27 | A9640 | 15d | 14d |
| A9700 |  | Foundation design | 10d | 2026-10-28 | 2026-11-10 | A9650 | 5d | 4d |
| A9670 |  | Tower positioning table | 5d | 2026-11-06 | 2026-11-12 | A9660 | 3d | 2d |
| A9730 |  | Stringing charts | 7d | 2026-11-06 | 2026-11-16 | A9660 | 1d | 0d |
| A9750 |  | Detailed design report of OHL (including over/through/road crossing) | 10d | 2026-11-17 | 2026-11-30 | A9640, A9650, A9660, A9670, A9680, A9690, A9700, A9710, A9720, A9730, A9740 | 1d | 0d |
| A9760 |  | Detailed design report | 3d | 2026-12-01 | 2026-12-03 | A9750 | 1d | 0d |
| A9770 |  | Detailed line BOQ | 5d | 2026-12-04 | 2026-12-10 | A9760 | 85d | 0d |
| A9780 |  | OPGW BOQ | 3d | 2026-12-11 | 2026-12-15 | A9770 | 85d |  |
|  | 4 | **Hera MTS** |  | 2026-09-22 | 2026-12-23 |  |  |  |
|  | 1 | **Civil** |  | 2026-09-22 | 2026-10-14 |  |  |  |
| A9790 |  | Equipment support foundation | 8d | 2026-09-22 | 2026-10-02 | A1010 | 33d | 0d |
| A9800 |  | Design report update | 5d | 2026-10-05 | 2026-10-09 | A9790 | 33d | 0d |
| A9810 |  | CTR submission package | 3d | 2026-10-12 | 2026-10-14 | A9800 | 33d | 25d |

| ID | WBS | Activity | Duration | Start | Finish | Predecessors | Total float | Free float |
| --- | --- | --- | --- | --- | --- | --- | --- | --- |
|  | 2 | **Primary** |  | 2026-09-22 | 2026-12-23 |  |  |  |
| A9820 |  | Station Electric Diagram | 10d | 2026-09-22 | 2026-10-06 | A1010 | 0d |  |
| A9850 |  | Soil Resistivity Test | 15d | 2026-09-22 | 2026-10-13 | A1010 | 4d | 0d |
| A9830 |  | General Plan (Key Plan) | 7d | 2026-10-07 | 2026-10-15 | A9820 | 5d | 0d |
| A9920 |  | Equipment proformas (data sheets) | 7d | 2026-10-07 | 2026-10-15 | A9820 | 0d |  |
| A9860 |  | CDEGS Grounding Simulation | 10d | 2026-10-14 | 2026-10-27 | A9850 | 4d | 0d |
| A9840 |  | Foundation and Cable Trench Layout | 7d | 2026-10-16 | 2026-10-26 | A9830 | 5d | 0d |
| A9930 |  | Equipment specification documents | 5d | 2026-10-16 | 2026-10-22 | A9920 | 0d |  |
| A9940 |  | Review of Hera 800MVA main transformer design | 12d | 2026-10-16 | 2026-11-02 | A9830 | 7d | 0d |
| A9950 |  | Design of Hera 400/275kV transformer bay | 10d | 2026-10-16 | 2026-10-29 | A9940 SS | 9d | 0d |
| A9960 |  | Design of Hera 275kV bus tie bay | 8d | 2026-10-16 | 2026-10-27 | A9950 SS | 9d | 0d |
| A9970 |  | 50kA equipment upgrade design (circuit breaker / disconnect switch / line shunt reactor) | 10d | 2026-10-16 | 2026-10-29 | A9960 SS | 9d |  |
| A9900 |  | Floodlight simulations | 7d | 2026-10-27 | 2026-11-04 | A9840 | 5d |  |
| A9910 |  | Operating diagram | 5d | 2026-10-27 | 2026-11-02 | A9840 | 7d |  |
| A9870 |  | Grounding Grid Layout (Earth Mat) | 7d | 2026-10-28 | 2026-11-05 | A9860 | 4d |  |
| A9880 |  | Overhead Ground Wire Layout | 5d | 2026-10-28 | 2026-11-03 | A9650 | 0d |  |
| A9890 |  | Steel Structure Annotation Drawing | 6d | 2026-11-04 | 2026-11-11 | A9880 | 0d |  |
| A9980 |  | Detailed design report | 19d | 2026-11-12 | 2026-12-08 | A9820, A9830, A9840, A9850, A9860, A9870, A9880, A9890, A9900, A9910, A9920, A9930, A9940, A9950, A9960, A9970 | 0d |  |
| A9990 |  | Detailed design presentation | 3d | 2026-12-09 | 2026-12-11 | A9980 | 49d | 0d |
| A9991 |  | Detailed BOQ | 7d | 2026-12-14 | 2026-12-23 | A9990 | 49d | 0d |
|  | 3 | **Secondary** |  | 2026-09-22 | 2026-10-22 |  |  |  |
| A10000 |  | Detailed Design Report | 7d | 2026-09-22 | 2026-10-01 | A9820 SS | 41d | 0d |
| A10010 |  | Network Architecture | 7d | 2026-10-02 | 2026-10-12 | A10000 | 188d | 3d |
| A10020 |  | Update of Control Room Layout | 5d | 2026-10-02 | 2026-10-08 | A10000 | 190d | 5d |
| A10030 |  | Selection of Battery Charger | 5d | 2026-10-02 | 2026-10-08 | A10000 | 190d | 5d |
| A10040 |  | Protection and Metering Design (NTCSA Station) | 10d | 2026-10-02 | 2026-10-15 | A10000 | 185d | 0d |
| A10050 |  | Remote Control/Communication Interface | 8d | 2026-10-02 | 2026-10-13 | A10000 | 41d | 2d |
| A10060 |  | DRT submission package | 5d | 2026-10-16 | 2026-10-22 | A10000, A10010, A10020, A10030, A10040, A10050 | 185d | 0d |

| ID | WBS | Activity | Duration | Start | Finish | Predecessors | Total float | Free float |
| --- | --- | --- | --- | --- | --- | --- | --- | --- |
|  | 5 | **Eskom design approval** |  | 2026-10-29 | 2027-04-21 |  |  |  |
| A4890 |  | Distribution DRA | 31d | 2026-10-29 | 2026-12-10 | A9620 SS+5d, A9600 FF+5d, A9760 FF+5d | 1d | 0d |
| A3180 |  | Civil CRT | 1d | 2026-11-19 | 2026-11-19 | A1040, A9080, A9440, A9810 | 8d | 7d |
| A3240 |  | Eskom Distribution DRC | 5d | 2026-12-01 | 2026-12-07 | A3180, A9750 | 1d |  |
| A3250 |  | Substation DRT | 1d | 2026-12-09 | 2026-12-09 | A3240, A9170, A9600, A9760, A9980 | 0d |  |
| A4670 |  | PTM&C DRT | 1d | 2026-12-10 | 2026-12-10 | A3250, A9360, A9620, A10050 | 0d |  |
| A4780 |  | NTCSA DRT | 1d | 2026-12-11 | 2026-12-11 | A4670 | 0d |  |
| A5000 |  | Detailed Design report | 5d | 2026-12-14 | 2026-12-21 | A4890, A4780, A20020, A20130 | 0d |  |
| A5110 |  | Eskom ERA Process | 70d | 2026-12-22 | 2027-04-05 | A5000 | 0d |  |
| A5740 |  | Internal reviewing and issuing the IFC drawing for Procurement and construction | 12d | 2027-04-06 | 2027-04-21 | A5110 | 0d |  |
|  | 6 | **Ngwedi MTS** |  | 2026-09-22 | 2026-12-10 |  |  |  |
|  | 1 | **Civil** |  | 2026-09-22 | 2026-12-01 |  |  |  |
| A19980 |  | Bay Layout Drawing | 15d | 2026-09-22 | 2026-10-13 | A1010 | 1d | 0d |
| A19990 |  | Equipment Foundation Design | 20d | 2026-10-14 | 2026-11-10 | A19980 | 8d | 0d |
| A20000 |  | Gantry & Post Insulator Design | 15d | 2026-11-11 | 2026-12-01 | A19990 | 480d |  |
| A20010 |  | Cable Trench & Earthing Design | 10d | 2026-11-11 | 2026-11-24 | A19990 | 8d | 0d |
| A20020 |  | Detailed design report/BOQ | 5d | 2026-11-25 | 2026-12-01 | A20010 | 8d | 0d |
|  | 2 | **Primary** |  | 2026-09-22 | 2026-12-10 |  |  |  |
| A20030 |  | Bay SLD | 5d | 2026-09-22 | 2026-09-29 | A19980 SS | 1d | 0d |
| A20040 |  | Short Circuit Verification | 10d | 2026-09-30 | 2026-10-13 | A20030 | 1d | 0d |
| A20050 |  | Equipment Specification | 15d | 2026-10-14 | 2026-11-03 | A20040 | 1d | 0d |
| A20060 |  | Bay Plan & Section | 12d | 2026-11-04 | 2026-11-19 | A20050 | 1d | 0d |
| A20070 |  | Busbar & Dropper Design | 10d | 2026-11-20 | 2026-12-03 | A20060 | 1d | 0d |
| A20130 |  | Detailed design report | 5d | 2026-12-04 | 2026-12-10 | A20070 | 1d |  |

| ID | WBS | Activity | Duration | Start | Finish | Predecessors | Total float | Free float |
| --- | --- | --- | --- | --- | --- | --- | --- | --- |
|  | 3 | **Secondary** |  | 2026-09-22 | 2026-12-08 |  |  |  |
| A20140 |  | Feeder Protection Scheme | 15d | 2026-09-22 | 2026-10-13 | A20030 SS | 171d | 0d |
| A20150 |  | Control & Signaling | 15d | 2026-10-14 | 2026-11-03 | A20140 | 178d | 0d |
| A20160 |  | Metering Diagram | 10d | 2026-11-04 | 2026-11-17 | A20150 | 178d | 0d |
| A20170 |  | Telecontrol & HMI Update | 15d | 2026-11-04 | 2026-11-24 | A20150 | 485d |  |
| A20180 |  | Control Cable Schedule | 10d | 2026-11-18 | 2026-12-01 | A20160 | 178d | 0d |
| A20190 |  | Detailed design report | 5d | 2026-12-02 | 2026-12-08 | A20180 | 475d |  |
|  | 4 | **Procurement** |  | 2026-10-14 | 2028-01-19 |  |  |  |
|  | 1 | **PV Field** |  | 2027-02-04 | 2028-01-19 |  |  |  |
|  | 1 | **Pile** |  | 2027-03-11 | 2027-10-11 |  |  |  |
| A1180 |  | Technical Freeze & Counter?sign Technical Agreement | 10d | 2027-03-11 | 2027-03-25 | A1150 | 0d |  |
| A1190 |  | PO Issue | 10d | 2027-03-30 | 2027-04-12 | A1180 | 0d |  |
| A1200 |  | Manufacturing Kick?off | 3d | 2027-04-13 | 2027-04-15 | A1190 | 0d |  |
|  | 1 | **Batch 1 36.6 MW** |  | 2027-04-16 | 2027-06-24 |  |  |  |
| A1210 |  | Manufacturing | 15d | 2027-04-16 | 2027-05-07 | A1200 | 0d |  |
| A1220 |  | Pre?shipment Inspection & Loading | 3d | 2027-05-10 | 2027-05-12 | A1210 | 0d |  |
| A1230 |  | Transportation & Clearance | 23d | 2027-05-13 | 2027-06-14 | A1220 | 0d |  |
| A1240 |  | Transport from Port to site | 4d | 2027-06-15 | 2027-06-21 | A1230 | 0d |  |
| A1250 |  | Site Receive % Inspection | 3d | 2027-06-22 | 2027-06-24 | A1240 | 0d |  |
|  | 2 | **Batch 2 36.6 MW** |  | 2027-05-10 | 2027-07-15 |  |  |  |
| A1260 |  | Manufacturing | 15d | 2027-05-10 | 2027-05-28 | A1210 | 0d |  |
| A1270 |  | Pre?shipment Inspection & Loading | 3d | 2027-05-31 | 2027-06-02 | A1260 | 0d |  |
| A1280 |  | Transportation & Clearance | 23d | 2027-06-03 | 2027-07-06 | A1270 | 0d |  |
| A1290 |  | Transport from Port to site | 4d | 2027-07-07 | 2027-07-12 | A1280 | 0d |  |
| A1300 |  | Site Receive % Inspection | 3d | 2027-07-13 | 2027-07-15 | A1290 | 0d |  |

| ID | WBS | Activity | Duration | Start | Finish | Predecessors | Total float |
| --- | --- | --- | --- | --- | --- | --- | --- |
|  | 3 | **Batch 3 36.6 MW** |  | 2027-05-31 | 2027-08-05 |  |  |
| A1310 |  | Manufacturing | 15d | 2027-05-31 | 2027-06-21 | A1260 | 0d |
| A1320 |  | Pre?shipment Inspection & Loading | 3d | 2027-06-22 | 2027-06-24 | A1310 | 0d |
| A1330 |  | Transportation & Clearance | 23d | 2027-06-25 | 2027-07-27 | A1320 | 0d |
| A1340 |  | Transport from Port to site | 4d | 2027-07-28 | 2027-08-02 | A1330 | 0d |
| A1350 |  | Site Receive % Inspection | 3d | 2027-08-03 | 2027-08-05 | A1340 | 0d |
|  | 4 | **Batch 4 36.6 MW** |  | 2027-06-22 | 2027-08-27 |  |  |
| A1360 |  | Manufacturing | 15d | 2027-06-22 | 2027-07-12 | A1310 | 0d |
| A1370 |  | Pre?shipment Inspection & Loading | 3d | 2027-07-13 | 2027-07-15 | A1360 | 0d |
| A1380 |  | Transportation & Clearance | 23d | 2027-07-16 | 2027-08-18 | A1370 | 0d |
| A1390 |  | Transport from Port to site | 4d | 2027-08-19 | 2027-08-24 | A1380 | 0d |
| A1400 |  | Site Receive % Inspection | 3d | 2027-08-25 | 2027-08-27 | A1390 | 0d |
|  | 5 | **Batch 5 36.6 MW** |  | 2027-07-13 | 2027-09-17 |  |  |
| A1410 |  | Manufacturing | 15d | 2027-07-13 | 2027-08-02 | A1360 | 0d |
| A1420 |  | Pre?shipment Inspection & Loading | 3d | 2027-08-03 | 2027-08-05 | A1410 | 0d |
| A1430 |  | Transportation & Clearance | 23d | 2027-08-06 | 2027-09-08 | A1420 | 0d |
| A1440 |  | Transport from Port to site | 4d | 2027-09-09 | 2027-09-14 | A1430 | 0d |
| A1450 |  | Site Receive % Inspection | 3d | 2027-09-15 | 2027-09-17 | A1440 | 0d |
|  | 6 | **Batch 6 36.6 MW** |  | 2027-08-03 | 2027-10-11 |  |  |
| A1460 |  | Manufacturing | 15d | 2027-08-03 | 2027-08-24 | A1410 | 0d |
| A1470 |  | Pre?shipment Inspection & Loading | 3d | 2027-08-25 | 2027-08-27 | A1460 | 0d |
| A1480 |  | Transportation & Clearance | 23d | 2027-08-30 | 2027-09-30 | A1470 | 0d |
| A1490 |  | Transport from Port to site | 4d | 2027-10-01 | 2027-10-06 | A1480 | 0d |
| A1500 |  | Site Receive % Inspection | 3d | 2027-10-07 | 2027-10-11 | A1490 | 0d |

| ID | WBS | Activity | Duration | Start | Finish | Predecessors | Total float |
| --- | --- | --- | --- | --- | --- | --- | --- |
|  | 2 | **Structure** |  | 2027-03-30 | 2027-12-06 |  |  |
| A1590 |  | Technical Freeze & Counter?sign Technical Agreement | 10d | 2027-03-30 | 2027-04-12 | A1540 | 0d |
| A1600 |  | PO Issue | 10d | 2027-04-13 | 2027-04-26 | A1590 | 0d |
| A1610 |  | Manufacturing Kick?off | 3d | 2027-04-28 | 2027-04-30 | A1600 | 0d |
|  | 1 | **Batch 1 36.6 MW** |  | 2027-05-03 | 2027-07-15 |  |  |
| A1620 |  | Manufacturing | 20d | 2027-05-03 | 2027-05-28 | A1610, A1210 SS | 0d |
| A1630 |  | Pre?shipment Inspection & Loading | 3d | 2027-05-31 | 2027-06-02 | A1620 | 0d |
| A1640 |  | Transportation & Clearance | 23d | 2027-06-03 | 2027-07-06 | A1630 | 0d |
| A1650 |  | Transport from Port to site | 4d | 2027-07-07 | 2027-07-12 | A1640 | 0d |
| A1660 |  | Site Receive % Inspection | 3d | 2027-07-13 | 2027-07-15 | A1650 | 0d |
|  | 2 | **Batch 2 36.6 MW** |  | 2027-05-31 | 2027-08-13 |  |  |
| A1670 |  | Manufacturing | 20d | 2027-05-31 | 2027-06-28 | A1620 | 0d |
| A1680 |  | Pre?shipment Inspection & Loading | 3d | 2027-06-29 | 2027-07-01 | A1670 | 0d |
| A1690 |  | Transportation & Clearance | 23d | 2027-07-02 | 2027-08-03 | A1680 | 0d |
| A1700 |  | Transport from Port to site | 4d | 2027-08-04 | 2027-08-10 | A1690 | 0d |
| A1710 |  | Site Receive % Inspection | 3d | 2027-08-11 | 2027-08-13 | A1700 | 0d |
|  | 3 | **Batch 3 36.6 MW** |  | 2027-06-29 | 2027-09-10 |  |  |
| A1720 |  | Manufacturing | 20d | 2027-06-29 | 2027-07-26 | A1670 | 0d |
| A1730 |  | Pre?shipment Inspection & Loading | 3d | 2027-07-27 | 2027-07-29 | A1720 | 0d |
| A1740 |  | Transportation & Clearance | 23d | 2027-07-30 | 2027-09-01 | A1730 | 0d |
| A1750 |  | Transport from Port to site | 4d | 2027-09-02 | 2027-09-07 | A1740 | 0d |
| A1760 |  | Site Receive % Inspection | 3d | 2027-09-08 | 2027-09-10 | A1750 | 0d |
|  | 4 | **Batch 4 36.6 MW** |  | 2027-07-27 | 2027-10-11 |  |  |
| A1770 |  | Manufacturing | 20d | 2027-07-27 | 2027-08-24 | A1720 | 0d |
| A1780 |  | Pre?shipment Inspection & Loading | 3d | 2027-08-25 | 2027-08-27 | A1770 | 0d |
| A1790 |  | Transportation & Clearance | 23d | 2027-08-30 | 2027-09-30 | A1780 | 0d |
| A1800 |  | Transport from Port to site | 4d | 2027-10-01 | 2027-10-06 | A1790 | 0d |
| A1810 |  | Site Receive % Inspection | 3d | 2027-10-07 | 2027-10-11 | A1800 | 0d |

| ID | WBS | Activity | Duration | Start | Finish | Predecessors | Total float |
| --- | --- | --- | --- | --- | --- | --- | --- |
|  | 5 | **Batch 5 36.6 MW** |  | 2027-08-25 | 2027-11-08 |  |  |
| A1820 |  | Manufacturing | 20d | 2027-08-25 | 2027-09-21 | A1770 | 0d |
| A1830 |  | Pre?shipment Inspection & Loading | 3d | 2027-09-22 | 2027-09-27 | A1820 | 0d |
| A1840 |  | Transportation & Clearance | 23d | 2027-09-28 | 2027-10-28 | A1830 | 0d |
| A1850 |  | Transport from Port to site | 4d | 2027-10-29 | 2027-11-03 | A1840 | 0d |
| A1860 |  | Site Receive % Inspection | 3d | 2027-11-04 | 2027-11-08 | A1850 | 0d |
|  | 6 | **Batch 6 36.6 MW** |  | 2027-09-22 | 2027-12-06 |  |  |
| A1870 |  | Manufacturing | 20d | 2027-09-22 | 2027-10-20 | A1820 | 0d |
| A1880 |  | Pre?shipment Inspection & Loading | 3d | 2027-10-21 | 2027-10-25 | A1870 | 0d |
| A1890 |  | Transportation & Clearance | 23d | 2027-10-26 | 2027-11-25 | A1880 | 0d |
| A1900 |  | Transport from Port to site | 4d | 2027-11-26 | 2027-12-01 | A1890 | 0d |
| A1910 |  | Site Receive % Inspection | 3d | 2027-12-02 | 2027-12-06 | A1900 | 0d |
|  | 3 | **PV Module** |  | 2027-03-25 | 2028-01-19 |  |  |
| A1920 |  | Technical Freeze & Counter?sign Technical Agreement | 10d | 2027-03-25 | 2027-04-09 | A1580 | 0d |
| A1930 |  | PO Issue | 10d | 2027-04-12 | 2027-04-23 | A1920 | 0d |
| A1940 |  | Manufacturing Kick?off | 3d | 2027-04-26 | 2027-04-29 | A1930 | 1d |
|  | 1 | **Batch 1 36.6 MW** |  | 2027-05-03 | 2027-07-22 |  |  |
| A1950 |  | Manufacturing | 25d | 2027-05-03 | 2027-06-04 | A1940, A1620 SS | 0d |
| A1960 |  | Pre?shipment Inspection & Loading | 3d | 2027-06-07 | 2027-06-09 | A1950 | 0d |
| A1970 |  | Transportation & Clearance | 23d | 2027-06-10 | 2027-07-13 | A1960 | 0d |
| A1980 |  | Transport from Port to site | 4d | 2027-07-14 | 2027-07-19 | A1970 | 0d |
| A1990 |  | Site Receive % Inspection | 3d | 2027-07-20 | 2027-07-22 | A1980 | 0d |
|  | 2 | **Batch 2 36.6 MW** |  | 2027-06-07 | 2027-08-27 |  |  |
| A2000 |  | Manufacturing | 25d | 2027-06-07 | 2027-07-12 | A1950 | 0d |
| A2010 |  | Pre?shipment Inspection & Loading | 3d | 2027-07-13 | 2027-07-15 | A2000 | 0d |
| A2020 |  | Transportation & Clearance | 23d | 2027-07-16 | 2027-08-18 | A2010 | 0d |
| A2030 |  | Transport from Port to site | 4d | 2027-08-19 | 2027-08-24 | A2020 | 0d |
| A2040 |  | Site Receive % Inspection | 3d | 2027-08-25 | 2027-08-27 | A2030 | 0d |

| ID | WBS | Activity | Duration | Start | Finish | Predecessors | Total float |
| --- | --- | --- | --- | --- | --- | --- | --- |
|  | 3 | **Batch 3 36.6 MW** |  | 2027-07-13 | 2027-10-04 |  |  |
| A2050 |  | Manufacturing | 25d | 2027-07-13 | 2027-08-17 | A2000 | 0d |
| A2060 |  | Pre?shipment Inspection & Loading | 3d | 2027-08-18 | 2027-08-20 | A2050 | 0d |
| A2070 |  | Transportation & Clearance | 23d | 2027-08-23 | 2027-09-22 | A2060 | 0d |
| A2080 |  | Transport from Port to site | 4d | 2027-09-23 | 2027-09-29 | A2070 | 0d |
| A2090 |  | Site Receive % Inspection | 3d | 2027-09-30 | 2027-10-04 | A2080 | 0d |
|  | 4 | **Batch 4 36.6 MW** |  | 2027-08-18 | 2027-11-08 |  |  |
| A2100 |  | Manufacturing | 25d | 2027-08-18 | 2027-09-21 | A2050 | 0d |
| A2110 |  | Pre?shipment Inspection & Loading | 3d | 2027-09-22 | 2027-09-27 | A2100 | 0d |
| A2120 |  | Transportation & Clearance | 23d | 2027-09-28 | 2027-10-28 | A2110 | 0d |
| A2130 |  | Transport from Port to site | 4d | 2027-10-29 | 2027-11-03 | A2120 | 0d |
| A2140 |  | Site Receive % Inspection | 3d | 2027-11-04 | 2027-11-08 | A2130 | 0d |
|  | 5 | **Batch 5 36.6 MW** |  | 2027-09-22 | 2027-12-13 |  |  |
| A2150 |  | Manufacturing | 25d | 2027-09-22 | 2027-10-27 | A2100 | 0d |
| A2160 |  | Pre?shipment Inspection & Loading | 3d | 2027-10-28 | 2027-11-01 | A2150 | 0d |
| A2170 |  | Transportation & Clearance | 23d | 2027-11-02 | 2027-12-02 | A2160 | 0d |
| A2180 |  | Transport from Port to site | 4d | 2027-12-03 | 2027-12-08 | A2170 | 0d |
| A2190 |  | Site Receive % Inspection | 3d | 2027-12-09 | 2027-12-13 | A2180 | 0d |
|  | 6 | **Batch 6 36.6 MW** |  | 2027-10-28 | 2028-01-19 |  |  |
| A2200 |  | Manufacturing | 25d | 2027-10-28 | 2027-12-01 | A2150 | 0d |
| A2210 |  | Pre?shipment Inspection & Loading | 3d | 2027-12-02 | 2027-12-06 | A2200 | 0d |
| A2220 |  | Transportation & Clearance | 23d | 2027-12-07 | 2028-01-10 | A2210 | 0d |
| A2230 |  | Transport from Port to site | 4d | 2028-01-11 | 2028-01-14 | A2220 | 0d |
| A2240 |  | Site Receive % Inspection | 3d | 2028-01-17 | 2028-01-19 | A2230 | 0d |

| ID | WBS | Activity | Duration | Start | Finish | Predecessors | Total float |
| --- | --- | --- | --- | --- | --- | --- | --- |
|  | 4 | **Inverter** |  | 2027-02-17 | 2027-09-29 |  |  |
| A2720 |  | Technical Freeze & Counter?sign Technical Agreement | 20d | 2027-02-17 | 2027-03-16 | A2460 | 0d |
| A2730 |  | PO Issue | 10d | 2027-03-17 | 2027-04-02 | A2720 | 0d |
| A2740 |  | Manufacturing Kick?off | 3d | 2027-04-05 | 2027-04-07 | A2730 | 0d |
|  | 1 | **Batch 1 Inverter** |  | 2027-04-08 | 2027-08-31 |  |  |
| A2750 |  | Manufacturing | 50d | 2027-04-08 | 2027-06-18 | A2740 | 0d |
| A2760 |  | FAT | 5d | 2027-06-21 | 2027-06-25 | A2750 | 0d |
| A2770 |  | Pre-shipment inspection & Loading | 25d | 2027-06-28 | 2027-07-30 | A2760 | 0d |
| A2780 |  | Transportation & Clearance | 15d | 2027-08-02 | 2027-08-23 | A2770 | 0d |
| A2790 |  | Transport to site | 3d | 2027-08-24 | 2027-08-26 | A2780 | 0d |
| A2800 |  | Site Receive & Inspection | 3d | 2027-08-27 | 2027-08-31 | A2790, A15660 | 0d |
|  | 2 | **Btach 2 Inverter** |  | 2027-06-21 | 2027-09-29 |  |  |
| A2810 |  | Manufacturing | 20d | 2027-06-21 | 2027-07-16 | A2750 | 0d |
| A2820 |  | FAT | 5d | 2027-07-19 | 2027-07-23 | A2810 | 0d |
| A2830 |  | Pre-shipment inspection & Loading | 25d | 2027-07-26 | 2027-08-30 | A2820 | 0d |
| A2840 |  | Transportation & Clearance | 15d | 2027-08-31 | 2027-09-20 | A2830 | 0d |
| A2850 |  | Transport to site | 3d | 2027-09-21 | 2027-09-23 | A2840 | 0d |
| A2860 |  | Site Receive & Inspection | 3d | 2027-09-27 | 2027-09-29 | A2850 | 0d |
|  | 5 | **Power Station** |  | 2027-02-04 | 2027-10-18 |  |  |
| A2870 |  | Technical Freeze & Counter?sign Technical Agreement | 15d | 2027-02-04 | 2027-02-24 | A2930 | 0d |
| A2880 |  | PO Issue | 15d | 2027-02-25 | 2027-03-17 | A2870 | 0d |
| A2890 |  | Manufacturing Kick?off | 5d | 2027-03-18 | 2027-03-25 | A2880 | 0d |
| A2940 |  | Manufacturing | 90d | 2027-03-30 | 2027-08-04 | A2890 | 0d |
| A2960 |  | FAT | 5d | 2027-08-05 | 2027-08-12 | A2940 | 0d |
| A2970 |  | Pre-shipment inspection & Loading | 25d | 2027-08-13 | 2027-09-16 | A2960 | 0d |
| A2980 |  | Transportation & Clearance | 15d | 2027-09-17 | 2027-10-08 | A2970 | 0d |
| A2990 |  | Transport to site | 3d | 2027-10-11 | 2027-10-13 | A2980 | 0d |
| A3000 |  | Site Receive & Inspection | 3d | 2027-10-14 | 2027-10-18 | A2990 | 0d |

| ID | WBS | Activity | Duration | Start | Finish | Predecessors | Total float | Free float |
| --- | --- | --- | --- | --- | --- | --- | --- | --- |
|  | 6 | **Cabling** |  | 2027-05-11 | 2027-11-01 |  |  |  |
|  | 1 | **MV Cable** |  | 2027-05-19 | 2027-09-02 |  |  |  |
| A3190 |  | PO Placed | 10d | 2027-05-19 | 2027-06-01 | A3150 | 0d |  |
| A3200 |  | Manufactoring | 30d | 2027-06-02 | 2027-07-14 | A3190 | 0d |  |
| A3210 |  | FAT | 5d | 2027-07-15 | 2027-07-21 | A3200 | 0d |  |
| A3220 |  | First Batch delivery to site | 10d | 2027-07-22 | 2027-08-04 | A3210 | 0d |  |
| A3230 |  | Site recived & inspection | 5d | 2027-08-05 | 2027-08-12 | A3220 | 0d |  |
| A3260 |  | Second Batch delivery to site | 10d | 2027-08-13 | 2027-08-26 | A3230 | 0d |  |
| A3270 |  | Site recived & inspection | 5d | 2027-08-27 | 2027-09-02 | A3260 | 0d |  |
|  | 2 | **LV Cable** |  | 2027-05-19 | 2027-10-01 |  |  |  |
| A3430 |  | PO Placed | 10d | 2027-05-19 | 2027-06-01 | A3420 | 85d | 0d |
| A3440 |  | Manufactoring | 50d | 2027-06-02 | 2027-08-12 | A3430 | 85d | 0d |
| A3450 |  | FAT | 5d | 2027-08-13 | 2027-08-19 | A3440 | 85d | 0d |
| A3460 |  | First Batch delivery to site | 10d | 2027-08-20 | 2027-09-02 | A3450 | 85d | 0d |
| A3470 |  | Site recived & inspection | 5d | 2027-09-03 | 2027-09-09 | A3460 | 85d | 0d |
| A3480 |  | Second Batch delivery to site | 10d | 2027-09-10 | 2027-09-23 | A3470 | 100d | 0d |
| A3490 |  | Site recived & inspection | 5d | 2027-09-27 | 2027-10-01 | A3480 | 100d | 84d |
|  | 3 | **DC Cable** |  | 2027-07-02 | 2027-11-01 |  |  |  |
| A3550 |  | PO Placed | 10d | 2027-07-02 | 2027-07-15 | A3540 | 0d |  |
| A3560 |  | Manufactoring | 40d | 2027-07-16 | 2027-09-10 | A3550 | 0d |  |
| A3570 |  | FAT | 5d | 2027-09-13 | 2027-09-17 | A3560 | 0d |  |
| A3580 |  | First Batch delivery to site | 10d | 2027-09-20 | 2027-10-04 | A3570 | 0d |  |
| A3590 |  | Site recived & inspection | 5d | 2027-10-05 | 2027-10-11 | A3580 | 0d |  |
| A3600 |  | Second Batch delivery to site | 10d | 2027-10-12 | 2027-10-25 | A3590 | 0d |  |
| A3610 |  | Site recived & inspection | 5d | 2027-10-26 | 2027-11-01 | A3600 | 0d |  |

| ID | WBS | Activity | Duration | Start | Finish | Predecessors | Total float | Free float |
| --- | --- | --- | --- | --- | --- | --- | --- | --- |
|  | 4 | **Optical Fiber** |  | 2027-06-09 | 2027-10-08 |  |  |  |
| A3970 |  | PO Placed | 10d | 2027-06-09 | 2027-06-23 | A3960 | 76d | 0d |
| A3980 |  | Manufactoring | 40d | 2027-06-24 | 2027-08-19 | A3970 | 76d | 0d |
| A3990 |  | FAT | 5d | 2027-08-20 | 2027-08-26 | A3980 | 76d | 0d |
| A4000 |  | First Batch delivery to site | 10d | 2027-08-27 | 2027-09-09 | A3990 | 76d | 0d |
| A4010 |  | Site recived & inspection | 5d | 2027-09-10 | 2027-09-16 | A4000 | 76d | 0d |
| A4020 |  | Second Batch delivery to site | 10d | 2027-09-17 | 2027-10-01 | A4010 | 76d | 0d |
| A4030 |  | Site recived & inspection | 5d | 2027-10-04 | 2027-10-08 | A4020 | 76d | 60d |
|  | 5 | **Earthing** |  | 2027-05-11 | 2027-09-01 |  |  |  |
| A5720 |  | PO Placed | 10d | 2027-05-11 | 2027-05-24 | A5710 | 91d | 0d |
| A5730 |  | Manufactoring | 30d | 2027-05-25 | 2027-07-06 | A5720 | 91d | 0d |
| A5750 |  | First Batch delivery to site | 15d | 2027-07-07 | 2027-07-27 | A5730 | 91d | 0d |
| A5760 |  | Site recived & inspection | 5d | 2027-07-28 | 2027-08-03 | A5750 | 91d | 0d |
| A5770 |  | Second Batch delivery to site | 15d | 2027-08-04 | 2027-08-25 | A5760 | 91d | 0d |
| A5780 |  | Site recived & inspection | 5d | 2027-08-26 | 2027-09-01 | A5770 | 91d | 0d |
|  | 7 | **NCU** |  | 2027-05-14 | 2027-10-04 |  |  |  |
| A17150 |  | NCU Technical Specification Book Compilation and Review | 7d | 2027-05-14 | 2027-05-24 | A16840 | 102d | 0d |
| A17160 |  | NCU PO Issuance | 5d | 2027-05-25 | 2027-05-31 | A17150 | 102d | 0d |
| A17170 |  | NCU Equipment Manufacturing (Network Control Unit) | 45d | 2027-06-01 | 2027-08-03 | A17160 | 102d | 0d |
| A17180 |  | Manufacturing of NCU communication gateway/protocol converter | 30d | 2027-06-01 | 2027-07-13 | A17160 | 117d | 15d |
| A17190 |  | Procurement of NCU cabinets/installation accessories | 20d | 2027-06-01 | 2027-06-29 | A17160 | 127d | 25d |
| A17200 |  | Procurement of NCU communication cables (optical fiber/communication cables) | 20d | 2027-06-01 | 2027-06-29 | A17160 | 127d | 25d |
| A17210 |  | NCU FAT (factory acceptance test) | 7d | 2027-08-04 | 2027-08-13 | A17170, A17180, A17190, A17200 | 102d | 0d |
| A17220 |  | Transportation and customs clearance of NCU equipment | 25d | 2027-08-16 | 2027-09-17 | A17210 | 102d | 0d |
| A17230 |  | Inland transportation of NCU equipment to the site | 5d | 2027-09-20 | 2027-09-27 | A17220 | 102d | 0d |
| A17240 |  | On-site arrival acceptance of NCU equipment | 5d | 2027-09-28 | 2027-10-04 | A17230 | 102d | 0d |

| ID | WBS | Activity | Duration | Start | Finish | Predecessors | Total float | Free float |
| --- | --- | --- | --- | --- | --- | --- | --- | --- |
|  | 8 | **TCU** |  | 2027-05-19 | 2027-10-07 |  |  |  |
| A17250 |  | TCU Technical Specification Document Preparation and Review | 7d | 2027-05-19 | 2027-05-27 | A16940 | 61d | 0d |
| A17260 |  | TCU PO Issuance | 5d | 2027-05-28 | 2027-06-03 | A17250 | 61d | 0d |
| A17270 |  | TCU Equipment Manufacturing (Control Unit) | 45d | 2027-06-04 | 2027-08-06 | A17260 | 61d | 0d |
| A17280 |  | TCU Control Cable Procurement | 20d | 2027-06-04 | 2027-07-02 | A17260 | 86d | 25d |
| A17290 |  | TCU Installation Accessories Procurement (Protective Box/Installation Components) | 15d | 2027-06-04 | 2027-06-25 | A17260 | 91d | 30d |
| A17300 |  | TCU FAT (Factory Acceptance Test) | 7d | 2027-08-10 | 2027-08-18 | A17270, A17280, A17290 | 61d | 0d |
| A17310 |  | TCU Equipment Transportation and Customs Clearance | 25d | 2027-08-19 | 2027-09-22 | A17300 | 61d | 0d |
| A17320 |  | TCU Equipment Inland Transportation to Site | 5d | 2027-09-23 | 2027-09-30 | A17310 | 61d | 0d |
| A17330 |  | TCU Equipment On-site Arrival Acceptance | 5d | 2027-10-01 | 2027-10-07 | A17320 | 61d | 0d |
|  | 9 | **Weather station** |  | 2027-05-11 | 2027-09-17 |  |  |  |
| A17340 |  | Meteorological station technical specification book compilation and review | 7d | 2027-05-11 | 2027-05-19 | A17070 | 123d | 0d |
| A17350 |  | Meteorological station PO issuance | 5d | 2027-05-20 | 2027-05-26 | A17340 | 123d | 0d |
| A17360 |  | Manufacturing of meteorological station sensors | 40d | 2027-05-27 | 2027-07-22 | A17350 | 123d | 0d |
| A17370 |  | Manufacturing of meteorological station data collector | 30d | 2027-05-27 | 2027-07-08 | A17350 | 133d | 10d |
| A17380 |  | Procurement of meteorological station mast and accessories | 20d | 2027-05-27 | 2027-06-24 | A17350 | 143d | 20d |
| A17390 |  | Procurement of meteorological station signal lines/power lines | 15d | 2027-05-27 | 2027-06-17 | A17350 | 148d | 25d |
| A17400 |  | Meteorological station FAT (factory acceptance test) | 5d | 2027-07-23 | 2027-07-29 | A17360, A17370, A17380, A17390 | 123d | 0d |
| A17410 |  | Transportation and customs clearance of meteorological station equipment | 25d | 2027-07-30 | 2027-09-03 | A17400 | 123d | 0d |
| A17420 |  | Inland transportation of meteorological station equipment to the site | 5d | 2027-09-06 | 2027-09-10 | A17410 | 123d | 0d |
| A17430 |  | On-site arrival acceptance of meteorological station equipment | 5d | 2027-09-13 | 2027-09-17 | A17420 | 123d | 2d |
|  | 2 | **Grid Work** |  | 2026-10-14 | 2028-01-17 |  |  |  |
|  | 1 | **IPP Substataion** |  | 2026-11-18 | 2027-08-06 |  |  |  |
| A10070 |  | Main Transformer 145MVA 33/132kV | 180d | 2026-11-18 | 2027-08-06 | A9190 | 74d | 0d |
| A10080 |  | 132kV SF6 Circuit Breaker | 150d | 2026-11-18 | 2027-06-25 | A9190 | 128d | 14d |
| A10090 |  | 132kV Isolating Switch | 120d | 2026-11-18 | 2027-05-13 | A9190 | 162d | 44d |
| A10100 |  | 132kV Current Transformer CT | 120d | 2026-11-18 | 2027-05-13 | A9190 | 162d | 44d |
| A10110 |  | 132kV Voltage Transformer VT | 120d | 2026-11-18 | 2027-05-13 | A9190 | 164d | 44d |
| A10120 |  | 132kV Busbar and Accessories | 90d | 2026-11-18 | 2027-03-31 | A9190 | 214d | 84d |
| A10130 |  | 132kV Surge Arrester | 90d | 2026-11-18 | 2027-03-31 | A9190 | 196d | 64d |
| A10140 |  | 33kV Switchgear | 120d | 2026-11-18 | 2027-05-13 | A9190 | 124d |  |
| A10150 |  | Station Transformer 33/0.4kV | 90d | 2026-11-18 | 2027-03-31 | A9190 | 162d | 154d |
| A10160 |  | NECRT | 90d | 2026-11-18 | 2027-03-31 | A9190 | 194d | 74d |
| A10170 |  | 132kV Power Cables and Accessories | 60d | 2026-11-18 | 2027-02-12 | A9190 | 244d | 114d |
| A10180 |  | 33kV Power Cables and Accessories | 60d | 2026-11-18 | 2027-02-12 | A9190 | 218d | 204d |
| A10330 |  | Fence / Gate | 60d | 2026-11-19 | 2027-02-15 | A9080 | 379d | 63d |
| A10190 |  | Main Transformer Protection Panel | 120d | 2026-12-15 | 2027-06-09 | A9190, A9370 | 113d | 105d |
| A10200 |  | 132kV Line Protection Panel | 120d | 2026-12-15 | 2027-06-09 | A9190, A9370 | 115d | 105d |
| A10210 |  | 132kV Busbar Protection Panel | 120d | 2026-12-15 | 2027-06-09 | A9190, A9370 | 115d | 105d |
| A10220 |  | 33kV Protection and Measurement Panel | 120d | 2026-12-15 | 2027-06-09 | A9190, A9370 | 109d | 105d |
| A10230 |  | RTU Remote Control Panel | 120d | 2026-12-15 | 2027-06-09 | A9190, A9370 | 105d |  |
| A10240 |  | SCADA System (Host + Operator Station + Printer) | 90d | 2026-12-15 | 2027-04-28 | A9190, A9370 | 143d | 135d |
| A10250 |  | Communication Panel (PCM/ Optical Terminal Unit / Industrial Switch) | 120d | 2026-12-15 | 2027-06-09 | A9190, A9370 | 109d | 105d |
| A10260 |  | Tie Metering Panel | 120d | 2026-12-15 | 2027-06-09 | A9190, A9370 | 109d | 105d |
| A10270 |  | DC Charging Panel | 90d | 2026-12-15 | 2027-04-28 | A9190, A9370 | 139d | 135d |
| A10280 |  | Battery Packs | 90d | 2026-12-15 | 2027-04-28 | A9190, A9370 | 139d | 135d |
| A10290 |  | Fault Recording Panel DFR | 120d | 2026-12-15 | 2027-06-09 | A9190, A9370 | 165d |  |
| A10300 |  | Secondary Control Cables | 60d | 2026-12-15 | 2027-03-11 | A9190, A9370 | 185d |  |
| A10310 |  | Fire Protection System (Gas Fire Suppression + Fire Alarm) | 90d | 2026-12-15 | 2027-04-28 | A9190, A9370 | 225d | 135d |
| A10320 |  | Grounding Materials (Flat Steel / Copper Cable / Ground Electrode) | 45d | 2026-12-15 | 2027-02-18 | A9370 | 0d |  |

| ID | WBS | Activity | Duration | Start | Finish | Predecessors | Total float | Free float |
| --- | --- | --- | --- | --- | --- | --- | --- | --- |
|  | 1 | **PPC&SCADA** |  | 2026-11-27 | 2027-04-09 |  |  |  |
| A17440 |  | Preparation and Review of PPCSCADA Procurement Technical Specifications | 10d | 2026-11-27 | 2026-12-10 | A17140 | 196d | 0d |
| A17450 |  | PPCSCADA PO Issuance (Purchase Order) | 5d | 2026-12-11 | 2026-12-18 | A17440 | 196d | 0d |
| A17460 |  | Manufacturing of SCADA Servers/Workstations/Industrial Switches | 30d | 2026-12-21 | 2027-02-02 | A17450 | 196d | 0d |
| A17470 |  | SCADA Software Licensing (Historical Database/Alerts/Reports/Web Publishing) | 20d | 2026-12-21 | 2027-01-19 | A17450 | 206d | 10d |
| A17480 |  | Procurement of SCADA Cabinets/Operation Panels/Printers | 25d | 2026-12-21 | 2027-01-26 | A17450 | 201d | 5d |
| A17490 |  | Purchase of PPCSCADA Communication Cables (Fiber Optic/Wire/Cable) | 20d | 2026-12-21 | 2027-01-19 | A17450 | 206d | 10d |
| A17500 |  | PPCSCADA FAT (Factory Acceptance Test) | 10d | 2027-02-03 | 2027-02-16 | A17460, A17480, A17470, A17490 | 196d | 0d |
| A17510 |  | Transportation and Customs Clearance of PPCSCADA Equipment | 25d | 2027-02-17 | 2027-03-24 | A17500 | 196d | 0d |
| A17520 |  | Inland Transportation of PPCSCADA Equipment to the Site | 5d | 2027-03-25 | 2027-04-02 | A17510 | 196d | 0d |
| A17530 |  | On-site Arrival Acceptance of PPCSCADA Equipment | 5d | 2027-04-05 | 2027-04-09 | A17520 | 196d | 147d |
|  | 2 | **Switching Stataion** |  | 2026-10-14 | 2027-07-01 |  |  |  |
| A10590 |  | Fencing/Gate | 60d | 2026-10-14 | 2027-01-08 | A9440 | 405d | 0d |
| A10420 |  | 132kV SF6 circuit breaker | 150d | 2026-11-24 | 2027-07-01 | A9610 | 76d | 0d |
| A10430 |  | 132kV disconnectors | 120d | 2026-11-24 | 2027-05-19 | A9610 | 106d | 0d |
| A10440 |  | 132kV CT | 120d | 2026-11-24 | 2027-05-19 | A9610 | 116d | 0d |
| A10450 |  | 132kV PT | 120d | 2026-11-24 | 2027-05-19 | A9610 | 106d | 0d |
| A10460 |  | 132kV busbar and accessories | 90d | 2026-11-24 | 2027-04-06 | A9610 | 136d | 0d |
| A10470 |  | 132kV lightning arresters | 90d | 2026-11-24 | 2027-04-06 | A9610 | 174d | 0d |
| A10480 |  | 132kV line protection panel | 120d | 2026-11-24 | 2027-05-19 | A9610 | 122d | 0d |
| A10490 |  | 132kV busbar protection panel | 120d | 2026-11-24 | 2027-05-19 | A9610 | 130d | 0d |
| A10500 |  | Protection panel | 120d | 2026-12-02 | 2027-05-27 | A9630 | 116d | 45d |
| A10520 |  | Communication panel | 120d | 2026-12-02 | 2027-05-27 | A9630 | 121d | 45d |
| A10530 |  | Metering panel | 120d | 2026-12-02 | 2027-05-27 | A9630 | 110d | 45d |
| A10540 |  | DC charging panel | 90d | 2026-12-02 | 2027-04-14 | A9630 | 140d | 75d |
| A10550 |  | Batteries | 90d | 2026-12-02 | 2027-04-14 | A9630 | 140d | 75d |
| A10560 |  | Secondary control cables | 60d | 2026-12-02 | 2027-02-26 | A9630 | 196d | 131d |
| A10570 |  | 132kV power cables and accessories | 60d | 2026-12-02 | 2027-02-26 | A9630 | 190d | 54d |
| A10580 |  | Earthing materials | 45d | 2026-12-02 | 2027-02-05 | A9630 | 175d | 30d |

| ID | WBS | Activity | Duration | Start | Finish | Predecessors | Total float | Free float |
| --- | --- | --- | --- | --- | --- | --- | --- | --- |
|  | 3 | **OverHead Line** |  | 2026-12-11 | 2027-07-20 |  |  |  |
| A10600 |  | Conductors (ACSR/Twin Besfort) | 120d | 2026-12-11 | 2027-06-07 | A4890 | 120d |  |
| A10610 |  | Ground wire/GW | 90d | 2026-12-11 | 2027-04-23 | A4890 | 150d |  |
| A10620 |  | OPGW optical cable (including fiber cores) | 120d | 2026-12-11 | 2027-06-07 | A4890 | 120d |  |
| A10630 |  | Tower materials (galvanized angle steel) | 150d | 2026-12-11 | 2027-07-20 | A4890 | 20d | 0d |
| A10640 |  | Hardware (pendant/tension/connections) | 90d | 2026-12-11 | 2027-04-23 | A4890 | 194d |  |
| A10650 |  | Insulator | 90d | 2026-12-11 | 2027-04-23 | A4890 | 150d |  |
| A10660 |  | Grounding materials (grounding lead-down line/grounding electrode) | 45d | 2026-12-11 | 2027-02-16 | A4890 | 195d |  |
|  | 4 | **Hera MTS** |  | 2026-10-23 | 2028-01-17 |  |  |  |
| A10670 |  | 800MVA main transformer | 310d | 2026-10-23 | 2028-01-17 | A9930 | 0d |  |
| A10790 |  | 22kV lightning arrester | 90d | 2026-10-23 | 2027-03-02 | A10060 | 269d | 43d |
| A10800 |  | insulator | 60d | 2026-10-23 | 2027-01-19 | A10060 | 269d | 73d |
| A10810 |  | 50kA upgrade - 275kV disconnectors | 150d | 2026-10-23 | 2027-05-31 | A10060 | 185d | 0d |
| A10820 |  | 50kA upgrade - 275kV CT | 150d | 2026-10-23 | 2027-05-31 | A10060 | 205d | 0d |
| A11230 |  | 50kA upgrade - Grounding switches | 120d | 2026-10-23 | 2027-04-16 | A10060 | 255d | 3d |
| A11240 |  | 50kA upgrade - Pole insulators | 60d | 2026-10-23 | 2027-01-19 | A10060 | 317d | 63d |
| A11250 |  | Main Transformer Protection Scheme | 120d | 2026-10-23 | 2027-04-16 | A10060 | 200d | 63d |
| A11260 |  | Junction boxes | 90d | 2026-10-23 | 2027-03-02 | A10060 | 284d | 43d |
| A11270 |  | Communication System | 90d | 2026-10-23 | 2027-03-02 | A10060 | 226d | 93d |
| A11280 |  | Remote Control System | 120d | 2026-10-23 | 2027-04-16 | A10060 | 196d | 63d |
| A11290 |  | 400/275kV Power Cables and Accessories | 60d | 2026-10-23 | 2027-01-19 | A10060 | 281d | 179d |
| A11300 |  | Secondary Control Cables | 60d | 2026-10-23 | 2027-01-19 | A10060 | 276d | 143d |
| A11310 |  | Grounding Materials | 45d | 2026-10-23 | 2026-12-28 | A10060 | 221d | 88d |
| A10680 |  | 275kV circuit breaker | 180d | 2026-12-24 | 2027-09-13 | A9991 | 102d | 0d |
| A10690 |  | 400kV circuit breaker | 180d | 2026-12-24 | 2027-09-13 | A9991 | 102d | 0d |
| A10700 |  | 275kV disconnect switch | 150d | 2026-12-24 | 2027-07-30 | A9991 | 128d | 0d |
| A10710 |  | 400kV disconnect switch | 150d | 2026-12-24 | 2027-07-30 | A9991 | 132d | 0d |
| A10720 |  | 275kV CT | 150d | 2026-12-24 | 2027-07-30 | A9991 | 136d | 0d |
| A10730 |  | 400kV CT | 150d | 2026-12-24 | 2027-07-30 | A9991 | 138d | 0d |
| A10740 |  | 275kV grounding switch | 120d | 2026-12-24 | 2027-06-18 | A9991 | 192d | 0d |
| A10750 |  | 400kV grounding switch | 120d | 2026-12-24 | 2027-06-18 | A9991 | 192d | 0d |
| A10760 |  | 275kV lightning arrester | 90d | 2026-12-24 | 2027-05-06 | A9991 | 222d | 0d |
| A10770 |  | 400kV lightning arrester | 90d | 2026-12-24 | 2027-05-06 | A9991 | 222d | 0d |
| A10780 |  | station transformer | 90d | 2026-12-24 | 2027-05-06 | A9991 | 222d | 0d |

| ID | WBS | Activity | Duration | Start | Finish | Predecessors | Total float | Free float |
| --- | --- | --- | --- | --- | --- | --- | --- | --- |
|  | 6 | **Ngwedi MTS** |  | 2026-10-14 | 2027-04-14 |  |  |  |
| A20350 |  | Feeder Protection Panel Procurement | 90d | 2026-10-14 | 2027-02-19 | A20140 | 171d | 5d |
| A20380 |  | Junction Box & Terminal | 45d | 2026-10-14 | 2026-12-15 | A20140 | 223d | 50d |
| A20390 |  | Labelling Procurement | 30d | 2026-10-14 | 2026-11-24 | A20140 | 480d | 65d |
| A20260 |  | Circuit Breaker Procurement | 100d | 2026-11-04 | 2027-03-31 | A20050 | 94d | 0d |
| A20270 |  | Disconnector Procurement | 90d | 2026-11-04 | 2027-03-12 | A20050 | 89d | 10d |
| A20280 |  | Earth Switch Procurement | 80d | 2026-11-04 | 2027-02-26 | A20050 | 136d | 20d |
| A20290 |  | Current Transformer Procurement | 90d | 2026-11-04 | 2027-03-12 | A20050 | 131d | 10d |
| A20300 |  | Voltage Transformer Procurement | 80d | 2026-11-04 | 2027-02-26 | A20050 | 141d | 20d |
| A20310 |  | Surge Arrester Procurement | 70d | 2026-11-04 | 2027-02-12 | A20050 | 154d | 30d |
| A20320 |  | Post Insulator Procurement | 60d | 2026-11-04 | 2027-01-29 | A20050 | 109d | 40d |
| A20210 |  | Steel & Gantry Procurement | 45d | 2026-12-02 | 2027-02-05 | A20020 | 430d | 0d |
| A20220 |  | Cement & Aggregate | 20d | 2026-12-02 | 2026-12-31 | A20020 | 455d | 25d |
| A20230 |  | Earthing Materials | 30d | 2026-12-02 | 2027-01-15 | A20020 | 445d | 15d |
| A20240 |  | Cable Trench Materials | 25d | 2026-12-02 | 2027-01-08 | A20020 | 450d | 20d |
| A20360 |  | Control Cable Procurement | 60d | 2026-12-02 | 2027-02-26 | A20180 | 178d | 0d |
| A20370 |  | Cable Termination & Accessories | 50d | 2026-12-02 | 2027-02-12 | A20180 | 233d | 10d |
| A20330 |  | Busbar & Fittings Procurement | 70d | 2026-12-04 | 2027-03-16 | A20070 | 117d | 8d |
| A20250 |  | Civil Material Inspection | 5d | 2027-02-08 | 2027-02-12 | A20240, A20210, A20220, A20230 | 430d |  |
| A20400 |  | Secondary Equipment Inspection | 5d | 2027-03-01 | 2027-03-05 | A20360, A20350, A20370, A20380, A20390 | 415d |  |
| A20340 |  | Primary Equipment Inspection | 10d | 2027-04-01 | 2027-04-14 | A20260, A20330, A20270, A20280, A20290, A20300, A20310, A20320 | 390d |  |
|  | 5 | **Construction** |  | 2026-10-14 | 2028-10-09 |  |  |  |
|  | 3 | **General Work** |  | 2026-11-18 | 2027-02-26 |  |  |  |
| A15440 |  | Relocated of Plant and animal | 50d | 2026-11-18 | 2027-01-29 | A1100 | 0d |  |
| A15450 |  | Site leveling and clearance | 60d | 2026-12-02 | 2027-02-26 | A15440 SS+10d | 0d |  |

| ID | WBS | Activity | Duration | Start | Finish | Predecessors | Total float | Free float |
| --- | --- | --- | --- | --- | --- | --- | --- | --- |
|  | 1 | **PV Field** |  | 2027-02-02 | 2028-10-09 |  |  |  |
|  | 1 | **Cable Trench and Cabling** |  | 2027-06-01 | 2028-06-14 |  |  |  |
|  | 1 | **MV Cable Trench and Cabling** |  | 2027-06-01 | 2028-01-06 |  |  |  |
|  | 1 | **Block 1-4** |  | 2027-06-01 | 2027-11-11 |  |  |  |
|  | 1 | **Civil Work** |  | 2027-06-01 | 2027-11-11 |  |  |  |
| A3280 |  | Setting Out | 5d | 2027-06-01 | 2027-06-07 | A3150, A3100 | 26d | 0d |
| A3290 |  | Excavation | 10d | 2027-06-08 | 2027-06-22 | A3280 | 26d | 0d |
| A3300 |  | first layer clean and inspection | 5d | 2027-06-23 | 2027-06-29 | A3290 | 26d | 0d |
| A3310 |  | First layer bedding sand place | 5d | 2027-06-30 | 2027-07-06 | A3300 | 26d | 5d |
| A3320 |  | Second layer bedding sand place | 5d | 2027-09-03 | 2027-09-09 | A3310, A3380 | 0d |  |
| A3330 |  | concrete tile installation | 10d | 2027-09-10 | 2027-09-23 | A3320 | 0d |  |
| A3340 |  | Third bedding sand place | 5d | 2027-09-27 | 2027-10-01 | A3330 | 12d | 0d |
| A3350 |  | warning type install | 3d | 2027-10-04 | 2027-10-06 | A3340 | 12d |  |
| A3360 |  | Termination of MV Cable | 5d | 2027-10-25 | 2027-10-29 | A3350, A3110 | 0d |  |
| A3520 |  | VLF Testing | 3d | 2027-11-01 | 2027-11-03 | A3360 | 8d | 0d |
| A5670 |  | Back filling | 6d | 2027-11-04 | 2027-11-11 | A3520 | 8d | 0d |
|  | 2 | **Cabling** |  | 2027-08-13 | 2027-09-02 |  |  |  |
| A3370 |  | Cabling | 10d | 2027-08-13 | 2027-08-26 | A3310, A3220, A3230 | 0d |  |
| A3380 |  | Continuty testing | 5d | 2027-08-27 | 2027-09-02 | A3370 | 0d |  |
|  | 2 | **Block 5-8** |  | 2027-06-23 | 2027-11-19 |  |  |  |
|  | 1 | **Civil Work** |  | 2027-06-23 | 2027-11-19 |  |  |  |
| A4590 |  | Setting Out | 5d | 2027-06-23 | 2027-06-29 | A3280, A4130 | 21d | 0d |
| A4600 |  | Excavation | 10d | 2027-06-30 | 2027-07-13 | A4590, A3290 | 21d | 0d |
| A4610 |  | first layer clean and inspection | 5d | 2027-07-14 | 2027-07-20 | A4600, A3310 | 21d | 0d |
| A4620 |  | First layer bedding sand place | 5d | 2027-07-21 | 2027-07-27 | A4610 | 21d | 10d |
| A4630 |  | Second layer bedding sand place | 5d | 2027-09-17 | 2027-09-23 | A4620, A4690, A3320 | 0d |  |
| A4640 |  | concrete tile installation | 10d | 2027-09-27 | 2027-10-08 | A4630, A3330 | 0d |  |
| A4650 |  | Third bedding sand place | 5d | 2027-10-11 | 2027-10-15 | A4640 | 7d | 0d |
| A4660 |  | warning type install | 3d | 2027-10-18 | 2027-10-20 | A4650 | 7d |  |
| A5790 |  | Termination of MV Cable | 5d | 2027-11-01 | 2027-11-05 | A4660, A3360, A4140 | 0d |  |
| A5800 |  | VLF Testing | 3d | 2027-11-08 | 2027-11-10 | A5790, A3520 | 9d | 1d |
| A5810 |  | Back filling | 6d | 2027-11-12 | 2027-11-19 | A5800, A5670 | 8d | 0d |

| ID | WBS | Activity | Duration | Start | Finish | Predecessors | Total float | Free float |
| --- | --- | --- | --- | --- | --- | --- | --- | --- |
|  | 2 | **Cabling** |  | 2027-08-27 | 2027-09-16 |  |  |  |
| A4680 |  | Cabling | 10d | 2027-08-27 | 2027-09-09 | A4620, A3370 | 0d |  |
| A4690 |  | Continuty testing | 5d | 2027-09-10 | 2027-09-16 | A4680, A3380 | 0d |  |
|  | 3 | **Block 9-12** |  | 2027-07-14 | 2027-11-29 |  |  |  |
|  | 1 | **Civil Work** |  | 2027-07-14 | 2027-11-29 |  |  |  |
| A4700 |  | Setting Out | 5d | 2027-07-14 | 2027-07-20 | A4590, A4240 | 16d | 0d |
| A4710 |  | Excavation | 10d | 2027-07-21 | 2027-08-03 | A4700, A4600 | 16d | 0d |
| A4720 |  | first layer clean and inspection | 5d | 2027-08-04 | 2027-08-11 | A4710, A4610 | 16d | 0d |
| A4730 |  | First layer bedding sand place | 5d | 2027-08-12 | 2027-08-18 | A4720, A4620 | 16d | 10d |
| A4740 |  | Second layer bedding sand place | 5d | 2027-10-04 | 2027-10-08 | A4730, A4800, A4630 | 0d |  |
| A4750 |  | concrete tile installation | 10d | 2027-10-11 | 2027-10-22 | A4740, A4640 | 0d |  |
| A4760 |  | Third bedding sand place | 5d | 2027-10-25 | 2027-10-29 | A4750, A4650 | 2d | 0d |
| A4770 |  | warning type install | 3d | 2027-11-01 | 2027-11-03 | A4760, A4660 | 2d |  |
| A5820 |  | Termination of MV Cable | 5d | 2027-11-08 | 2027-11-12 | A4770, A5790, A4250 | 0d |  |
| A5830 |  | VLF Testing | 3d | 2027-11-15 | 2027-11-17 | A5820, A5800 | 10d | 2d |
| A5840 |  | Back filling | 6d | 2027-11-22 | 2027-11-29 | A5830, A5810 | 8d | 0d |
|  | 2 | **Cabling** |  | 2027-09-10 | 2027-10-01 |  |  |  |
| A4790 |  | Cabling | 10d | 2027-09-10 | 2027-09-23 | A4730, A4680 | 0d |  |
| A4800 |  | Continuty testing | 5d | 2027-09-27 | 2027-10-01 | A4790, A4690 | 0d |  |
|  | 4 | **Block 13-16** |  | 2027-08-04 | 2027-12-07 |  |  |  |
|  | 1 | **Civil Work** |  | 2027-08-04 | 2027-12-07 |  |  |  |
| A4810 |  | Setting Out | 5d | 2027-08-04 | 2027-08-11 | A4700, A4350 | 11d | 0d |
| A4820 |  | Excavation | 10d | 2027-08-12 | 2027-08-25 | A4810, A4710 | 11d | 0d |
| A4830 |  | first layer clean and inspection | 5d | 2027-08-26 | 2027-09-01 | A4820, A4720 | 11d | 0d |
| A4840 |  | First layer bedding sand place | 5d | 2027-09-02 | 2027-09-08 | A4830, A4730 | 11d | 10d |
| A4850 |  | Second layer bedding sand place | 5d | 2027-10-18 | 2027-10-22 | A4840, A4910, A4740 | 0d |  |
| A4860 |  | concrete tile installation | 10d | 2027-10-25 | 2027-11-05 | A4850, A4750 | 0d |  |
| A4870 |  | Third bedding sand place | 5d | 2027-11-08 | 2027-11-12 | A4860, A4760 | 8d | 0d |
| A4880 |  | warning type install | 3d | 2027-11-15 | 2027-11-17 | A4870, A4770 | 8d | 0d |
| A5850 |  | Termination of MV Cable | 5d | 2027-11-18 | 2027-11-24 | A4880, A5820, A4360 | 8d | 0d |
| A5860 |  | VLF Testing | 3d | 2027-11-25 | 2027-11-29 | A5850, A5830 | 8d | 0d |
| A5870 |  | Back filling | 6d | 2027-11-30 | 2027-12-07 | A5860, A5840 | 8d | 0d |

| ID | WBS | Activity | Duration | Start | Finish | Predecessors | Total float | Free float |
| --- | --- | --- | --- | --- | --- | --- | --- | --- |
|  | 2 | **Cabling** |  | 2027-09-27 | 2027-10-15 |  |  |  |
| A4900 |  | Cabling | 10d | 2027-09-27 | 2027-10-08 | A4840, A4790, A3270 | 0d |  |
| A4910 |  | Continuty testing | 5d | 2027-10-11 | 2027-10-15 | A4900, A4800 | 0d |  |
|  | 5 | **Block 17-19** |  | 2027-08-26 | 2027-12-22 |  |  |  |
|  | 1 | **Civil Work** |  | 2027-08-26 | 2027-12-22 |  |  |  |
| A4920 |  | Setting Out | 5d | 2027-08-26 | 2027-09-01 | A4810, A4460 | 6d | 0d |
| A4930 |  | Excavation | 10d | 2027-09-02 | 2027-09-15 | A4920, A4820 | 6d | 0d |
| A4940 |  | first layer clean and inspection | 5d | 2027-09-16 | 2027-09-22 | A4930, A4830 | 6d | 0d |
| A4950 |  | First layer bedding sand place | 5d | 2027-09-23 | 2027-09-30 | A4940, A4840 | 6d |  |
| A4960 |  | Second layer bedding sand place | 5d | 2027-11-01 | 2027-11-05 | A4950, A5020, A4850 | 0d |  |
| A4970 |  | concrete tile installation | 10d | 2027-11-08 | 2027-11-19 | A4960, A4860 | 0d |  |
| A4980 |  | Third bedding sand place | 5d | 2027-11-22 | 2027-11-26 | A4970, A4870 | 4d | 0d |
| A4990 |  | warning type install | 3d | 2027-11-29 | 2027-12-01 | A4980, A4880 | 4d | 0d |
| A5880 |  | Termination of MV Cable | 5d | 2027-12-02 | 2027-12-08 | A4990, A5850, A4470 | 4d | 0d |
| A5890 |  | VLF Testing | 3d | 2027-12-09 | 2027-12-13 | A5880, A5860 | 4d | 0d |
| A5900 |  | Back filling | 6d | 2027-12-14 | 2027-12-22 | A5890, A5870 | 4d | 0d |
|  | 2 | **Cabling** |  | 2027-10-11 | 2027-10-29 |  |  |  |
| A5010 |  | Cabling | 10d | 2027-10-11 | 2027-10-22 | A4950, A4900 | 0d |  |
| A5020 |  | Continuty testing | 5d | 2027-10-25 | 2027-10-29 | A5010, A4910 | 0d |  |
|  | 6 | **Block 20-22** |  | 2027-09-16 | 2028-01-06 |  |  |  |
|  | 1 | **Civil Work** |  | 2027-09-16 | 2028-01-06 |  |  |  |
| A5030 |  | Setting Out | 5d | 2027-09-16 | 2027-09-22 | A4920, A4570 | 1d | 0d |
| A5040 |  | Excavation | 10d | 2027-09-23 | 2027-10-07 | A5030, A4930 | 1d | 0d |
| A5050 |  | first layer clean and inspection | 5d | 2027-10-08 | 2027-10-14 | A5040, A4940 | 1d | 0d |
| A5060 |  | First layer bedding sand place | 5d | 2027-10-15 | 2027-10-21 | A5050, A4950 | 1d |  |
| A5070 |  | Second layer bedding sand place | 5d | 2027-11-15 | 2027-11-19 | A5060, A5130, A4960 | 0d |  |
| A5080 |  | concrete tile installation | 10d | 2027-11-22 | 2027-12-03 | A5070, A4970 | 0d |  |
| A5090 |  | Third bedding sand place | 5d | 2027-12-06 | 2027-12-10 | A5080, A4980 | 0d |  |
| A5100 |  | warning type install | 3d | 2027-12-13 | 2027-12-15 | A5090, A4990 | 0d |  |
| A5910 |  | Termination of MV Cable | 5d | 2027-12-17 | 2027-12-23 | A5100, A5880, A4580 | 0d |  |
| A5920 |  | VLF Testing | 3d | 2027-12-24 | 2027-12-29 | A5910, A5890 | 0d |  |
| A5930 |  | Back filling | 6d | 2027-12-30 | 2028-01-06 | A5920, A5900 | 0d |  |

| ID | WBS | Activity | Duration | Start | Finish | Predecessors | Total float | Free float |
| --- | --- | --- | --- | --- | --- | --- | --- | --- |
|  | 2 | **Cabling** |  | 2027-10-25 | 2027-11-12 |  |  |  |
| A5120 |  | Cabling | 10d | 2027-10-25 | 2027-11-05 | A5060, A5010 | 0d |  |
| A5130 |  | Continuty testing | 5d | 2027-11-08 | 2027-11-12 | A5120, A5020 | 0d |  |
|  | 2 | **LV Cable Trench and Cabling** |  | 2027-11-12 | 2028-05-04 |  |  |  |
|  | 1 | **Block 1-4** |  | 2027-11-12 | 2028-02-17 |  |  |  |
|  | 1 | **Civil Work** |  | 2027-11-12 | 2028-02-17 |  |  |  |
| A3620 |  | Setting Out | 5d | 2027-11-12 | 2027-11-18 | A3420, A5670 | 16d | 0d |
| A3630 |  | Excavation | 10d | 2027-11-19 | 2027-12-02 | A3620 | 16d | 0d |
| A3640 |  | first layer clean and inspection | 5d | 2027-12-03 | 2027-12-09 | A3630 | 16d | 0d |
| A3650 |  | First layer bedding sand place | 5d | 2027-12-10 | 2027-12-17 | A3640 | 16d | 0d |
| A3660 |  | Second layer bedding sand place | 5d | 2028-01-11 | 2028-01-17 | A3650, A3720 | 16d | 0d |
| A3670 |  | concrete tile installation | 10d | 2028-01-18 | 2028-01-31 | A3660 | 16d | 0d |
| A3680 |  | Third bedding sand place | 5d | 2028-02-01 | 2028-02-07 | A3670 | 41d | 0d |
| A3690 |  | warning type install | 3d | 2028-02-08 | 2028-02-10 | A3680 | 41d | 0d |
| A3700 |  | Backfilling | 5d | 2028-02-11 | 2028-02-17 | A3690 | 41d | 5d |
|  | 2 | **Cabling** |  | 2027-12-20 | 2028-01-10 |  |  |  |
| A3710 |  | Cabling | 10d | 2027-12-20 | 2028-01-03 | A3650, A3470 | 16d | 0d |
| A3720 |  | Continuty testing | 5d | 2028-01-04 | 2028-01-10 | A3710 | 16d | 0d |
|  | 2 | **Block 5-8** |  | 2027-11-22 | 2028-03-02 |  |  |  |
|  | 1 | **Civil Work** |  | 2027-11-22 | 2028-03-02 |  |  |  |
| A6070 |  | Setting Out | 5d | 2027-11-22 | 2027-11-26 | A3620, A5810 | 20d | 1d |
| A6080 |  | Excavation | 10d | 2027-12-03 | 2027-12-17 | A6070, A3630 | 16d | 0d |
| A6090 |  | first layer clean and inspection | 5d | 2027-12-20 | 2027-12-24 | A6080 | 16d | 0d |
| A6100 |  | First layer bedding sand place | 5d | 2027-12-28 | 2028-01-03 | A6090, A3650 | 16d | 0d |
| A6110 |  | Second layer bedding sand place | 5d | 2028-01-25 | 2028-01-31 | A6100, A6170, A3660 | 16d | 0d |
| A6120 |  | concrete tile installation | 10d | 2028-02-01 | 2028-02-14 | A6110, A3670 | 16d | 0d |
| A6130 |  | Third bedding sand place | 5d | 2028-02-15 | 2028-02-21 | A6120, A3680 | 36d | 0d |
| A6140 |  | warning type install | 3d | 2028-02-22 | 2028-02-24 | A6130 | 36d | 0d |
| A6150 |  | Backfilling | 5d | 2028-02-25 | 2028-03-02 | A6140, A3700 | 36d | 5d |

| ID | WBS | Activity | Duration | Start | Finish | Predecessors | Total float | Free float |
| --- | --- | --- | --- | --- | --- | --- | --- | --- |
|  | 2 | **Cabling** |  | 2028-01-04 | 2028-01-24 |  |  |  |
| A6160 |  | Cabling | 10d | 2028-01-04 | 2028-01-17 | A6100, A3710 | 16d | 0d |
| A6170 |  | Continuty testing | 5d | 2028-01-18 | 2028-01-24 | A6160, A3720 | 16d | 0d |
|  | 3 | **Block 9-12** |  | 2027-11-30 | 2028-03-16 |  |  |  |
|  | 1 | **Civil Work** |  | 2027-11-30 | 2028-03-16 |  |  |  |
| A5960 |  | Setting Out | 5d | 2027-11-30 | 2027-12-06 | A6070, A5840 | 24d | 1d |
| A5970 |  | Excavation | 10d | 2027-12-20 | 2028-01-03 | A5960, A6080 | 16d | 0d |
| A5980 |  | first layer clean and inspection | 5d | 2028-01-04 | 2028-01-10 | A5970 | 16d | 0d |
| A5990 |  | First layer bedding sand place | 5d | 2028-01-11 | 2028-01-17 | A5980, A6100 | 16d | 0d |
| A6000 |  | Second layer bedding sand place | 5d | 2028-02-08 | 2028-02-14 | A5990, A6060, A6110 | 16d | 0d |
| A6010 |  | concrete tile installation | 10d | 2028-02-15 | 2028-02-28 | A6000, A6120 | 16d | 0d |
| A6020 |  | Third bedding sand place | 5d | 2028-02-29 | 2028-03-06 | A6010, A6130 | 31d | 0d |
| A6030 |  | warning type install | 3d | 2028-03-07 | 2028-03-09 | A6020, A6140 | 31d | 0d |
| A6040 |  | Backfilling | 5d | 2028-03-10 | 2028-03-16 | A6030, A6150 | 31d | 5d |
|  | 2 | **Cabling** |  | 2028-01-18 | 2028-02-07 |  |  |  |
| A6050 |  | Cabling | 10d | 2028-01-18 | 2028-01-31 | A5990, A6160 | 16d | 0d |
| A6060 |  | Continuty testing | 5d | 2028-02-01 | 2028-02-07 | A6050, A6170 | 16d | 0d |
|  | 4 | **Block 13-16** |  | 2027-12-08 | 2028-03-31 |  |  |  |
|  | 1 | **Civil Work** |  | 2027-12-08 | 2028-03-31 |  |  |  |
| A6180 |  | Setting Out | 5d | 2027-12-08 | 2027-12-14 | A5960, A5870 | 28d | 5d |
| A6190 |  | Excavation | 10d | 2028-01-04 | 2028-01-17 | A6180, A5970 | 16d | 0d |
| A6200 |  | first layer clean and inspection | 5d | 2028-01-18 | 2028-01-24 | A6190 | 16d | 0d |
| A6210 |  | First layer bedding sand place | 5d | 2028-01-25 | 2028-01-31 | A6200, A5990 | 16d | 0d |
| A6220 |  | Second layer bedding sand place | 5d | 2028-02-22 | 2028-02-28 | A6210, A6280, A6000 | 16d | 0d |
| A6230 |  | concrete tile installation | 10d | 2028-02-29 | 2028-03-13 | A6220, A6010 | 16d | 0d |
| A6240 |  | Third bedding sand place | 5d | 2028-03-14 | 2028-03-20 | A6230, A6020 | 26d | 0d |
| A6250 |  | warning type install | 3d | 2028-03-22 | 2028-03-24 | A6240, A6030 | 26d | 0d |
| A6260 |  | Backfilling | 5d | 2028-03-27 | 2028-03-31 | A6250, A6040 | 26d | 5d |

| ID | WBS | Activity | Duration | Start | Finish | Predecessors | Total float | Free float |
| --- | --- | --- | --- | --- | --- | --- | --- | --- |
|  | 2 | **Cabling** |  | 2028-02-01 | 2028-02-21 |  |  |  |
| A6270 |  | Cabling | 10d | 2028-02-01 | 2028-02-14 | A6210, A6050, A3490 | 16d | 0d |
| A6280 |  | Continuty testing | 5d | 2028-02-15 | 2028-02-21 | A6270, A6060 | 16d | 0d |
|  | 5 | **Block 17-19** |  | 2027-12-23 | 2028-04-18 |  |  |  |
|  | 1 | **Civil Work** |  | 2027-12-23 | 2028-04-18 |  |  |  |
| A6290 |  | Setting Out | 5d | 2027-12-23 | 2027-12-30 | A6180, A5900 | 28d | 5d |
| A6300 |  | Excavation | 10d | 2028-01-18 | 2028-01-31 | A6290, A6190 | 16d | 0d |
| A6310 |  | first layer clean and inspection | 5d | 2028-02-01 | 2028-02-07 | A6300, A6200 | 16d | 0d |
| A6320 |  | First layer bedding sand place | 5d | 2028-02-08 | 2028-02-14 | A6310, A6210 | 16d | 0d |
| A6330 |  | Second layer bedding sand place | 5d | 2028-03-07 | 2028-03-13 | A6320, A6390, A6220 | 16d | 0d |
| A6340 |  | concrete tile installation | 10d | 2028-03-14 | 2028-03-28 | A6330, A6230 | 16d | 0d |
| A6350 |  | Third bedding sand place | 5d | 2028-03-29 | 2028-04-04 | A6340, A6240 | 21d | 0d |
| A6360 |  | warning type install | 3d | 2028-04-05 | 2028-04-07 | A6350, A6250 | 21d | 0d |
| A6370 |  | Backfilling | 5d | 2028-04-10 | 2028-04-18 | A6360, A6260 | 21d | 5d |
|  | 2 | **Cabling** |  | 2028-02-15 | 2028-03-06 |  |  |  |
| A6380 |  | Cabling | 10d | 2028-02-15 | 2028-02-28 | A6320, A6270 | 16d | 0d |
| A6390 |  | Continuty testing | 5d | 2028-02-29 | 2028-03-06 | A6380, A6280 | 16d | 0d |
|  | 6 | **Block 20-22** |  | 2028-01-07 | 2028-05-04 |  |  |  |
|  | 1 | **Civil Work** |  | 2028-01-07 | 2028-05-04 |  |  |  |
| A6400 |  | Setting Out | 5d | 2028-01-07 | 2028-01-13 | A6290, A5930 | 28d | 12d |
| A6410 |  | Excavation | 10d | 2028-02-01 | 2028-02-14 | A6400, A6300 | 16d | 0d |
| A6420 |  | first layer clean and inspection | 5d | 2028-02-15 | 2028-02-21 | A6410 | 16d | 0d |
| A6430 |  | First layer bedding sand place | 5d | 2028-02-22 | 2028-02-28 | A6420, A6320 | 16d | 0d |
| A6440 |  | Second layer bedding sand place | 5d | 2028-03-22 | 2028-03-28 | A6430, A6500, A6330 | 16d | 0d |
| A6450 |  | concrete tile installation | 10d | 2028-03-29 | 2028-04-11 | A6440, A6340 | 16d | 0d |
| A6460 |  | Third bedding sand place | 5d | 2028-04-12 | 2028-04-20 | A6450, A6350 | 16d | 0d |
| A6470 |  | warning type install | 3d | 2028-04-21 | 2028-04-25 | A6460, A6360 | 16d | 0d |
| A6480 |  | Backfilling | 5d | 2028-04-26 | 2028-05-04 | A6470, A6370 | 16d | 0d |

| ID | WBS | Activity | Duration | Start | Finish | Predecessors | Total float | Free float |
| --- | --- | --- | --- | --- | --- | --- | --- | --- |
|  | 2 | **Cabling** |  | 2028-02-29 | 2028-03-20 |  |  |  |
| A6490 |  | Cabling | 10d | 2028-02-29 | 2028-03-13 | A6430, A6380 | 16d | 0d |
| A6500 |  | Continuty testing | 5d | 2028-03-14 | 2028-03-20 | A6490, A6390 | 16d | 0d |
|  | 3 | **Earthing Trench and Cabling** |  | 2027-08-16 | 2028-05-11 |  |  |  |
|  | 1 | **Block 1-4** |  | 2027-08-16 | 2027-12-15 |  |  |  |
|  | 1 | **Civil** |  | 2027-08-16 | 2027-12-15 |  |  |  |
| A19550 |  | Trench Excavation | 12d | 2027-08-16 | 2027-08-31 | A2380 | 92d | 1d |
| A19560 |  | Backfilling & Compaction | 15d | 2027-11-25 | 2027-12-15 | A19620 | 91d | 31d |
|  | 2 | **Earthing Installation** |  | 2027-09-02 | 2027-11-24 |  |  |  |
| A19580 |  | Ground Electrode | 20d | 2027-09-02 | 2027-09-30 | A19550, A5780 | 91d | 0d |
| A19590 |  | Flat Steel Laying & Welding | 8d | 2027-10-01 | 2027-10-12 | A19580 | 91d | 0d |
| A19600 |  | Copper Cable Laying | 15d | 2027-10-13 | 2027-11-02 | A19590 | 91d | 0d |
| A19610 |  | Equipment Grounding | 10d | 2027-11-03 | 2027-11-16 | A19600 | 91d | 0d |
| A19620 |  | Resistance Testing | 6d | 2027-11-17 | 2027-11-24 | A19610 | 91d | 0d |
|  | 2 | **Block 5-8** |  | 2027-09-13 | 2028-01-13 |  |  |  |
|  | 1 | **Civil** |  | 2027-09-13 | 2028-01-13 |  |  |  |
| A19630 |  | Trench Excavation | 12d | 2027-09-13 | 2027-09-29 | A6580 | 81.5d | 0d |
| A19640 |  | Backfilling & Compaction | 15d | 2027-12-23 | 2028-01-13 | A19690 | 81.5d | 29d |
|  | 2 | **Earthing Installation** |  | 2027-09-30 | 2027-12-22 |  |  |  |
| A19650 |  | Ground Electrode | 20d | 2027-09-30 | 2027-10-27 | A19630 | 81.5d | 0d |
| A19660 |  | Flat Steel Laying & Welding | 8d | 2027-10-28 | 2027-11-08 | A19650 | 81.5d | 0d |
| A19670 |  | Copper Cable Laying | 15d | 2027-11-09 | 2027-11-29 | A19660 | 81.5d | 0d |
| A19680 |  | Equipment Grounding | 10d | 2027-11-30 | 2027-12-13 | A19670 | 81.5d | 0d |
| A19690 |  | Resistance Testing | 6d | 2027-12-14 | 2027-12-22 | A19680 | 81.5d | 0d |

| ID | WBS | Activity | Duration | Start | Finish | Predecessors | Total float | Free float |
| --- | --- | --- | --- | --- | --- | --- | --- | --- |
|  | 3 | **Block 9-12** |  | 2027-10-12 | 2028-02-10 |  |  |  |
|  | 1 | **Civil** |  | 2027-10-12 | 2028-02-10 |  |  |  |
| A19700 |  | Trench Excavation | 12d | 2027-10-12 | 2027-10-27 | A6760 | 71d | 0d |
| A19710 |  | Backfilling & Compaction | 15d | 2028-01-21 | 2028-02-10 | A19760 | 71d | 34d |
|  | 2 | **Earthing Installation** |  | 2027-10-28 | 2028-01-20 |  |  |  |
| A19720 |  | Ground Electrode | 20d | 2027-10-28 | 2027-11-24 | A19700 | 71d | 0d |
| A19730 |  | Flat Steel Laying & Welding | 8d | 2027-11-25 | 2027-12-06 | A19720 | 71d | 0d |
| A19740 |  | Copper Cable Laying | 15d | 2027-12-07 | 2027-12-29 | A19730 | 71d | 0d |
| A19750 |  | Equipment Grounding | 10d | 2027-12-30 | 2028-01-12 | A19740 | 71d | 0d |
| A19760 |  | Resistance Testing | 6d | 2028-01-13 | 2028-01-20 | A19750 | 71d | 0d |
|  | 4 | **Block 13-16** |  | 2027-11-09 | 2028-03-09 |  |  |  |
|  | 1 | **Civil** |  | 2027-11-09 | 2028-03-09 |  |  |  |
| A19770 |  | Trench Excavation | 12d | 2027-11-09 | 2027-11-24 | A6940 | 65d | 0d |
| A19780 |  | Backfilling & Compaction | 15d | 2028-02-18 | 2028-03-09 | A19830 | 65d | 39d |
|  | 2 | **Earthing Installation** |  | 2027-11-25 | 2028-02-17 |  |  |  |
| A19790 |  | Ground Electrode | 20d | 2027-11-25 | 2027-12-23 | A19770 | 65d | 0d |
| A19800 |  | Flat Steel Laying & Welding | 8d | 2027-12-24 | 2028-01-05 | A19790 | 65d | 0d |
| A19810 |  | Copper Cable Laying | 15d | 2028-01-06 | 2028-01-26 | A19800 | 65d | 0d |
| A19820 |  | Equipment Grounding | 10d | 2028-01-27 | 2028-02-09 | A19810 | 65d | 0d |
| A19830 |  | Resistance Testing | 6d | 2028-02-10 | 2028-02-17 | A19820 | 65d | 0d |
|  | 5 | **Block 17-19** |  | 2027-12-07 | 2028-04-07 |  |  |  |
|  | 1 | **Civil** |  | 2027-12-07 | 2028-04-07 |  |  |  |
| A19840 |  | Trench Excavation | 12d | 2027-12-07 | 2027-12-23 | A7120 | 54.5d | 0d |
| A19850 |  | Backfilling & Compaction | 15d | 2028-03-17 | 2028-04-07 | A19900 | 54.5d | 44d |

| ID | WBS | Activity | Duration | Start | Finish | Predecessors | Total float | Free float |
| --- | --- | --- | --- | --- | --- | --- | --- | --- |
|  | 2 | **Earthing Installation** |  | 2027-12-24 | 2028-03-16 |  |  |  |
| A19860 |  | Ground Electrode | 20d | 2027-12-24 | 2028-01-21 | A19840 | 54.5d | 0d |
| A19870 |  | Flat Steel Laying & Welding | 8d | 2028-01-24 | 2028-02-02 | A19860 | 54.5d | 0d |
| A19880 |  | Copper Cable Laying | 15d | 2028-02-03 | 2028-02-23 | A19870 | 54.5d | 0d |
| A19890 |  | Equipment Grounding | 10d | 2028-02-24 | 2028-03-08 | A19880 | 54.5d | 0d |
| A19900 |  | Resistance Testing | 6d | 2028-03-09 | 2028-03-16 | A19890 | 54.5d | 0d |
|  | 6 | **Block 20-22** |  | 2028-01-06 | 2028-05-11 |  |  |  |
|  | 1 | **Civil** |  | 2028-01-06 | 2028-05-11 |  |  |  |
| A19910 |  | Trench Excavation | 12d | 2028-01-06 | 2028-01-21 | A7300 | 44d | 0d |
| A19920 |  | Backfilling & Compaction | 15d | 2028-04-19 | 2028-05-11 | A19970 | 44d |  |
|  | 2 | **Earthing Installation** |  | 2028-01-24 | 2028-04-18 |  |  |  |
| A19930 |  | Ground Electrode | 20d | 2028-01-24 | 2028-02-18 | A19910 | 44d | 0d |
| A19940 |  | Flat Steel Laying & Welding | 8d | 2028-02-21 | 2028-03-01 | A19930 | 44d | 0d |
| A19950 |  | Copper Cable Laying | 15d | 2028-03-02 | 2028-03-23 | A19940 | 44d | 0d |
| A19960 |  | Equipment Grounding | 10d | 2028-03-24 | 2028-04-06 | A19950 | 44d | 0d |
| A19970 |  | Resistance Testing | 6d | 2028-04-07 | 2028-04-18 | A19960 | 44d | 0d |
|  | 4 | **Optical Fiber Trench and Cabling** |  | 2027-11-12 | 2028-03-29 |  |  |  |
|  | 1 | **Block 1-4** |  | 2027-11-12 | 2028-02-03 |  |  |  |
|  | 1 | **Civil Work** |  | 2027-11-12 | 2028-02-03 |  |  |  |
| A10340 |  | Setting Out | 5d | 2027-11-12 | 2027-11-18 | A5670 | 34d | 0d |
| A10350 |  | Excavation | 10d | 2027-11-19 | 2027-12-02 | A10340 | 34d | 0d |
| A10360 |  | Cleaning the Layer | 3d | 2027-12-03 | 2027-12-07 | A10350 | 34d | 0d |
| A10410 |  | splicing the Optical cable | 10d | 2027-12-31 | 2028-01-13 | A10380 | 34d | 0d |
| A10390 |  | Bedding sand backfilling | 10d | 2028-01-14 | 2028-01-27 | A10410 | 34d | 0d |
| A10400 |  | Backfilling | 5d | 2028-01-28 | 2028-02-03 | A10390 | 34d | 0d |

| ID | WBS | Activity | Duration | Start | Finish | Predecessors | Total float | Free float |
| --- | --- | --- | --- | --- | --- | --- | --- | --- |
|  | 2 | **Cabling** |  | 2027-12-08 | 2027-12-30 |  |  |  |
| A10370 |  | corrugated pipe Placed | 5d | 2027-12-08 | 2027-12-14 | A10360, A4010 | 34d | 0d |
| A10380 |  | Fiber Cabling/Blowing | 10d | 2027-12-15 | 2027-12-30 | A10370 | 34d | 0d |
|  | 2 | **Block 5-8** |  | 2027-11-22 | 2028-02-11 |  |  |  |
|  | 1 | **Civil Work** |  | 2027-11-22 | 2028-02-11 |  |  |  |
| A10830 |  | Setting Out | 5d | 2027-11-22 | 2027-11-26 | A5810 | 28d | 0d |
| A10840 |  | Excavation | 10d | 2027-11-29 | 2027-12-10 | A10830 | 28d | 0d |
| A10850 |  | Cleaning the Layer | 3d | 2027-12-13 | 2027-12-15 | A10840 | 28d | 0d |
| A10900 |  | splicing the Optical cable | 10d | 2028-01-10 | 2028-01-21 | A10870 | 28d | 0d |
| A10880 |  | Bedding sand backfilling | 10d | 2028-01-24 | 2028-02-04 | A10900 | 28d | 0d |
| A10890 |  | Backfilling | 5d | 2028-02-07 | 2028-02-11 | A10880 | 28d | 0d |
|  | 2 | **Cabling** |  | 2027-12-17 | 2028-01-07 |  |  |  |
| A10860 |  | corrugated pipe Placed | 5d | 2027-12-17 | 2027-12-23 | A10850 | 28d | 0d |
| A10870 |  | Fiber Cabling/Blowing | 10d | 2027-12-24 | 2028-01-07 | A10860 | 28d | 0d |
|  | 3 | **Block 9-12** |  | 2027-11-30 | 2028-02-21 |  |  |  |
|  | 1 | **Civil Work** |  | 2027-11-30 | 2028-02-21 |  |  |  |
| A10910 |  | Setting Out | 5d | 2027-11-30 | 2027-12-06 | A5840 | 22d | 0d |
| A10920 |  | Excavation | 10d | 2027-12-07 | 2027-12-21 | A10910 | 22d | 0d |
| A10930 |  | Cleaning the Layer | 3d | 2027-12-22 | 2027-12-24 | A10920 | 22d | 0d |
| A10980 |  | splicing the Optical cable | 10d | 2028-01-18 | 2028-01-31 | A10950 | 22d | 0d |
| A10960 |  | Bedding sand backfilling | 10d | 2028-02-01 | 2028-02-14 | A10980 | 22d | 0d |
| A10970 |  | Backfilling | 5d | 2028-02-15 | 2028-02-21 | A10960 | 22d | 0d |
|  | 2 | **Cabling** |  | 2027-12-28 | 2028-01-17 |  |  |  |
| A10940 |  | corrugated pipe Placed | 5d | 2027-12-28 | 2028-01-03 | A10930 | 22d | 0d |
| A10950 |  | Fiber Cabling/Blowing | 10d | 2028-01-04 | 2028-01-17 | A10940 | 22d | 0d |

| ID | WBS | Activity | Duration | Start | Finish | Predecessors | Total float | Free float |
| --- | --- | --- | --- | --- | --- | --- | --- | --- |
|  | 4 | **Block 13-16** |  | 2027-12-08 | 2028-02-29 |  |  |  |
|  | 1 | **Civil Work** |  | 2027-12-08 | 2028-02-29 |  |  |  |
| A10990 |  | Setting Out | 5d | 2027-12-08 | 2027-12-14 | A5870 | 16d | 0d |
| A11000 |  | Excavation | 10d | 2027-12-15 | 2027-12-30 | A10990 | 16d | 0d |
| A11010 |  | Cleaning the Layer | 3d | 2027-12-31 | 2028-01-04 | A11000 | 16d | 0d |
| A11060 |  | splicing the Optical cable | 10d | 2028-01-26 | 2028-02-08 | A11030 | 16d | 0d |
| A11040 |  | Bedding sand backfilling | 10d | 2028-02-09 | 2028-02-22 | A11060 | 16d | 0d |
| A11050 |  | Backfilling | 5d | 2028-02-23 | 2028-02-29 | A11040 | 16d | 0d |
|  | 2 | **Cabling** |  | 2028-01-05 | 2028-01-25 |  |  |  |
| A11020 |  | corrugated pipe Placed | 5d | 2028-01-05 | 2028-01-11 | A11010, A4030 | 16d | 0d |
| A11030 |  | Fiber Cabling/Blowing | 10d | 2028-01-12 | 2028-01-25 | A11020 | 16d | 0d |
|  | 5 | **Block 17-19** |  | 2027-12-23 | 2028-03-14 |  |  |  |
|  | 1 | **Civil Work** |  | 2027-12-23 | 2028-03-14 |  |  |  |
| A11070 |  | Setting Out | 5d | 2027-12-23 | 2027-12-30 | A5900 | 10d | 0d |
| A11080 |  | Excavation | 10d | 2027-12-31 | 2028-01-13 | A11070 | 10d | 0d |
| A11090 |  | Cleaning the Layer | 3d | 2028-01-14 | 2028-01-18 | A11080 | 10d | 0d |
| A11140 |  | splicing the Optical cable | 10d | 2028-02-09 | 2028-02-22 | A11110 | 10d | 0d |
| A11120 |  | Bedding sand backfilling | 10d | 2028-02-23 | 2028-03-07 | A11140 | 10d | 0d |
| A11130 |  | Backfilling | 5d | 2028-03-08 | 2028-03-14 | A11120 | 10d | 0d |
|  | 2 | **Cabling** |  | 2028-01-19 | 2028-02-08 |  |  |  |
| A11100 |  | corrugated pipe Placed | 5d | 2028-01-19 | 2028-01-25 | A11090 | 10d | 0d |
| A11110 |  | Fiber Cabling/Blowing | 10d | 2028-01-26 | 2028-02-08 | A11100 | 10d | 0d |
|  | 6 | **Block 20-22** |  | 2028-01-07 | 2028-03-29 |  |  |  |
|  | 1 | **Civil Work** |  | 2028-01-07 | 2028-03-29 |  |  |  |
| A11150 |  | Setting Out | 5d | 2028-01-07 | 2028-01-13 | A5930 | 0d |  |
| A11160 |  | Excavation | 10d | 2028-01-14 | 2028-01-27 | A11150 | 0d |  |
| A11170 |  | Cleaning the Layer | 3d | 2028-01-28 | 2028-02-01 | A11160 | 0d |  |
| A11220 |  | splicing the Optical cable | 10d | 2028-02-23 | 2028-03-07 | A11190 | 0d |  |
| A11200 |  | Bedding sand backfilling | 10d | 2028-03-08 | 2028-03-22 | A11220 | 0d |  |
| A11210 |  | Backfilling | 5d | 2028-03-23 | 2028-03-29 | A11200 | 0d |  |

| ID | WBS | Activity | Duration | Start | Finish | Predecessors | Total float | Free float |
| --- | --- | --- | --- | --- | --- | --- | --- | --- |
|  | 2 | **Cabling** |  | 2028-02-02 | 2028-02-22 |  |  |  |
| A11180 |  | corrugated pipe Placed | 5d | 2028-02-02 | 2028-02-08 | A11170 | 0d |  |
| A11190 |  | Fiber Cabling/Blowing | 10d | 2028-02-09 | 2028-02-22 | A11180 | 0d |  |
|  | 5 | **DC Cable Trench and stringing** |  | 2027-07-02 | 2028-06-14 |  |  |  |
|  | 1 | **Block 1-4** |  | 2027-07-02 | 2027-12-13 |  |  |  |
|  | 1 | **Civil Work** |  | 2027-07-02 | 2027-12-13 |  |  |  |
| A2480 |  | Setting Out | 5d | 2027-07-02 | 2027-07-08 | A3540 | 35d | 0d |
| A2490 |  | Excavation of DC Trench | 20d | 2027-08-10 | 2027-09-06 | A2480, A2360 | 14d | 0d |
| A2500 |  | clear and QAQC inspection | 20d | 2027-08-17 | 2027-09-13 | A2490 SS+5d | 14d | 0d |
| A2570 |  | Back filling | 15d | 2027-11-16 | 2027-12-06 | A2560 FF+5d | 20d | 0d |
| A2580 |  | QAQC Inspection | 10d | 2027-11-30 | 2027-12-13 | A2570 FF+5d | 30d | 15d |
|  | 2 | **Cabling** |  | 2027-09-14 | 2027-11-29 |  |  |  |
| A2510 |  | hanger installation | 15d | 2027-09-14 | 2027-10-05 | A2500, A2380 | 39d | 0d |
| A2530 |  | corrugated pipe installation | 20d | 2027-10-05 | 2027-11-01 | A3580, A2500 | 0d |  |
| A2520 |  | Cable Bracket installation | 15d | 2027-10-06 | 2027-10-26 | A2510 | 39d | 5d |
| A2540 |  | stringing | 25d | 2027-10-12 | 2027-11-15 | A2530 SS+5d | 0d |  |
| A2550 |  | testing | 15d | 2027-11-02 | 2027-11-22 | A2540 FF+5d | 20d | 0d |
| A2560 |  | QAQC inspection | 15d | 2027-11-09 | 2027-11-29 | A2550 FF+5d | 20d | 0d |
|  | 2 | **Block 5-8** |  | 2027-07-09 | 2028-01-19 |  |  |  |
|  | 1 | **Civil Work** |  | 2027-07-09 | 2028-01-19 |  |  |  |
| A7410 |  | Setting Out | 5d | 2027-07-09 | 2027-07-15 | A2480 | 50d | 0d |
| A7420 |  | Excavation of DC Trench | 20d | 2027-09-07 | 2027-10-05 | A7410, A2490, A6560 | 14d | 0d |
| A7430 |  | clear and QAQC inspection | 20d | 2027-09-14 | 2027-10-12 | A7420 SS+5d, A2500 | 14d | 0d |
| A7500 |  | Back filling | 15d | 2027-12-22 | 2028-01-12 | A7490 FF+5d, A2570 | 10d | 0d |
| A7510 |  | QAQC Inspection | 10d | 2028-01-06 | 2028-01-19 | A7500 FF+5d, A2580 | 15d |  |

| ID | WBS | Activity | Duration | Start | Finish | Predecessors | Total float | Free float |
| --- | --- | --- | --- | --- | --- | --- | --- | --- |
|  | 2 | **Cabling** |  | 2027-10-13 | 2028-01-05 |  |  |  |
| A7440 |  | hanger installation | 15d | 2027-10-13 | 2027-11-02 | A7430, A2510 | 34d | 0d |
| A7460 |  | corrugated pipe installation | 20d | 2027-11-02 | 2027-11-29 | A7430, A2530 | 5d | 0d |
| A7450 |  | Cable Bracket installation | 15d | 2027-11-03 | 2027-11-23 | A7440, A2520 | 34d | 5d |
| A7470 |  | stringing | 25d | 2027-11-16 | 2027-12-21 | A7460 SS+5d, A2540 | 0d |  |
| A7480 |  | testing | 15d | 2027-12-07 | 2027-12-29 | A7470 FF+5d, A2550 | 10d | 0d |
| A7490 |  | QAQC inspection | 15d | 2027-12-14 | 2028-01-05 | A7480 FF+5d | 10d | 0d |
|  | 3 | **Block 9-12** |  | 2027-07-16 | 2028-02-23 |  |  |  |
|  | 1 | **Civil Work** |  | 2027-07-16 | 2028-02-23 |  |  |  |
| A7520 |  | Setting Out | 5d | 2027-07-16 | 2027-07-22 | A7410 | 65d | 0d |
| A7530 |  | Excavation of DC Trench | 20d | 2027-10-06 | 2027-11-02 | A7520, A7420, A6740 | 14d | 0d |
| A7540 |  | clear and QAQC inspection | 20d | 2027-10-13 | 2027-11-09 | A7530 SS+5d, A7430 | 14d | 0d |
| A7610 |  | Back filling | 15d | 2028-01-27 | 2028-02-16 | A7600 FF+5d, A7500 | 0d |  |
| A7620 |  | QAQC Inspection | 10d | 2028-02-10 | 2028-02-23 | A7610 FF+5d, A7510 | 0d |  |
|  | 2 | **Cabling** |  | 2027-11-10 | 2028-02-09 |  |  |  |
| A7550 |  | hanger installation | 15d | 2027-11-10 | 2027-11-30 | A7540, A7440 | 29d | 0d |
| A7570 |  | corrugated pipe installation | 20d | 2027-11-30 | 2027-12-29 | A7540, A7460 | 10d | 0d |
| A7560 |  | Cable Bracket installation | 15d | 2027-12-01 | 2027-12-22 | A7550, A7450 | 29d | 5d |
| A7580 |  | stringing | 25d | 2027-12-22 | 2028-01-26 | A7570 SS+5d, A7470 | 0d |  |
| A7590 |  | testing | 15d | 2028-01-13 | 2028-02-02 | A7580 FF+5d, A7480 | 0d |  |
| A7600 |  | QAQC inspection | 15d | 2028-01-20 | 2028-02-09 | A7590 FF+5d | 0d |  |
|  | 4 | **Block 13-16** |  | 2027-07-23 | 2028-03-30 |  |  |  |
|  | 1 | **Civil Work** |  | 2027-07-23 | 2028-03-30 |  |  |  |
| A7630 |  | Setting Out | 5d | 2027-07-23 | 2027-07-29 | A7520 | 80d | 0d |
| A7640 |  | Excavation of DC Trench | 20d | 2027-11-03 | 2027-11-30 | A7630, A7530, A6920 | 14d | 0d |
| A7650 |  | clear and QAQC inspection | 20d | 2027-11-10 | 2027-12-07 | A7640 SS+5d, A7540 | 14d | 0d |
| A7720 |  | Back filling | 15d | 2028-03-02 | 2028-03-23 | A7710 FF+5d, A7610 | 20d | 0d |
| A7730 |  | QAQC Inspection | 10d | 2028-03-16 | 2028-03-30 | A7720 FF+5d, A7620 | 30d | 15d |

| ID | WBS | Activity | Duration | Start | Finish | Predecessors | Total float | Free float |
| --- | --- | --- | --- | --- | --- | --- | --- | --- |
|  | 2 | **Cabling** |  | 2027-12-08 | 2028-03-15 |  |  |  |
| A7660 |  | hanger installation | 15d | 2027-12-08 | 2027-12-30 | A7650, A7550 | 24d | 0d |
| A7680 |  | corrugated pipe installation | 20d | 2027-12-30 | 2028-01-26 | A7650, A7570 | 15d | 0d |
| A7670 |  | Cable Bracket installation | 15d | 2027-12-31 | 2028-01-20 | A7660, A7560 | 24d | 5d |
| A7690 |  | stringing | 25d | 2028-01-27 | 2028-03-01 | A7680 SS+5d, A7580, A3610 | 0d |  |
| A7700 |  | testing | 15d | 2028-02-17 | 2028-03-08 | A7690 FF+5d, A7590 | 5d | 0d |
| A7710 |  | QAQC inspection | 15d | 2028-02-24 | 2028-03-15 | A7700 FF+5d, A7600 | 5d | 0d |
|  | 5 | **Block 17-19** |  | 2027-07-30 | 2028-05-10 |  |  |  |
|  | 1 | **Civil Work** |  | 2027-07-30 | 2028-05-10 |  |  |  |
| A7740 |  | Setting Out | 5d | 2027-07-30 | 2027-08-05 | A7630 | 95d | 0d |
| A7750 |  | Excavation of DC Trench | 20d | 2027-12-01 | 2027-12-30 | A7740, A7640, A7100 | 14d | 0d |
| A7760 |  | clear and QAQC inspection | 20d | 2027-12-08 | 2028-01-06 | A7750 SS+5d, A7650 | 14d | 0d |
| A7830 |  | Back filling | 15d | 2028-04-07 | 2028-05-03 | A7820 FF+5d, A7720 | 10d | 0d |
| A7840 |  | QAQC Inspection | 10d | 2028-04-25 | 2028-05-10 | A7830 FF+5d, A7730 | 15d |  |
|  | 2 | **Cabling** |  | 2028-01-07 | 2028-04-24 |  |  |  |
| A7770 |  | hanger installation | 15d | 2028-01-07 | 2028-01-27 | A7760, A7660 | 19d | 0d |
| A7790 |  | corrugated pipe installation | 20d | 2028-01-27 | 2028-02-23 | A7760, A7680 | 20d | 0d |
| A7780 |  | Cable Bracket installation | 15d | 2028-01-28 | 2028-02-17 | A7770, A7670 | 19d | 5d |
| A7800 |  | stringing | 25d | 2028-03-02 | 2028-04-06 | A7790 SS+5d, A7690 | 0d |  |
| A7810 |  | testing | 15d | 2028-03-24 | 2028-04-13 | A7800 FF+5d, A7700 | 0d |  |
| A7820 |  | QAQC inspection | 15d | 2028-03-31 | 2028-04-24 | A7810 FF+5d | 0d |  |
|  | 6 | **Block 20-22** |  | 2027-08-06 | 2028-06-14 |  |  |  |
|  | 1 | **Civil Work** |  | 2027-08-06 | 2028-06-14 |  |  |  |
| A7850 |  | Setting Out | 5d | 2027-08-06 | 2027-08-13 | A7740 | 110d | 96d |
| A7860 |  | Excavation of DC Trench | 20d | 2027-12-31 | 2028-01-27 | A7850, A7750, A7280 | 14d | 0d |
| A7870 |  | clear and QAQC inspection | 20d | 2028-01-07 | 2028-02-03 | A7860 SS+5d, A7760 | 14d | 0d |
| A7940 |  | Back filling | 15d | 2028-05-18 | 2028-06-07 | A7930 FF+5d, A7830 | 0d |  |
| A7950 |  | QAQC Inspection | 10d | 2028-06-01 | 2028-06-14 | A7940 FF+5d, A7840 | 0d |  |

| ID | WBS | Activity | Duration | Start | Finish | Predecessors | Total float | Free float |
| --- | --- | --- | --- | --- | --- | --- | --- | --- |
|  | 2 | **Cabling** |  | 2028-02-04 | 2028-05-31 |  |  |  |
| A7880 |  | hanger installation | 15d | 2028-02-04 | 2028-02-24 | A7870, A7770 | 14d | 0d |
| A7900 |  | corrugated pipe installation | 20d | 2028-02-24 | 2028-03-23 | A7870, A7790 | 25d |  |
| A7890 |  | Cable Bracket installation | 15d | 2028-02-25 | 2028-03-16 | A7880, A7780 | 14d |  |
| A7910 |  | stringing | 25d | 2028-04-07 | 2028-05-17 | A7900 SS+5d, A7800, A7890 | 0d |  |
| A7920 |  | testing | 15d | 2028-05-04 | 2028-05-24 | A7910 FF+5d, A7810 | 0d |  |
| A7930 |  | QAQC inspection | 15d | 2028-05-11 | 2028-05-31 | A7920 FF+5d | 0d |  |
|  | 2 | **Transformer installation** |  | 2027-03-01 | 2027-11-17 |  |  |  |
|  | 1 | **Block 1-4** |  | 2027-03-01 | 2027-10-22 |  |  |  |
|  | 1 | **Foundation construction** |  | 2027-03-01 | 2027-05-31 |  |  |  |
| A3010 |  | Setting Out | 5d | 2027-03-01 | 2027-03-05 | A2930, A15450 | 1d | 0d |
| A3020 |  | Excavation | 15d | 2027-03-08 | 2027-03-31 | A3010 | 1d | 0d |
| A3030 |  | Base layer construction | 2d | 2027-04-01 | 2027-04-02 | A3020 | 26d | 0d |
| A3040 |  | Foundation Rebar | 5d | 2027-04-05 | 2027-04-09 | A3030 | 26d | 0d |
| A3050 |  | Foundation Shutter installation | 5d | 2027-04-12 | 2027-04-16 | A3040 | 26d | 0d |
| A3060 |  | Pouring Concrete | 3d | 2027-04-19 | 2027-04-21 | A3050 | 26d | 0d |
| A3070 |  | Curing and QAQC Inspection | 7d | 2027-04-22 | 2027-05-03 | A3060 | 26d | 0d |
| A3080 |  | Brick Work | 10d | 2027-05-04 | 2027-05-17 | A3070 | 26d | 0d |
| A3090 |  | Water proofing | 5d | 2027-05-18 | 2027-05-24 | A3080 | 26d | 0d |
| A3100 |  | QAQC Inspection | 5d | 2027-05-25 | 2027-05-31 | A3090 | 26d | 0d |
|  | 2 | **Equipment Installation** |  | 2027-10-19 | 2027-10-22 |  |  |  |
| A3110 |  | Lifting Power Station | 4d | 2027-10-19 | 2027-10-22 | A3100, A3000 | 0d |  |
|  | 2 | **Block 5-8** |  | 2027-03-08 | 2027-10-28 |  |  |  |
|  | 1 | **Foundation construction** |  | 2027-03-08 | 2027-06-22 |  |  |  |
| A4040 |  | Setting Out | 5d | 2027-03-08 | 2027-03-12 | A3010 | 11d | 0d |
| A4050 |  | Excavation | 15d | 2027-04-01 | 2027-04-21 | A4040, A3020 | 1d | 0d |
| A4060 |  | Base layer construction | 2d | 2027-04-22 | 2027-04-23 | A4050 | 21d | 0d |
| A4070 |  | Foundation Rebar | 5d | 2027-04-26 | 2027-05-03 | A4060, A3040 | 21d | 0d |
| A4080 |  | Foundation Shutter installation | 5d | 2027-05-04 | 2027-05-10 | A4070 | 21d | 0d |
| A4090 |  | Pouring Concrete | 3d | 2027-05-11 | 2027-05-13 | A4080, A3060 | 21d | 0d |
| A4100 |  | Curing and QAQC Inspection | 7d | 2027-05-14 | 2027-05-24 | A4090 | 21d | 0d |
| A4110 |  | Brick Work | 10d | 2027-05-25 | 2027-06-07 | A4100, A3080 | 21d | 0d |
| A4120 |  | Water proofing | 5d | 2027-06-08 | 2027-06-14 | A4110 | 21d | 0d |
| A4130 |  | QAQC Inspection | 5d | 2027-06-15 | 2027-06-22 | A4120 | 21d | 0d |

| ID | WBS | Activity | Duration | Start | Finish | Predecessors | Total float | Free float |
| --- | --- | --- | --- | --- | --- | --- | --- | --- |
|  | 2 | **Equipment Installation** |  | 2027-10-25 | 2027-10-28 |  |  |  |
| A4140 |  | Lifting Power Station | 4d | 2027-10-25 | 2027-10-28 | A4130, A3110 | 1d | 0d |
|  | 3 | **Block 9-12** |  | 2027-03-15 | 2027-11-03 |  |  |  |
|  | 1 | **Foundation construction** |  | 2027-03-15 | 2027-07-13 |  |  |  |
| A4150 |  | Setting Out | 5d | 2027-03-15 | 2027-03-19 | A4040 | 21d | 0d |
| A4160 |  | Excavation | 15d | 2027-04-22 | 2027-05-13 | A4150, A4050 | 1d | 0d |
| A4170 |  | Base layer construction | 2d | 2027-05-14 | 2027-05-17 | A4160 | 16d | 0d |
| A4180 |  | Foundation Rebar | 5d | 2027-05-18 | 2027-05-24 | A4170, A4070 | 16d | 0d |
| A4190 |  | Foundation Shutter installation | 5d | 2027-05-25 | 2027-05-31 | A4180 | 16d | 0d |
| A4200 |  | Pouring Concrete | 3d | 2027-06-01 | 2027-06-03 | A4190, A4090 | 16d | 0d |
| A4210 |  | Curing and QAQC Inspection | 7d | 2027-06-04 | 2027-06-14 | A4200 | 16d | 0d |
| A4220 |  | Brick Work | 10d | 2027-06-15 | 2027-06-29 | A4210, A4110 | 16d | 0d |
| A4230 |  | Water proofing | 5d | 2027-06-30 | 2027-07-06 | A4220 | 16d | 0d |
| A4240 |  | QAQC Inspection | 5d | 2027-07-07 | 2027-07-13 | A4230 | 16d | 0d |
|  | 2 | **Equipment Installation** |  | 2027-10-29 | 2027-11-03 |  |  |  |
| A4250 |  | Lifting Power Station | 4d | 2027-10-29 | 2027-11-03 | A4240, A4140 | 2d | 0d |
|  | 4 | **Block 13-16** |  | 2027-03-23 | 2027-11-09 |  |  |  |
|  | 1 | **Foundation construction** |  | 2027-03-23 | 2027-08-03 |  |  |  |
| A4260 |  | Setting Out | 5d | 2027-03-23 | 2027-03-31 | A4150 | 31d | 0d |
| A4270 |  | Excavation | 15d | 2027-05-14 | 2027-06-03 | A4260, A4160 | 1d | 0d |
| A4280 |  | Base layer construction | 2d | 2027-06-04 | 2027-06-07 | A4270 | 11d | 0d |
| A4290 |  | Foundation Rebar | 5d | 2027-06-08 | 2027-06-14 | A4280, A4180 | 11d | 0d |
| A4300 |  | Foundation Shutter installation | 5d | 2027-06-15 | 2027-06-22 | A4290 | 11d | 0d |
| A4310 |  | Pouring Concrete | 3d | 2027-06-23 | 2027-06-25 | A4300, A4200 | 11d | 0d |
| A4320 |  | Curing and QAQC Inspection | 7d | 2027-06-28 | 2027-07-06 | A4310 | 11d | 0d |
| A4330 |  | Brick Work | 10d | 2027-07-07 | 2027-07-20 | A4320, A4220 | 11d | 0d |
| A4340 |  | Water proofing | 5d | 2027-07-21 | 2027-07-27 | A4330 | 11d | 0d |
| A4350 |  | QAQC Inspection | 5d | 2027-07-28 | 2027-08-03 | A4340 | 11d | 0d |

| ID | WBS | Activity | Duration | Start | Finish | Predecessors | Total float | Free float |
| --- | --- | --- | --- | --- | --- | --- | --- | --- |
|  | 2 | **Equipment Installation** |  | 2027-11-04 | 2027-11-09 |  |  |  |
| A4360 |  | Lifting Power Station | 4d | 2027-11-04 | 2027-11-09 | A4350, A4250 | 14d | 0d |
|  | 5 | **Block 17-19** |  | 2027-04-01 | 2027-11-12 |  |  |  |
|  | 1 | **Foundation construction** |  | 2027-04-01 | 2027-08-25 |  |  |  |
| A4370 |  | Setting Out | 5d | 2027-04-01 | 2027-04-07 | A4260 | 41d | 0d |
| A4380 |  | Excavation | 15d | 2027-06-04 | 2027-06-25 | A4370, A4270 | 1d | 0d |
| A4390 |  | Base layer construction | 2d | 2027-06-28 | 2027-06-29 | A4380 | 6d | 0d |
| A4400 |  | Foundation Rebar | 5d | 2027-06-30 | 2027-07-06 | A4390, A4290 | 6d | 0d |
| A4410 |  | Foundation Shutter installation | 5d | 2027-07-07 | 2027-07-13 | A4400 | 6d | 0d |
| A4420 |  | Pouring Concrete | 3d | 2027-07-14 | 2027-07-16 | A4410, A4310 | 6d | 0d |
| A4430 |  | Curing and QAQC Inspection | 7d | 2027-07-19 | 2027-07-27 | A4420 | 6d | 0d |
| A4440 |  | Brick Work | 10d | 2027-07-28 | 2027-08-11 | A4430, A4330 | 6d | 0d |
| A4450 |  | Water proofing | 5d | 2027-08-12 | 2027-08-18 | A4440 | 6d | 0d |
| A4460 |  | QAQC Inspection | 5d | 2027-08-19 | 2027-08-25 | A4450 | 6d | 0d |
|  | 2 | **Equipment Installation** |  | 2027-11-10 | 2027-11-12 |  |  |  |
| A4470 |  | Lifting Power Station | 3d | 2027-11-10 | 2027-11-12 | A4460, A4360 | 17d | 0d |
|  | 6 | **Block 20-22** |  | 2027-04-08 | 2027-11-17 |  |  |  |
|  | 1 | **Foundation construction** |  | 2027-04-08 | 2027-09-15 |  |  |  |
| A4480 |  | Setting Out | 5d | 2027-04-08 | 2027-04-14 | A4370 | 51d | 50d |
| A4490 |  | Excavation | 15d | 2027-06-28 | 2027-07-16 | A4480, A4380 | 1d | 0d |
| A4500 |  | Base layer construction | 2d | 2027-07-19 | 2027-07-20 | A4490 | 1d | 0d |
| A4510 |  | Foundation Rebar | 5d | 2027-07-21 | 2027-07-27 | A4500, A4400 | 1d | 0d |
| A4520 |  | Foundation Shutter installation | 5d | 2027-07-28 | 2027-08-03 | A4510 | 1d | 0d |
| A4530 |  | Pouring Concrete | 3d | 2027-08-04 | 2027-08-06 | A4520, A4420 | 1d | 0d |
| A4540 |  | Curing and QAQC Inspection | 7d | 2027-08-10 | 2027-08-18 | A4530 | 1d | 0d |
| A4550 |  | Brick Work | 10d | 2027-08-19 | 2027-09-01 | A4540, A4440 | 1d | 0d |
| A4560 |  | Water proofing | 5d | 2027-09-02 | 2027-09-08 | A4550 | 1d | 0d |
| A4570 |  | QAQC Inspection | 5d | 2027-09-09 | 2027-09-15 | A4560 | 1d | 0d |

| ID | WBS | Activity | Duration | Start | Finish | Predecessors | Total float | Free float |
| --- | --- | --- | --- | --- | --- | --- | --- | --- |
|  | 2 | **Equipment Installation** |  | 2027-11-15 | 2027-11-17 |  |  |  |
| A4580 |  | Lifting Power Station | 3d | 2027-11-15 | 2027-11-17 | A4570, A4470 | 20d |  |
|  | 3 | **Inverter installation** |  | 2027-08-26 | 2028-01-19 |  |  |  |
|  | 1 | **Block 1-4** |  | 2027-08-26 | 2027-11-08 |  |  |  |
|  | 1 | **Inverter Post** |  | 2027-08-26 | 2027-10-28 |  |  |  |
| A2620 |  | Setting Out | 5d | 2027-08-26 | 2027-09-01 | A2400 | 0d |  |
| A2630 |  | Drilling | 10d | 2027-09-02 | 2027-09-15 | A2620 | 0d |  |
| A2640 |  | Substructure assembly | 10d | 2027-09-16 | 2027-09-30 | A2630, A2800 | 0d |  |
| A2650 |  | Installation of Substructure | 10d | 2027-09-23 | 2027-10-07 | A2640 FF+5d | 0d |  |
| A2660 |  | QAQC Inspection | 5d | 2027-10-08 | 2027-10-14 | A2650 | 10d | 0d |
| A2670 |  | Pouring Concrete | 3d | 2027-10-15 | 2027-10-19 | A2660 | 10d | 0d |
| A2680 |  | Curing | 5d | 2027-10-20 | 2027-10-26 | A2670 | 10d | 0d |
| A2690 |  | QAQC Inspection | 5d | 2027-10-22 | 2027-10-28 | A2680 FF+2d | 10d | 0d |
|  | 2 | **Inverter installation** |  | 2027-10-29 | 2027-11-08 |  |  |  |
| A2700 |  | Installation of Inverter | 5d | 2027-10-29 | 2027-11-04 | A2690 | 10d | 0d |
| A2710 |  | QAQC Inspection | 5d | 2027-11-02 | 2027-11-08 | A2700 FF+2d | 65d | 43d |
|  | 2 | **Block 5-8** |  | 2027-09-02 | 2027-11-22 |  |  |  |
|  | 1 | **Inverter Post** |  | 2027-09-02 | 2027-11-11 |  |  |  |
| A5140 |  | Setting Out | 5d | 2027-09-02 | 2027-09-08 | A2620 | 5d | 0d |
| A5150 |  | Drilling | 10d | 2027-09-16 | 2027-09-30 | A5140, A2630 | 0d |  |
| A5160 |  | Substructure assembly | 10d | 2027-10-01 | 2027-10-14 | A5150, A2640 | 0d |  |
| A5170 |  | Installation of Substructure | 10d | 2027-10-08 | 2027-10-21 | A5160 FF+5d, A2650 | 0d |  |
| A5180 |  | QAQC Inspection | 5d | 2027-10-22 | 2027-10-28 | A5170 | 5d | 0d |
| A5190 |  | Pouring Concrete | 3d | 2027-10-29 | 2027-11-02 | A5180, A2670 | 5d | 0d |
| A5200 |  | Curing | 5d | 2027-11-03 | 2027-11-09 | A5190 | 5d | 0d |
| A5210 |  | QAQC Inspection | 5d | 2027-11-05 | 2027-11-11 | A5200 FF+2d | 5d | 0d |

| ID | WBS | Activity | Duration | Start | Finish | Predecessors | Total float | Free float |
| --- | --- | --- | --- | --- | --- | --- | --- | --- |
|  | 2 | **Inverter installation** |  | 2027-11-12 | 2027-11-22 |  |  |  |
| A5220 |  | Installation of Inverter | 5d | 2027-11-12 | 2027-11-18 | A5210, A2700 | 5d | 0d |
| A5230 |  | QAQC Inspection | 5d | 2027-11-16 | 2027-11-22 | A5220 FF+2d | 60d | 45d |
|  | 3 | **Block 9-12** |  | 2027-09-09 | 2027-12-06 |  |  |  |
|  | 1 | **Inverter Post** |  | 2027-09-09 | 2027-11-25 |  |  |  |
| A5240 |  | Setting Out | 5d | 2027-09-09 | 2027-09-15 | A5140 | 10d | 0d |
| A5250 |  | Drilling | 10d | 2027-10-01 | 2027-10-14 | A5240, A5150 | 0d |  |
| A5260 |  | Substructure assembly | 10d | 2027-10-15 | 2027-10-28 | A5250, A5160 | 0d |  |
| A5270 |  | Installation of Substructure | 10d | 2027-10-22 | 2027-11-04 | A5260 FF+5d, A5170 | 0d |  |
| A5280 |  | QAQC Inspection | 5d | 2027-11-05 | 2027-11-11 | A5270 | 0d |  |
| A5290 |  | Pouring Concrete | 3d | 2027-11-12 | 2027-11-16 | A5280, A5190 | 0d |  |
| A5300 |  | Curing | 5d | 2027-11-17 | 2027-11-23 | A5290 | 0d |  |
| A5310 |  | QAQC Inspection | 5d | 2027-11-19 | 2027-11-25 | A5300 FF+2d | 0d |  |
|  | 2 | **Inverter installation** |  | 2027-11-26 | 2027-12-06 |  |  |  |
| A5320 |  | Installation of Inverter | 5d | 2027-11-26 | 2027-12-02 | A5310, A5220 | 0d |  |
| A5330 |  | QAQC Inspection | 5d | 2027-11-30 | 2027-12-06 | A5320 FF+2d | 0d |  |
|  | 4 | **Block 13-16** |  | 2027-09-16 | 2027-12-21 |  |  |  |
|  | 1 | **Inverter Post** |  | 2027-09-16 | 2027-12-09 |  |  |  |
| A5340 |  | Setting Out | 5d | 2027-09-16 | 2027-09-22 | A5240 | 15d | 0d |
| A5350 |  | Drilling | 10d | 2027-10-15 | 2027-10-28 | A5340, A5250 | 0d |  |
| A5360 |  | Substructure assembly | 10d | 2027-10-29 | 2027-11-11 | A5350, A2860, A5260 | 0d |  |
| A5370 |  | Installation of Substructure | 10d | 2027-11-05 | 2027-11-18 | A5360 FF+5d, A5270 | 0d |  |
| A5380 |  | QAQC Inspection | 5d | 2027-11-19 | 2027-11-25 | A5370 | 10d | 0d |
| A5390 |  | Pouring Concrete | 3d | 2027-11-26 | 2027-11-30 | A5380, A5290 | 10d | 0d |
| A5400 |  | Curing | 5d | 2027-12-01 | 2027-12-07 | A5390 | 10d | 0d |
| A5410 |  | QAQC Inspection | 5d | 2027-12-03 | 2027-12-09 | A5400 FF+2d | 10d | 0d |

| ID | WBS | Activity | Duration | Start | Finish | Predecessors | Total float | Free float |
| --- | --- | --- | --- | --- | --- | --- | --- | --- |
|  | 2 | **Inverter installation** |  | 2027-12-10 | 2027-12-21 |  |  |  |
| A5420 |  | Installation of Inverter | 5d | 2027-12-10 | 2027-12-17 | A5410, A5320 | 10d | 0d |
| A5430 |  | QAQC Inspection | 5d | 2027-12-14 | 2027-12-21 | A5420 FF+2d | 80d | 58d |
|  | 5 | **Block 17-19** |  | 2027-09-23 | 2028-01-05 |  |  |  |
|  | 1 | **Inverter Post** |  | 2027-09-23 | 2027-12-24 |  |  |  |
| A5440 |  | Setting Out | 5d | 2027-09-23 | 2027-09-30 | A5340 | 20d | 0d |
| A5450 |  | Drilling | 10d | 2027-10-29 | 2027-11-11 | A5440, A5350 | 0d |  |
| A5460 |  | Substructure assembly | 10d | 2027-11-12 | 2027-11-25 | A5450, A5360 | 0d |  |
| A5470 |  | Installation of Substructure | 10d | 2027-11-19 | 2027-12-02 | A5460 FF+5d, A5370 | 0d |  |
| A5480 |  | QAQC Inspection | 5d | 2027-12-03 | 2027-12-09 | A5470 | 5d | 0d |
| A5490 |  | Pouring Concrete | 3d | 2027-12-10 | 2027-12-14 | A5480, A5390 | 5d | 0d |
| A5500 |  | Curing | 5d | 2027-12-15 | 2027-12-22 | A5490 | 5d | 0d |
| A5510 |  | QAQC Inspection | 5d | 2027-12-20 | 2027-12-24 | A5500 FF+2d | 5d | 0d |
|  | 2 | **Inverter installation** |  | 2027-12-28 | 2028-01-05 |  |  |  |
| A5520 |  | Installation of Inverter | 5d | 2027-12-28 | 2028-01-03 | A5510, A5420 | 5d | 0d |
| A5530 |  | QAQC Inspection | 5d | 2027-12-30 | 2028-01-05 | A5520 FF+2d | 90d | 63d |
|  | 6 | **Block 20-22** |  | 2027-10-01 | 2028-01-19 |  |  |  |
|  | 1 | **Inverter Post** |  | 2027-10-01 | 2028-01-10 |  |  |  |
| A5540 |  | Setting Out | 5d | 2027-10-01 | 2027-10-07 | A5440 | 25d |  |
| A5550 |  | Drilling | 10d | 2027-11-12 | 2027-11-25 | A5540, A5450 | 0d |  |
| A5560 |  | Substructure assembly | 10d | 2027-11-26 | 2027-12-09 | A5550, A5460 | 0d |  |
| A5570 |  | Installation of Substructure | 10d | 2027-12-03 | 2027-12-17 | A5560 FF+5d, A5470 | 0d |  |
| A5580 |  | QAQC Inspection | 5d | 2027-12-20 | 2027-12-24 | A5570 | 0d |  |
| A5590 |  | Pouring Concrete | 3d | 2027-12-28 | 2027-12-30 | A5580, A5490 | 0d |  |
| A5600 |  | Curing | 5d | 2027-12-31 | 2028-01-06 | A5590 | 0d |  |
| A5610 |  | QAQC Inspection | 5d | 2028-01-04 | 2028-01-10 | A5600 FF+2d | 0d |  |

| ID | WBS | Activity | Duration | Start | Finish | Predecessors | Total float | Free float |
| --- | --- | --- | --- | --- | --- | --- | --- | --- |
|  | 2 | **Inverter installation** |  | 2028-01-11 | 2028-01-19 |  |  |  |
| A5620 |  | Installation of Inverter | 5d | 2028-01-11 | 2028-01-17 | A5610, A5520 | 0d |  |
| A5630 |  | QAQC Inspection | 5d | 2028-01-13 | 2028-01-19 | A5620 FF+2d | 0d |  |
|  | 4 | **Mechnical Installation of PV Field** |  | 2027-05-26 | 2028-07-13 |  |  |  |
|  | 1 | **Block 1-4** |  | 2027-05-26 | 2028-01-31 |  |  |  |
|  | 1 | **Pile installation** |  | 2027-05-26 | 2027-07-27 |  |  |  |
| A2310 |  | Hole Drilling & Verify | 19d | 2027-05-26 | 2027-06-23 | A1250 FF-2d | 19d | 0d |
| A2320 |  | Pile installation & QC Inspection | 19d | 2027-06-25 | 2027-07-21 | A2310 FF+2d, A1250 | 0d |  |
| A2330 |  | Pour concrete | 19d | 2027-06-29 | 2027-07-23 | A2320 SS+2d | 0d |  |
| A2340 |  | Curing & QAQC Inspection | 19d | 2027-07-01 | 2027-07-27 | A2330 SS+2d | 0d |  |
|  | 2 | **Structure installation** |  | 2027-07-16 | 2027-08-13 |  |  |  |
| A2350 |  | Substructure Assembly | 14d | 2027-07-16 | 2027-08-04 | A1660 | 0d |  |
| A2360 |  | Substructure installation | 14d | 2027-07-20 | 2027-08-06 | A2350 SS+2d, A2340 FF+2d | 0d |  |
| A2370 |  | Tighning | 14d | 2027-07-22 | 2027-08-11 | A2360 SS+2d | 0d |  |
| A2380 |  | QC Inspection | 14d | 2027-07-26 | 2027-08-13 | A2370 SS+2d | 0d |  |
|  | 3 | **PV Module installation** |  | 2027-07-28 | 2027-09-02 |  |  |  |
| A2390 |  | Perlin installation | 18d | 2027-07-28 | 2027-08-23 | A2380 SS+2d | 0d |  |
| A2400 |  | PV Module installation | 18d | 2027-07-30 | 2027-08-25 | A2390 SS+2d, A1990 | 0d |  |
| A2410 |  | Tighning | 18d | 2027-08-03 | 2027-08-27 | A2400 SS+2d | 0d |  |
| A2420 |  | QAQC Inspection | 18d | 2027-08-05 | 2027-08-31 | A2410 SS+2d | 0d |  |
| A2470 |  | Finals installation | 18d | 2027-08-10 | 2027-09-02 | A2420 FF+2d | 74d | 2d |
|  | 4 | **Electrical part** |  | 2027-09-01 | 2028-01-31 |  |  |  |
|  | 1 | **Termination of the DC Cable** |  | 2027-09-01 | 2028-01-19 |  |  |  |
| A2590 |  | MC 4 Connection | 15d | 2027-09-01 | 2027-09-21 | A2420 | 76d | 5d |
| A2600 |  | Termination to PV Panel | 15d | 2027-11-30 | 2027-12-21 | A2420, A2560 | 20d | 0d |
| A2610 |  | Termination to Inverter | 20d | 2027-12-22 | 2028-01-19 | A2600, A2710 FF+5d | 20d | 5d |

| ID | WBS | Activity | Duration | Start | Finish | Predecessors | Total float | Free float |
| --- | --- | --- | --- | --- | --- | --- | --- | --- |
|  | 2 | **Termination of the LV Cable** |  | 2028-01-11 | 2028-01-31 |  |  |  |
| A5940 |  | Termination into Inverter | 15d | 2028-01-11 | 2028-01-31 | A2710, A3720 | 37d | 0d |
| A5950 |  | Termination into Station | 15d | 2028-01-11 | 2028-01-31 | A3110, A3720 | 37d | 0d |
|  | 5 | **NCU&TCU Construction** |  | 2027-08-10 | 2027-12-02 |  |  |  |
|  | 1 | **NCU installation** |  | 2027-08-10 | 2027-12-01 |  |  |  |
| A17540 |  | NCU Foundation construction | 10d | 2027-08-10 | 2027-08-23 | A16840, A2360 | 81d | 10d |
| A17550 |  | Installation of NCU site cabinets (each block) | 10d | 2027-10-05 | 2027-10-18 | A17540, A17240 | 102d | 0d |
| A17560 |  | Installation of NCU equipment and power connection | 10d | 2027-10-19 | 2027-11-01 | A17550 | 104d | 0d |
| A17570 |  | NCU Communication Fiber Cable Installation (From SCADA Cabinet to Each NCU) | 15d | 2027-10-19 | 2027-11-08 | A17550 | 102d | 0d |
| A17590 |  | NCU and Inverter Communication Cable Termination | 15d | 2027-11-02 | 2027-11-22 | A17560 | 104d | 2d |
| A17600 |  | NCU and Box Transformer Communication Cable Termination | 10d | 2027-11-02 | 2027-11-15 | A17560 | 109d | 7d |
| A17580 |  | NCU Fiber Splicing and OTDR Testing | 7d | 2027-11-09 | 2027-11-17 | A17570 | 102d | 0d |
| A17610 |  | NCU and PVSCADA Communication Connection | 5d | 2027-11-18 | 2027-11-24 | A17580 | 102d | 0d |
| A17620 |  | NCU Construction QAQC Inspection and Acceptance | 5d | 2027-11-25 | 2027-12-01 | A17610, A17600, A17590 | 102d | 71d |
|  | 2 | **TCU installation** |  | 2027-10-08 | 2027-12-02 |  |  |  |
| A17630 |  | Installation of TCU protective box/installation bracket | 10d | 2027-10-08 | 2027-10-21 | A17330, A2420 | 61d | 0d |
| A17640 |  | Installation of TCU equipment and power connection | 10d | 2027-10-22 | 2027-11-04 | A17630 | 111d | 0d |
| A17650 |  | Installation of TCU equipment and power connection | 15d | 2027-11-05 | 2027-11-25 | A17640 | 111d | 0d |
| A17660 |  | Connection of TCU to transformer control circuit | 10d | 2027-11-05 | 2027-11-18 | A17640 | 116d | 5d |
| A17670 |  | Communication connection of TCU with NCU/PVSCADA | 7d | 2027-11-05 | 2027-11-15 | A17640 | 119d | 8d |
| A17680 |  | QAQC inspection and acceptance of TCU installation | 5d | 2027-11-26 | 2027-12-02 | A17650, A17660, A17670 | 111d | 94d |
|  | 2 | **Block 5-8** |  | 2027-06-23 | 2028-02-23 |  |  |  |
|  | 1 | **Pile installation** |  | 2027-06-23 | 2027-08-24 |  |  |  |
| A6510 |  | Hole Drilling & Verify | 19d | 2027-06-23 | 2027-07-19 | A2310 | 19d | 0d |
| A6520 |  | Pile installation & QC Inspection | 19d | 2027-07-22 | 2027-08-18 | A6510 FF+2d, A2320, A1300 | 0d |  |
| A6530 |  | Pour concrete | 19d | 2027-07-26 | 2027-08-20 | A6520 SS+2d, A2330 | 0d |  |
| A6540 |  | Curing & QAQC Inspection | 19d | 2027-07-28 | 2027-08-24 | A6530 SS+2d, A2340 | 0d |  |

| ID | WBS | Activity | Duration | Start | Finish | Predecessors | Total float | Free float |
| --- | --- | --- | --- | --- | --- | --- | --- | --- |
|  | 2 | **Structure installation** |  | 2027-08-16 | 2027-09-10 |  |  |  |
| A6550 |  | Substructure Assembly | 14d | 2027-08-16 | 2027-09-02 | A2350, A1710 | 0d |  |
| A6560 |  | Substructure installation | 14d | 2027-08-18 | 2027-09-06 | A6550 SS+2d, A6540 FF+2d, A2360 | 0d |  |
| A6570 |  | Tighning | 14d | 2027-08-20 | 2027-09-08 | A6560 SS+2d, A2370 | 0d |  |
| A6580 |  | QC Inspection | 14d | 2027-08-24 | 2027-09-10 | A6570 SS+2d, A2380 | 0d |  |
|  | 3 | **PV Module installation** |  | 2027-08-26 | 2027-10-01 |  |  |  |
| A6590 |  | Perlin installation | 18d | 2027-08-26 | 2027-09-20 | A6580 SS+2d, A2390 | 0d |  |
| A6600 |  | PV Module installation | 18d | 2027-08-30 | 2027-09-22 | A6590 SS+2d, A2400, A2040 | 0d |  |
| A6610 |  | Tighning | 18d | 2027-09-01 | 2027-09-27 | A6600 SS+2d, A2410 | 0d |  |
| A6620 |  | QAQC Inspection | 18d | 2027-09-03 | 2027-09-29 | A6610 SS+2d, A2420 | 0d |  |
| A6630 |  | Finals installation | 18d | 2027-09-07 | 2027-10-01 | A6620 FF+2d, A2470 | 72d | 7d |
|  | 4 | **Electrical part** |  | 2027-09-30 | 2028-02-23 |  |  |  |
|  | 1 | **Termination of the DC Cable** |  | 2027-09-30 | 2028-02-23 |  |  |  |
| A6640 |  | MC 4 Connection | 15d | 2027-09-30 | 2027-10-20 | A6620, A2590 | 71d | 10d |
| A6650 |  | Termination to PV Panel | 15d | 2028-01-06 | 2028-01-26 | A6620, A2600, A7490 | 15d | 0d |
| A6660 |  | Termination to Inverter | 20d | 2028-01-27 | 2028-02-23 | A6650, A2610, A5230, A7490 | 15d | 0d |
|  | 2 | **Termination of the LV Cable** |  | 2028-02-01 | 2028-02-21 |  |  |  |
| A6670 |  | Termination into Inverter | 15d | 2028-02-01 | 2028-02-21 | A5940, A2710, A6170 | 37d | 0d |
| A6680 |  | Termination into Station | 15d | 2028-02-01 | 2028-02-21 | A5950, A6170, A4140 | 37d | 0d |
|  | 5 | **NCU&TCU Construction** |  | 2027-09-07 | 2027-12-17 |  |  |  |
|  | 1 | **NCU installation** |  | 2027-09-07 | 2027-11-18 |  |  |  |
| A17690 |  | NCU Foundation construction | 10d | 2027-09-07 | 2027-09-20 | A17540, A6560 | 71d | 0d |
| A17700 |  | Installation of NCU site cabinets (each block) | 10d | 2027-09-21 | 2027-10-05 | A17690 | 111d | 0d |
| A17710 |  | Installation of NCU equipment and power connection | 10d | 2027-10-06 | 2027-10-19 | A17700 | 113d | 0d |
| A17720 |  | NCU Communication Fiber Cable Installation (From SCADA Cabinet to Each NCU) | 15d | 2027-10-06 | 2027-10-26 | A17700 | 111d | 0d |
| A17740 |  | NCU and Inverter Communication Cable Termination | 15d | 2027-10-20 | 2027-11-09 | A17710 | 113d | 2d |
| A17750 |  | NCU and Box Transformer Communication Cable Termination | 10d | 2027-10-20 | 2027-11-02 | A17710 | 118d | 7d |
| A17730 |  | NCU Fiber Splicing and OTDR Testing | 7d | 2027-10-27 | 2027-11-04 | A17720 | 111d | 0d |
| A17760 |  | NCU and PVSCADA Communication Connection | 5d | 2027-11-05 | 2027-11-11 | A17730 | 111d | 0d |
| A17770 |  | NCU Construction QAQC Inspection and Acceptance | 5d | 2027-11-12 | 2027-11-18 | A17760, A17750, A17740 | 111d | 80d |

| ID | WBS | Activity | Duration | Start | Finish | Predecessors | Total float | Free float |
| --- | --- | --- | --- | --- | --- | --- | --- | --- |
|  | 2 | **TCU installation** |  | 2027-10-22 | 2027-12-17 |  |  |  |
| A17780 |  | Installation of TCU protective box/installation bracket | 10d | 2027-10-22 | 2027-11-04 | A17630, A6620 | 61d | 0d |
| A17790 |  | Installation of TCU equipment and power connection | 10d | 2027-11-05 | 2027-11-18 | A17780 | 101d | 0d |
| A17800 |  | Installation of TCU equipment and power connection | 15d | 2027-11-19 | 2027-12-09 | A17790 | 101d | 0d |
| A17810 |  | Connection of TCU to transformer control circuit | 10d | 2027-11-19 | 2027-12-02 | A17790 | 106d | 5d |
| A17820 |  | Communication connection of TCU with NCU/PVSCADA | 7d | 2027-11-19 | 2027-11-29 | A17790 | 109d | 8d |
| A17830 |  | QAQC inspection and acceptance of TCU installation | 5d | 2027-12-10 | 2027-12-17 | A17800, A17810, A17820 | 101d | 84d |
|  | 3 | **Block 9-12** |  | 2027-07-20 | 2028-03-30 |  |  |  |
|  | 1 | **Pile installation** |  | 2027-07-20 | 2027-09-20 |  |  |  |
| A6690 |  | Hole Drilling & Verify | 19d | 2027-07-20 | 2027-08-16 | A6510 | 19d | 0d |
| A6700 |  | Pile installation & QC Inspection | 19d | 2027-08-19 | 2027-09-14 | A6690 FF+2d, A6520, A1350 | 0d |  |
| A6710 |  | Pour concrete | 19d | 2027-08-23 | 2027-09-16 | A6700 SS+2d, A6530 | 0d |  |
| A6720 |  | Curing & QAQC Inspection | 19d | 2027-08-25 | 2027-09-20 | A6710 SS+2d, A6540 | 0d |  |
|  | 2 | **Structure installation** |  | 2027-09-13 | 2027-10-11 |  |  |  |
| A6730 |  | Substructure Assembly | 14d | 2027-09-13 | 2027-10-01 | A6550, A1760 | 0d |  |
| A6740 |  | Substructure installation | 14d | 2027-09-15 | 2027-10-05 | A6730 SS+2d, A6720 FF+2d, A6560 | 0d |  |
| A6750 |  | Tighning | 14d | 2027-09-17 | 2027-10-07 | A6740 SS+2d, A6570 | 0d |  |
| A6760 |  | QC Inspection | 14d | 2027-09-21 | 2027-10-11 | A6750 SS+2d, A6580 | 0d |  |
|  | 3 | **PV Module installation** |  | 2027-09-23 | 2027-11-05 |  |  |  |
| A6770 |  | Perlin installation | 18d | 2027-09-23 | 2027-10-19 | A6760 SS+2d, A6590 | 5d | 2d |
| A6780 |  | PV Module installation | 18d | 2027-10-05 | 2027-10-28 | A6770 SS+2d, A6600, A2090 | 0d |  |
| A6790 |  | Tighning | 18d | 2027-10-07 | 2027-11-01 | A6780 SS+2d, A6610 | 0d |  |
| A6800 |  | QAQC Inspection | 18d | 2027-10-11 | 2027-11-03 | A6790 SS+2d, A6620 | 0d |  |
| A6810 |  | Finals installation | 18d | 2027-10-13 | 2027-11-05 | A6800 FF+2d, A6630 | 65d | 7d |

| ID | WBS | Activity | Duration | Start | Finish | Predecessors | Total float | Free float |
| --- | --- | --- | --- | --- | --- | --- | --- | --- |
|  | 4 | **Electrical part** |  | 2027-11-04 | 2028-03-30 |  |  |  |
|  | 1 | **Termination of the DC Cable** |  | 2027-11-04 | 2028-03-30 |  |  |  |
| A6820 |  | MC 4 Connection | 15d | 2027-11-04 | 2027-11-24 | A6800, A6640 | 61d | 10d |
| A6830 |  | Termination to PV Panel | 15d | 2028-02-10 | 2028-03-01 | A6800, A6650, A7600 | 10d | 0d |
| A6840 |  | Termination to Inverter | 20d | 2028-03-02 | 2028-03-30 | A6830, A6660, A5330, A7600 | 10d | 0d |
|  | 2 | **Termination of the LV Cable** |  | 2028-02-22 | 2028-03-13 |  |  |  |
| A6850 |  | Termination into Inverter | 15d | 2028-02-22 | 2028-03-13 | A6670, A5330, A6060 | 37d | 0d |
| A6860 |  | Termination into Station | 15d | 2028-02-22 | 2028-03-13 | A6680, A6060, A4250 | 37d | 0d |
|  | 5 | **NCU&TCU Construction** |  | 2027-10-06 | 2028-01-03 |  |  |  |
|  | 1 | **NCU installation** |  | 2027-10-06 | 2027-12-17 |  |  |  |
| A17840 |  | NCU Foundation construction | 10d | 2027-10-06 | 2027-10-19 | A6740, A17690 | 61d | 0d |
| A17850 |  | Installation of NCU site cabinets (each block) | 10d | 2027-10-20 | 2027-11-02 | A17840 | 91d | 0d |
| A17860 |  | Installation of NCU equipment and power connection | 10d | 2027-11-03 | 2027-11-16 | A17850 | 93d | 0d |
| A17870 |  | NCU Communication Fiber Cable Installation (From SCADA Cabinet to Each NCU) | 15d | 2027-11-03 | 2027-11-23 | A17850 | 91d | 0d |
| A17890 |  | NCU and Inverter Communication Cable Termination | 15d | 2027-11-17 | 2027-12-07 | A17860 | 93d | 2d |
| A17900 |  | NCU and Box Transformer Communication Cable Termination | 10d | 2027-11-17 | 2027-11-30 | A17860 | 98d | 7d |
| A17880 |  | NCU Fiber Splicing and OTDR Testing | 7d | 2027-11-24 | 2027-12-02 | A17870 | 91d | 0d |
| A17910 |  | NCU and PVSCADA Communication Connection | 5d | 2027-12-03 | 2027-12-09 | A17880 | 91d | 0d |
| A17920 |  | NCU Construction QAQC Inspection and Acceptance | 5d | 2027-12-10 | 2027-12-17 | A17910, A17900, A17890 | 91d | 60d |
|  | 2 | **TCU installation** |  | 2027-11-05 | 2028-01-03 |  |  |  |
| A17930 |  | Installation of TCU protective box/installation bracket | 10d | 2027-11-05 | 2027-11-18 | A6800, A17780 | 61d | 0d |
| A17940 |  | Installation of TCU equipment and power connection | 10d | 2027-11-19 | 2027-12-02 | A17930 | 91d | 0d |
| A17950 |  | Installation of TCU equipment and power connection | 15d | 2027-12-03 | 2027-12-24 | A17940 | 91d | 0d |
| A17960 |  | Connection of TCU to transformer control circuit | 10d | 2027-12-03 | 2027-12-17 | A17940 | 96d | 5d |
| A17970 |  | Communication connection of TCU with NCU/PVSCADA | 7d | 2027-12-03 | 2027-12-13 | A17940 | 99d | 8d |
| A17980 |  | QAQC inspection and acceptance of TCU installation | 5d | 2027-12-28 | 2028-01-03 | A17950, A17960, A17970 | 91d | 74d |

| ID | WBS | Activity | Duration | Start | Finish | Predecessors | Total float | Free float |
| --- | --- | --- | --- | --- | --- | --- | --- | --- |
|  | 4 | **Block 13-16** |  | 2027-08-17 | 2028-05-10 |  |  |  |
|  | 1 | **Pile installation** |  | 2027-08-17 | 2027-10-18 |  |  |  |
| A6870 |  | Hole Drilling & Verify | 19d | 2027-08-17 | 2027-09-10 | A6690 | 19d | 0d |
| A6880 |  | Pile installation & QC Inspection | 19d | 2027-09-15 | 2027-10-12 | A6870 FF+2d, A6700, A1400 | 0d |  |
| A6890 |  | Pour concrete | 19d | 2027-09-17 | 2027-10-14 | A6880 SS+2d, A6710 | 0d |  |
| A6900 |  | Curing & QAQC Inspection | 19d | 2027-09-21 | 2027-10-18 | A6890 SS+2d, A6720 | 0d |  |
|  | 2 | **Structure installation** |  | 2027-10-12 | 2027-11-08 |  |  |  |
| A6910 |  | Substructure Assembly | 14d | 2027-10-12 | 2027-10-29 | A6730, A1810 | 0d |  |
| A6920 |  | Substructure installation | 14d | 2027-10-14 | 2027-11-02 | A6910 SS+2d, A6900 FF+2d, A6740 | 0d |  |
| A6930 |  | Tighning | 14d | 2027-10-18 | 2027-11-04 | A6920 SS+2d, A6750 | 0d |  |
| A6940 |  | QC Inspection | 14d | 2027-10-20 | 2027-11-08 | A6930 SS+2d, A6760 | 0d |  |
|  | 3 | **PV Module installation** |  | 2027-10-22 | 2027-12-10 |  |  |  |
| A6950 |  | Perlin installation | 18d | 2027-10-22 | 2027-11-16 | A6940 SS+2d, A6770 | 10d | 2d |
| A6960 |  | PV Module installation | 18d | 2027-11-09 | 2027-12-02 | A6950 SS+2d, A6780, A2140 | 0d |  |
| A6970 |  | Tighning | 18d | 2027-11-11 | 2027-12-06 | A6960 SS+2d, A6790 | 0d |  |
| A6980 |  | QAQC Inspection | 18d | 2027-11-15 | 2027-12-08 | A6970 SS+2d, A6800 | 0d |  |
| A6990 |  | Finals installation | 18d | 2027-11-17 | 2027-12-10 | A6980 FF+2d, A6810 | 58d | 7d |
|  | 4 | **Electrical part** |  | 2027-12-09 | 2028-05-10 |  |  |  |
|  | 1 | **Termination of the DC Cable** |  | 2027-12-09 | 2028-05-10 |  |  |  |
| A7000 |  | MC 4 Connection | 15d | 2027-12-09 | 2027-12-31 | A6980, A6820 | 51d | 10d |
| A7010 |  | Termination to PV Panel | 15d | 2028-03-16 | 2028-04-06 | A6980, A6830, A7710 | 5d | 0d |
| A7020 |  | Termination to Inverter | 20d | 2028-04-07 | 2028-05-10 | A7010, A6840, A5430, A7710 | 5d | 0d |
|  | 2 | **Termination of the LV Cable** |  | 2028-03-14 | 2028-04-04 |  |  |  |
| A7030 |  | Termination into Inverter | 15d | 2028-03-14 | 2028-04-04 | A6850, A5430, A6280 | 37d | 0d |
| A7040 |  | Termination into Station | 15d | 2028-03-14 | 2028-04-04 | A6860, A4360, A6280 | 37d | 0d |

| ID | WBS | Activity | Duration | Start | Finish | Predecessors | Total float | Free float |
| --- | --- | --- | --- | --- | --- | --- | --- | --- |
|  | 5 | **NCU&TCU Construction** |  | 2027-11-03 | 2028-02-04 |  |  |  |
|  | 1 | **NCU installation** |  | 2027-11-03 | 2028-01-17 |  |  |  |
| A17990 |  | NCU Foundation construction | 10d | 2027-11-03 | 2027-11-16 | A17840, A6920 | 51d | 0d |
| A18000 |  | Installation of NCU site cabinets (each block) | 10d | 2027-11-17 | 2027-11-30 | A17990 | 71d | 0d |
| A18010 |  | Installation of NCU equipment and power connection | 10d | 2027-12-01 | 2027-12-14 | A18000 | 73d | 0d |
| A18020 |  | NCU Communication Fiber Cable Installation (From SCADA Cabinet to Each NCU) | 15d | 2027-12-01 | 2027-12-22 | A18000 | 71d | 0d |
| A18040 |  | NCU and Inverter Communication Cable Termination | 15d | 2027-12-15 | 2028-01-06 | A18010 | 73d | 2d |
| A18050 |  | NCU and Box Transformer Communication Cable Termination | 10d | 2027-12-15 | 2027-12-30 | A18010 | 78d | 7d |
| A18030 |  | NCU Fiber Splicing and OTDR Testing | 7d | 2027-12-23 | 2028-01-03 | A18020 | 71d | 0d |
| A18060 |  | NCU and PVSCADA Communication Connection | 5d | 2028-01-04 | 2028-01-10 | A18030 | 71d | 0d |
| A18070 |  | NCU Construction QAQC Inspection and Acceptance | 5d | 2028-01-11 | 2028-01-17 | A18060, A18050, A18040 | 71d | 40d |
|  | 2 | **TCU installation** |  | 2027-12-09 | 2028-02-04 |  |  |  |
| A18080 |  | Installation of TCU protective box/installation bracket | 10d | 2027-12-09 | 2027-12-23 | A17930, A6980 | 47d | 0d |
| A18090 |  | Installation of TCU equipment and power connection | 10d | 2027-12-24 | 2028-01-07 | A18080 | 67d | 0d |
| A18100 |  | Installation of TCU equipment and power connection | 15d | 2028-01-10 | 2028-01-28 | A18090 | 67d | 0d |
| A18110 |  | Connection of TCU to transformer control circuit | 10d | 2028-01-10 | 2028-01-21 | A18090 | 72d | 5d |
| A18120 |  | Communication connection of TCU with NCU/PVSCADA | 7d | 2028-01-10 | 2028-01-18 | A18090 | 75d | 8d |
| A18130 |  | QAQC inspection and acceptance of TCU installation | 5d | 2028-01-31 | 2028-02-04 | A18100, A18110, A18120 | 67d | 50d |
|  | 5 | **Block 17-19** |  | 2027-09-13 | 2028-06-14 |  |  |  |
|  | 1 | **Pile installation** |  | 2027-09-13 | 2027-11-12 |  |  |  |
| A7050 |  | Hole Drilling & Verify | 19d | 2027-09-13 | 2027-10-08 | A6870 | 19d | 0d |
| A7060 |  | Pile installation & QC Inspection | 19d | 2027-10-13 | 2027-11-08 | A7050 FF+2d, A6880, A1450 | 0d |  |
| A7070 |  | Pour concrete | 19d | 2027-10-15 | 2027-11-10 | A7060 SS+2d, A6890 | 0d |  |
| A7080 |  | Curing & QAQC Inspection | 19d | 2027-10-19 | 2027-11-12 | A7070 SS+2d, A6900 | 0d |  |

| ID | WBS | Activity | Duration | Start | Finish | Predecessors | Total float | Free float |
| --- | --- | --- | --- | --- | --- | --- | --- | --- |
|  | 2 | **Structure installation** |  | 2027-11-09 | 2027-12-06 |  |  |  |
| A7090 |  | Substructure Assembly | 14d | 2027-11-09 | 2027-11-26 | A6910, A1860 | 0d |  |
| A7100 |  | Substructure installation | 14d | 2027-11-11 | 2027-11-30 | A7090 SS+2d, A7080 FF+2d, A6920 | 0d |  |
| A7110 |  | Tighning | 14d | 2027-11-15 | 2027-12-02 | A7100 SS+2d, A6930 | 0d |  |
| A7120 |  | QC Inspection | 14d | 2027-11-17 | 2027-12-06 | A7110 SS+2d, A6940 | 0d |  |
|  | 3 | **PV Module installation** |  | 2027-11-19 | 2028-01-18 |  |  |  |
| A7130 |  | Perlin installation | 18d | 2027-11-19 | 2027-12-14 | A7120 SS+2d, A6950 | 15d | 2d |
| A7140 |  | PV Module installation | 18d | 2027-12-14 | 2028-01-10 | A7130 SS+2d, A6960, A2190 | 0d |  |
| A7150 |  | Tighning | 18d | 2027-12-17 | 2028-01-12 | A7140 SS+2d, A6970 | 0d |  |
| A7160 |  | QAQC Inspection | 18d | 2027-12-21 | 2028-01-14 | A7150 SS+2d, A6980 | 0d |  |
| A7170 |  | Finals installation | 18d | 2027-12-23 | 2028-01-18 | A7160 FF+2d, A6990 | 51d | 7d |
|  | 4 | **Electrical part** |  | 2028-01-17 | 2028-06-14 |  |  |  |
|  | 1 | **Termination of the DC Cable** |  | 2028-01-17 | 2028-06-14 |  |  |  |
| A7180 |  | MC 4 Connection | 15d | 2028-01-17 | 2028-02-04 | A7160, A7000 | 41d | 10d |
| A7190 |  | Termination to PV Panel | 15d | 2028-04-25 | 2028-05-17 | A7160, A7010, A7820 | 0d |  |
| A7200 |  | Termination to Inverter | 20d | 2028-05-18 | 2028-06-14 | A7190, A7020, A5530, A7820 | 0d |  |
|  | 2 | **Termination of the LV Cable** |  | 2028-04-05 | 2028-04-28 |  |  |  |
| A7210 |  | Termination into Inverter | 15d | 2028-04-05 | 2028-04-28 | A7030, A6280, A5530 | 37d | 0d |
| A7220 |  | Termination into Station | 15d | 2028-04-05 | 2028-04-28 | A7040, A6280, A4470 | 37d | 0d |
|  | 5 | **NCU&TCU Construction** |  | 2027-12-01 | 2028-03-10 |  |  |  |
|  | 1 | **NCU installation** |  | 2027-12-01 | 2028-02-14 |  |  |  |
| A18140 |  | NCU Foundation construction | 10d | 2027-12-01 | 2027-12-14 | A17990, A7100 | 41d | 0d |
| A18150 |  | Installation of NCU site cabinets (each block) | 10d | 2027-12-15 | 2027-12-30 | A18140 | 51d | 0d |
| A18160 |  | Installation of NCU equipment and power connection | 10d | 2027-12-31 | 2028-01-13 | A18150 | 53d | 0d |
| A18170 |  | NCU Communication Fiber Cable Installation (From SCADA Cabinet to Each NCU) | 15d | 2027-12-31 | 2028-01-20 | A18150 | 51d | 0d |
| A18190 |  | NCU and Inverter Communication Cable Termination | 15d | 2028-01-14 | 2028-02-03 | A18160 | 53d | 2d |
| A18200 |  | NCU and Box Transformer Communication Cable Termination | 10d | 2028-01-14 | 2028-01-27 | A18160 | 58d | 7d |
| A18180 |  | NCU Fiber Splicing and OTDR Testing | 7d | 2028-01-21 | 2028-01-31 | A18170 | 51d | 0d |
| A18210 |  | NCU and PVSCADA Communication Connection | 5d | 2028-02-01 | 2028-02-07 | A18180 | 51d | 0d |
| A18220 |  | NCU Construction QAQC Inspection and Acceptance | 5d | 2028-02-08 | 2028-02-14 | A18210, A18200, A18190 | 51d | 20d |

| ID | WBS | Activity | Duration | Start | Finish | Predecessors | Total float | Free float |
| --- | --- | --- | --- | --- | --- | --- | --- | --- |
|  | 2 | **TCU installation** |  | 2028-01-17 | 2028-03-10 |  |  |  |
| A18230 |  | Installation of TCU protective box/installation bracket | 10d | 2028-01-17 | 2028-01-28 | A7160, A18080 | 32d | 0d |
| A18240 |  | Installation of TCU equipment and power connection | 10d | 2028-01-31 | 2028-02-11 | A18230 | 42d | 0d |
| A18250 |  | Installation of TCU equipment and power connection | 15d | 2028-02-14 | 2028-03-03 | A18240 | 42d | 0d |
| A18260 |  | Connection of TCU to transformer control circuit | 10d | 2028-02-14 | 2028-02-25 | A18240 | 47d | 5d |
| A18270 |  | Communication connection of TCU with NCU/PVSCADA | 7d | 2028-02-14 | 2028-02-22 | A18240 | 50d | 8d |
| A18280 |  | QAQC inspection and acceptance of TCU installation | 5d | 2028-03-06 | 2028-03-10 | A18250, A18260, A18270 | 42d | 25d |
|  | 6 | **Block 20-22** |  | 2027-10-11 | 2028-07-13 |  |  |  |
|  | 1 | **Pile installation** |  | 2027-10-11 | 2027-12-09 |  |  |  |
| A7230 |  | Hole Drilling & Verify | 19d | 2027-10-11 | 2027-11-04 | A7050 | 19d |  |
| A7240 |  | Pile installation & QC Inspection | 19d | 2027-11-09 | 2027-12-03 | A7230 FF+2d, A7060, A1500 | 0d |  |
| A7250 |  | Pour concrete | 19d | 2027-11-11 | 2027-12-07 | A7240 SS+2d, A7070 | 0d |  |
| A7260 |  | Curing & QAQC Inspection | 19d | 2027-11-15 | 2027-12-09 | A7250 SS+2d, A7080 | 0d |  |
|  | 2 | **Structure installation** |  | 2027-12-07 | 2028-01-05 |  |  |  |
| A7270 |  | Substructure Assembly | 14d | 2027-12-07 | 2027-12-28 | A7090, A1910 | 0d |  |
| A7280 |  | Substructure installation | 14d | 2027-12-09 | 2027-12-30 | A7270 SS+2d, A7260 FF+2d, A7100 | 0d |  |
| A7290 |  | Tighning | 14d | 2027-12-13 | 2028-01-03 | A7280 SS+2d, A7110 | 0d |  |
| A7300 |  | QC Inspection | 14d | 2027-12-15 | 2028-01-05 | A7290 SS+2d, A7120 | 0d |  |
|  | 3 | **PV Module installation** |  | 2027-12-20 | 2028-02-22 |  |  |  |
| A7310 |  | Perlin installation | 18d | 2027-12-20 | 2028-01-13 | A7300 SS+2d, A7130 | 20d |  |
| A7320 |  | PV Module installation | 18d | 2028-01-20 | 2028-02-14 | A7310 SS+2d, A7140, A2240 | 0d |  |
| A7330 |  | Tighning | 18d | 2028-01-24 | 2028-02-16 | A7320 SS+2d, A7150 | 0d |  |
| A7340 |  | QAQC Inspection | 18d | 2028-01-26 | 2028-02-18 | A7330 SS+2d, A7160 | 0d |  |
| A7350 |  | Finals installation | 18d | 2028-01-28 | 2028-02-22 | A7340 FF+2d, A7170 | 44d |  |

| ID | WBS | Activity | Duration | Start | Finish | Predecessors | Total float | Free float |
| --- | --- | --- | --- | --- | --- | --- | --- | --- |
|  | 4 | **Electrical part** |  | 2028-02-21 | 2028-07-13 |  |  |  |
|  | 1 | **Termination of the DC Cable** |  | 2028-02-21 | 2028-07-13 |  |  |  |
| A7360 |  | MC 4 Connection | 15d | 2028-02-21 | 2028-03-10 | A7340, A7180 | 31d |  |
| A7370 |  | Termination to PV Panel | 15d | 2028-06-01 | 2028-06-22 | A7340, A7190, A7930 | 10d |  |
| A7380 |  | Termination to Inverter | 20d | 2028-06-15 | 2028-07-13 | A7370 SS, A7200, A5630, A7930 | 0d |  |
|  | 2 | **Termination of the LV Cable** |  | 2028-05-02 | 2028-05-22 |  |  |  |
| A7390 |  | Termination into Inverter | 15d | 2028-05-02 | 2028-05-22 | A7210, A5530, A6500 | 37d |  |
| A7400 |  | Termination into Station | 15d | 2028-05-02 | 2028-05-22 | A7220, A4580, A6500 | 37d |  |
|  | 5 | **NCU&TCU Construction** |  | 2027-12-31 | 2028-04-19 |  |  |  |
|  | 1 | **NCU installation** |  | 2027-12-31 | 2028-03-13 |  |  |  |
| A18290 |  | NCU Foundation construction | 10d | 2027-12-31 | 2028-01-13 | A18140, A7280 | 31d | 0d |
| A18300 |  | Installation of NCU site cabinets (each block) | 10d | 2028-01-14 | 2028-01-27 | A18290 | 31d | 0d |
| A18310 |  | Installation of NCU equipment and power connection | 10d | 2028-01-28 | 2028-02-10 | A18300 | 33d | 0d |
| A18320 |  | NCU Communication Fiber Cable Installation (From SCADA Cabinet to Each NCU) | 15d | 2028-01-28 | 2028-02-17 | A18300 | 31d | 0d |
| A18340 |  | NCU and Inverter Communication Cable Termination | 15d | 2028-02-11 | 2028-03-02 | A18310 | 33d | 2d |
| A18350 |  | NCU and Box Transformer Communication Cable Termination | 10d | 2028-02-11 | 2028-02-24 | A18310 | 38d | 7d |
| A18330 |  | NCU Fiber Splicing and OTDR Testing | 7d | 2028-02-18 | 2028-02-28 | A18320 | 31d | 0d |
| A18360 |  | NCU and PVSCADA Communication Connection | 5d | 2028-02-29 | 2028-03-06 | A18330 | 31d | 0d |
| A18370 |  | NCU Construction QAQC Inspection and Acceptance | 5d | 2028-03-07 | 2028-03-13 | A18360, A18350, A18340 | 31d | 0d |
|  | 2 | **TCU installation** |  | 2028-02-21 | 2028-04-19 |  |  |  |
| A18380 |  | Installation of TCU protective box/installation bracket | 10d | 2028-02-21 | 2028-03-03 | A18230, A7340 | 17d | 0d |
| A18390 |  | Installation of TCU equipment and power connection | 10d | 2028-03-06 | 2028-03-17 | A18380 | 17d | 0d |
| A18400 |  | Installation of TCU equipment and power connection | 15d | 2028-03-20 | 2028-04-10 | A18390 | 17d | 0d |
| A18410 |  | Connection of TCU to transformer control circuit | 10d | 2028-03-20 | 2028-04-03 | A18390 | 22d | 5d |
| A18420 |  | Communication connection of TCU with NCU/PPCSCADA | 7d | 2028-03-20 | 2028-03-29 | A18390 | 25d | 8d |
| A18430 |  | QAQC inspection and acceptance of TCU installation | 5d | 2028-04-11 | 2028-04-19 | A18400, A18410, A18420 | 17d | 0d |

| ID | WBS | Activity | Type | Duration | Start | Finish | Predecessors | Total float | Free float |
| --- | --- | --- | --- | --- | --- | --- | --- | --- | --- |
|  | 7 | **Completion Milestone** |  |  | 2028-01-31 | 2028-07-13 |  |  |  |
| A13160 |  | Block 1-4 Mechnical completion | milestone | 0d | 2028-01-31 | 2028-01-31 | A5940 FF, A5950 FF, A2610 FF, A19560 FF | 60d |  |
| A13170 |  | Block 5-8 Mechnical completion | milestone | 0d | 2028-02-23 | 2028-02-23 | A6660 FF, A6670 FF, A6680 FF, A19640 FF | 52.5d |  |
| A13180 |  | Block 9-12 Mechnical completion | milestone | 0d | 2028-03-30 | 2028-03-30 | A6840 FF, A6860 FF, A6850 FF, A19710 FF | 37d |  |
| A13190 |  | Block 13-16 Mechnical completion | milestone | 0d | 2028-05-10 | 2028-05-10 | A7020 FF, A7040 FF, A7030 FF, A19780 FF | 26d | 21.5d |
| A13200 |  | Block 17-19 Mechnical completion | milestone | 0d | 2028-06-14 | 2028-06-14 | A7200 FF, A7220 FF, A7210 FF, A19850 FF | 10.5d | 6d |
| A13210 |  | Block 20-22 Mechnical completion | milestone | 0d | 2028-07-13 | 2028-07-13 | A7380 FF, A7400 FF, A7390 FF, A19920 FF | 0d |  |
|  | 5 | **O&M Building** |  |  | 2027-03-01 | 2027-12-15 |  |  |  |
|  | 1 | **Office Building** |  |  | 2027-03-01 | 2027-12-15 |  |  |  |
| A19200 |  | Setting Out |  | 10d | 2027-03-01 | 2027-03-12 | A8180, A15450 | 219d | 0d |
| A19210 |  | Excavation & Backfilling |  | 15d | 2027-03-15 | 2027-04-07 | A19200 | 219d | 0d |
| A19220 |  | Foundation Concrete |  | 20d | 2027-04-08 | 2027-05-06 | A19210 | 219d | 0d |
| A19230 |  | Main Structure |  | 60d | 2027-05-07 | 2027-07-30 | A19220 | 219d | 0d |
| A19240 |  | Roofing |  | 25d | 2027-08-02 | 2027-09-06 | A19230 | 219d | 0d |
| A19250 |  | Doors & Windows |  | 15d | 2027-09-07 | 2027-09-28 | A19240 | 219d | 0d |
| A19260 |  | Interior Decoration |  | 50d | 2027-09-29 | 2027-12-07 | A19250 | 219d | 0d |
| A19270 |  | MEP Installation |  | 40d | 2027-09-29 | 2027-11-23 | A19250 | 229d | 10d |
| A19280 |  | QAQC Acceptance |  | 6d | 2027-12-08 | 2027-12-15 | A19270, A19260 | 219d |  |
|  | 2 | **Warehouse** |  |  | 2027-03-15 | 2027-09-21 |  |  |  |
| A19290 |  | Setting Out |  | 10d | 2027-03-15 | 2027-03-31 | A19200 | 275d | 0d |
| A19300 |  | Excavation & Backfilling |  | 15d | 2027-04-01 | 2027-04-21 | A19290 | 279d | 0d |
| A19310 |  | Foundation Concrete |  | 20d | 2027-04-22 | 2027-05-20 | A19300 | 279d | 0d |
| A19320 |  | Main Structure |  | 50d | 2027-05-21 | 2027-07-30 | A19310 | 279d | 0d |
| A19330 |  | Roofing |  | 20d | 2027-08-02 | 2027-08-30 | A19320 | 279d | 0d |
| A19350 |  | Floor Hardening |  | 20d | 2027-08-02 | 2027-08-30 | A19320 | 289d | 10d |
| A19340 |  | Doors & Windows |  | 10d | 2027-08-31 | 2027-09-13 | A19330 | 279d | 0d |
| A19360 |  | Acceptance |  | 6d | 2027-09-14 | 2027-09-21 | A19340, A19350 | 279d |  |

| ID | WBS | Activity | Duration | Start | Finish | Predecessors | Total float | Free float |
| --- | --- | --- | --- | --- | --- | --- | --- | --- |
|  | 3 | **Guardhouse** |  | 2027-04-01 | 2027-09-07 |  |  |  |
| A19370 |  | Setting Out | 5d | 2027-04-01 | 2027-04-07 | A19290 | 275d | 0d |
| A19380 |  | Excavation & Backfilling | 10d | 2027-04-08 | 2027-04-21 | A19370 | 289d | 0d |
| A19390 |  | Foundation Concrete | 15d | 2027-04-22 | 2027-05-13 | A19380 | 289d | 0d |
| A19400 |  | Main Structure | 30d | 2027-05-14 | 2027-06-25 | A19390 | 289d | 0d |
| A19410 |  | Roofing | 15d | 2027-06-28 | 2027-07-16 | A19400 | 289d | 0d |
| A19420 |  | Doors & Windows | 10d | 2027-07-19 | 2027-07-30 | A19410 | 289d | 0d |
| A19430 |  | Interior Decoration | 20d | 2027-08-02 | 2027-08-30 | A19420 | 289d | 0d |
| A19450 |  | QAQC Acceptance | 6d | 2027-08-31 | 2027-09-07 | A19430, A19420 | 289d |  |
|  | 4 | **Hazrous Buildiing** |  | 2027-04-08 | 2027-09-28 |  |  |  |
| A19460 |  | Setting Out | 5d | 2027-04-08 | 2027-04-14 | A19370 | 275d | 0d |
| A19470 |  | Excavation & Backfilling | 10d | 2027-04-15 | 2027-04-29 | A19460 | 275d | 0d |
| A19480 |  | Foundation Concrete | 15d | 2027-04-30 | 2027-05-20 | A19470 | 275d | 0d |
| A19490 |  | Main Structure | 40d | 2027-05-21 | 2027-07-16 | A19480 | 275d | 0d |
| A19500 |  | Roofing | 15d | 2027-07-19 | 2027-08-06 | A19490 | 275d | 0d |
| A19510 |  | Explosion-proof Doors & Windows | 10d | 2027-08-10 | 2027-08-23 | A19500 | 275d | 0d |
| A19520 |  | Explosion-proof Electrical | 20d | 2027-08-24 | 2027-09-20 | A19510 | 275d | 0d |
| A19530 |  | Ventilation & Fire Protection | 20d | 2027-08-24 | 2027-09-20 | A19510 | 275d | 0d |
| A19540 |  | QAQC Acceptance | 5d | 2027-09-21 | 2027-09-28 | A19520, A19530 | 275d |  |
|  | 6 | **Road** |  | 2028-02-04 | 2028-10-09 |  |  |  |
|  | 1 | **Ring Road** |  | 2028-05-05 | 2028-10-09 |  |  |  |
|  | 1 | **North** |  | 2028-05-05 | 2028-07-25 |  |  |  |
| A13780 |  | Surveying and Setting Out | 3d | 2028-05-05 | 2028-05-09 | A10970, A3830, A6480 | 16d | 0d |
| A13790 |  | Surface and Obstacle Clearance | 7d | 2028-05-10 | 2028-05-18 | A13780 | 16d | 0d |
| A13800 |  | Subgrade Excavation and Backfilling | 8d | 2028-05-19 | 2028-05-30 | A13790 | 16d | 0d |
| A13810 |  | Subgrade Loosening, Water Sprinkling and Rolling | 6d | 2028-05-31 | 2028-06-07 | A13800 | 16d | 0d |
| A13820 |  | Subgrade Compaction Degree Testing | 2d | 2028-06-08 | 2028-06-09 | A13810 | 16d | 0d |
| A13830 |  | Inspection of G6 Material upon Arrival | 2d | 2028-06-12 | 2028-06-13 | A13820 | 16d | 0d |
| A13840 |  | G6 Base Course Paving and Mixing | 6d | 2028-06-14 | 2028-06-22 | A13830 | 16d | 0d |
| A13850 |  | G6 Base Course Leveling and Rolling | 5d | 2028-06-23 | 2028-06-29 | A13840 | 16d | 0d |
| A13860 |  | G6 Base Course Compaction Degree Testing | 2d | 2028-06-30 | 2028-07-03 | A13850 | 16d | 0d |
| A13870 |  | Inspection of G5 Material upon Arrival | 2d | 2028-07-04 | 2028-07-05 | A13860 | 16d | 0d |
| A13900 |  | Side Ditch Excavation and Protection | 8d | 2028-07-04 | 2028-07-13 | A13860 | 21d | 5d |
| A13880 |  | G5 Surface Course Paving and Rolling | 5d | 2028-07-06 | 2028-07-12 | A13870 | 16d | 0d |
| A13890 |  | G5 Surface Course Compaction Degree Testing | 2d | 2028-07-13 | 2028-07-14 | A13880 | 16d | 0d |
| A13910 |  | Shoulder Marking and Guardrail Installation | 4d | 2028-07-17 | 2028-07-20 | A13890 | 16d | 0d |
| A13920 |  | Completion Survey and Acceptance | 3d | 2028-07-21 | 2028-07-25 | A13910, A13900 | 16d | 0d |

| ID | WBS | Activity | Duration | Start | Finish | Predecessors | Total float | Free float |
| --- | --- | --- | --- | --- | --- | --- | --- | --- |
|  | 2 | **East** |  | 2028-05-10 | 2028-09-26 |  |  |  |
| A13930 |  | Surveying and Setting Out | 3d | 2028-05-10 | 2028-05-12 | A13780 | 25d | 0d |
| A13940 |  | Surface and Obstacle Clearance | 12d | 2028-05-15 | 2028-05-30 | A13930 | 25d | 0d |
| A13950 |  | Subgrade Excavation and Backfilling | 12d | 2028-05-31 | 2028-06-15 | A13940 | 25d | 0d |
| A13960 |  | Subgrade Loosening, Water Sprinkling and Rolling | 10d | 2028-06-19 | 2028-06-30 | A13950 | 25d | 0d |
| A13970 |  | Subgrade Compaction Degree Testing | 4d | 2028-07-03 | 2028-07-06 | A13960 | 25d | 0d |
| A13980 |  | Inspection of G6 Material upon Arrival | 4d | 2028-07-07 | 2028-07-12 | A13970 | 25d | 0d |
| A13990 |  | G6 Base Course Paving and Mixing | 10d | 2028-07-13 | 2028-07-26 | A13980 | 25d | 0d |
| A14000 |  | G6 Base Course Leveling and Rolling | 8d | 2028-07-27 | 2028-08-07 | A13990 | 25d | 0d |
| A14010 |  | G6 Base Course Compaction Degree Testing | 4d | 2028-08-08 | 2028-08-14 | A14000 | 25d | 0d |
| A14020 |  | Inspection of G5 Material upon Arrival | 4d | 2028-08-15 | 2028-08-18 | A14010 | 25d | 0d |
| A14050 |  | Side Ditch Excavation and Protection | 13d | 2028-08-15 | 2028-08-31 | A14010 | 36d | 11d |
| A14030 |  | G5 Surface Course Paving and Rolling | 8d | 2028-08-21 | 2028-08-30 | A14020 | 25d | 0d |
| A14040 |  | G5 Surface Course Compaction Degree Testing | 4d | 2028-08-31 | 2028-09-05 | A14030 | 25d | 0d |
| A14060 |  | Shoulder Marking and Guardrail Installation | 8d | 2028-09-06 | 2028-09-15 | A14040 | 25d | 0d |
| A14070 |  | Completion Survey and Acceptance | 6d | 2028-09-18 | 2028-09-26 | A14060, A14050 | 25d |  |
|  | 3 | **West** |  | 2028-07-26 | 2028-10-06 |  |  |  |
| A14080 |  | Surveying and Setting Out | 3d | 2028-07-26 | 2028-07-28 | A13920 | 16d | 0d |
| A14090 |  | Surface and Obstacle Clearance | 5d | 2028-07-31 | 2028-08-04 | A14080 | 17d | 0d |
| A14100 |  | Subgrade Excavation and Backfilling | 5d | 2028-08-07 | 2028-08-14 | A14090 | 17d | 0d |
| A14110 |  | Subgrade Loosening, Water Sprinkling and Rolling | 6d | 2028-08-15 | 2028-08-22 | A14100 | 17d | 0d |
| A14120 |  | Subgrade Compaction Degree Testing | 2d | 2028-08-23 | 2028-08-24 | A14110 | 17d | 0d |
| A14130 |  | Inspection of G6 Material upon Arrival | 2d | 2028-08-25 | 2028-08-28 | A14120 | 17d | 0d |
| A14140 |  | G6 Base Course Paving and Mixing | 5d | 2028-08-29 | 2028-09-04 | A14130 | 17d | 0d |
| A14150 |  | G6 Base Course Leveling and Rolling | 5d | 2028-09-05 | 2028-09-11 | A14140 | 17d | 0d |
| A14160 |  | G6 Base Course Compaction Degree Testing | 2d | 2028-09-12 | 2028-09-13 | A14150 | 17d | 0d |
| A14170 |  | Inspection of G5 Material upon Arrival | 2d | 2028-09-14 | 2028-09-15 | A14160 | 17d | 0d |
| A14200 |  | Side Ditch Excavation and Protection | 6d | 2028-09-14 | 2028-09-21 | A14160 | 24d | 7d |
| A14180 |  | G5 Surface Course Paving and Rolling | 5d | 2028-09-18 | 2028-09-22 | A14170 | 17d | 0d |
| A14190 |  | G5 Surface Course Compaction Degree Testing | 2d | 2028-09-26 | 2028-09-27 | A14180 | 17d | 0d |
| A14210 |  | Shoulder Marking and Guardrail Installation | 4d | 2028-09-28 | 2028-10-03 | A14190 | 17d | 0d |
| A14220 |  | Completion Survey and Acceptance | 3d | 2028-10-04 | 2028-10-06 | A14210, A14200 | 17d |  |

| ID | WBS | Activity | Duration | Start | Finish | Predecessors | Total float | Free float |
| --- | --- | --- | --- | --- | --- | --- | --- | --- |
|  | 4 | **South** |  | 2028-07-26 | 2028-10-09 |  |  |  |
| A14230 |  | Surveying and Setting Out | 3d | 2028-07-26 | 2028-07-28 | A14080 SS | 16d | 0d |
| A14240 |  | Surface and Obstacle Clearance | 5d | 2028-07-31 | 2028-08-04 | A14230 | 16d | 0d |
| A14250 |  | Subgrade Excavation and Backfilling | 5d | 2028-08-07 | 2028-08-14 | A14240 | 16d | 0d |
| A14260 |  | Subgrade Loosening, Water Sprinkling and Rolling | 6d | 2028-08-15 | 2028-08-22 | A14250 | 16d | 0d |
| A14270 |  | Subgrade Compaction Degree Testing | 2d | 2028-08-23 | 2028-08-24 | A14260 | 16d | 0d |
| A14280 |  | Inspection of G6 Material upon Arrival | 2d | 2028-08-25 | 2028-08-28 | A14270 | 16d | 0d |
| A14290 |  | G6 Base Course Paving and Mixing | 6d | 2028-08-29 | 2028-09-05 | A14280 | 16d | 0d |
| A14300 |  | G6 Base Course Leveling and Rolling | 5d | 2028-09-06 | 2028-09-12 | A14290 | 16d | 0d |
| A14310 |  | G6 Base Course Compaction Degree Testing | 2d | 2028-09-13 | 2028-09-14 | A14300 | 16d | 0d |
| A14320 |  | Inspection of G5 Material upon Arrival | 2d | 2028-09-15 | 2028-09-18 | A14310 | 16d | 0d |
| A14350 |  | Side Ditch Excavation and Protection | 6d | 2028-09-15 | 2028-09-22 | A14310 | 23d | 7d |
| A14330 |  | G5 Surface Course Paving and Rolling | 5d | 2028-09-19 | 2028-09-26 | A14320 | 16d | 0d |
| A14340 |  | G5 Surface Course Compaction Degree Testing | 2d | 2028-09-27 | 2028-09-28 | A14330 | 16d | 0d |
| A14360 |  | Shoulder Marking and Guardrail Installation | 4d | 2028-09-29 | 2028-10-04 | A14340 | 16d | 0d |
| A14370 |  | Completion Survey and Acceptance | 3d | 2028-10-05 | 2028-10-09 | A14360, A14350 | 16d |  |
|  | 2 | **Internal Road** |  | 2028-02-04 | 2028-05-24 |  |  |  |
|  | 1 | **Block 1-4** |  | 2028-02-04 | 2028-03-31 |  |  |  |
| A14380 |  | Measurement and Alignment | 4d | 2028-02-04 | 2028-02-09 | A10400 | 34d | 0d |
| A14390 |  | Clearing and Obstacle Removal | 4d | 2028-02-10 | 2028-02-15 | A14380 | 34d | 0d |
| A14420 |  | Excavation and Backfilling of Roadbed | 4d | 2028-02-16 | 2028-02-21 | A14390 | 34d | 0d |
| A14430 |  | Compaction of Roadbed | 2d | 2028-02-22 | 2028-02-23 | A14420 | 34d | 0d |
| A14440 |  | Inspection of Compaction Degree of Roadbed | 4d | 2028-02-24 | 2028-02-29 | A14430 | 34d | 0d |
| A14450 |  | Inspection of G6 Materials Arrival | 4d | 2028-03-01 | 2028-03-06 | A14440 | 34d | 0d |
| A14460 |  | Mixing and Compaction of G6 Base Layer | 2d | 2028-03-07 | 2028-03-08 | A14450 | 34d | 0d |
| A14470 |  | Leveling and Compaction of G6 Base Layer | 2d | 2028-03-09 | 2028-03-10 | A14460 | 34d | 0d |
| A14480 |  | Inspection of Compaction Degree of G6 Base Layer | 2d | 2028-03-13 | 2028-03-14 | A14470 | 34d | 0d |
| A14490 |  | Inspection of G5 Materials Arrival | 4d | 2028-03-15 | 2028-03-20 | A14480 | 34d | 0d |
| A14520 |  | Side ditch | 2d | 2028-03-15 | 2028-03-16 | A14480 | 42d | 8d |
| A14500 |  | Compaction and Rounding of G5 Surface Layer | 2d | 2028-03-22 | 2028-03-23 | A14490 | 34d | 0d |
| A14510 |  | G5 surface layer compaction degree test | 2d | 2028-03-24 | 2028-03-27 | A14500 | 34d | 0d |
| A14530 |  | Shoulder trimming | 2d | 2028-03-28 | 2028-03-29 | A14510 | 34d | 0d |
| A14540 |  | Acceptance inspection | 2d | 2028-03-30 | 2028-03-31 | A14530, A14520 | 34d |  |

| ID | WBS | Activity | Duration | Start | Finish | Predecessors | Total float | Free float |
| --- | --- | --- | --- | --- | --- | --- | --- | --- |
|  | 2 | **Block 5-8** |  | 2028-02-14 | 2028-04-10 |  |  |  |
| A14550 |  | Measurement and Alignment | 4d | 2028-02-14 | 2028-02-17 | A10890 | 28d | 0d |
| A14560 |  | Clearing and Obstacle Removal | 4d | 2028-02-18 | 2028-02-23 | A14550 | 28d | 0d |
| A14570 |  | Excavation and Backfilling of Roadbed | 4d | 2028-02-24 | 2028-02-29 | A14560 | 28d | 0d |
| A14580 |  | Compaction of Roadbed | 2d | 2028-03-01 | 2028-03-02 | A14570 | 28d | 0d |
| A14590 |  | Inspection of Compaction Degree of Roadbed | 4d | 2028-03-03 | 2028-03-08 | A14580 | 28d | 0d |
| A14600 |  | Inspection of G6 Materials Arrival | 4d | 2028-03-09 | 2028-03-14 | A14590 | 28d | 0d |
| A14610 |  | Mixing and Compaction of G6 Base Layer | 2d | 2028-03-15 | 2028-03-16 | A14600 | 28d | 0d |
| A14620 |  | Leveling and Compaction of G6 Base Layer | 2d | 2028-03-17 | 2028-03-20 | A14610 | 28d | 0d |
| A14630 |  | Inspection of Compaction Degree of G6 Base Layer | 2d | 2028-03-22 | 2028-03-23 | A14620 | 28d | 0d |
| A14640 |  | Inspection of G5 Materials Arrival | 4d | 2028-03-24 | 2028-03-29 | A14630 | 28d | 0d |
| A14670 |  | Side ditch | 2d | 2028-03-24 | 2028-03-27 | A14630 | 36d | 8d |
| A14650 |  | Compaction and Rounding of G5 Surface Layer | 2d | 2028-03-30 | 2028-03-31 | A14640 | 28d | 0d |
| A14660 |  | G5 surface layer compaction degree test | 2d | 2028-04-03 | 2028-04-04 | A14650 | 28d | 0d |
| A14680 |  | Shoulder trimming | 2d | 2028-04-05 | 2028-04-06 | A14660 | 28d | 0d |
| A14690 |  | Acceptance inspection | 2d | 2028-04-07 | 2028-04-10 | A14680, A14670 | 28d |  |
|  | 3 | **Block 9-12** |  | 2028-02-22 | 2028-04-20 |  |  |  |
| A14700 |  | Measurement and Alignment | 4d | 2028-02-22 | 2028-02-25 | A10970 | 22d | 0d |
| A14710 |  | Clearing and Obstacle Removal | 4d | 2028-02-28 | 2028-03-02 | A14700 | 22d | 0d |
| A14720 |  | Excavation and Backfilling of Roadbed | 4d | 2028-03-03 | 2028-03-08 | A14710 | 22d | 0d |
| A14730 |  | Compaction of Roadbed | 2d | 2028-03-09 | 2028-03-10 | A14720 | 22d | 0d |
| A14740 |  | Inspection of Compaction Degree of Roadbed | 4d | 2028-03-13 | 2028-03-16 | A14730 | 22d | 0d |
| A14750 |  | Inspection of G6 Materials Arrival | 4d | 2028-03-17 | 2028-03-23 | A14740 | 22d | 0d |
| A14760 |  | Mixing and Compaction of G6 Base Layer | 2d | 2028-03-24 | 2028-03-27 | A14750 | 22d | 0d |
| A14770 |  | Leveling and Compaction of G6 Base Layer | 2d | 2028-03-28 | 2028-03-29 | A14760 | 22d | 0d |
| A14780 |  | Inspection of Compaction Degree of G6 Base Layer | 2d | 2028-03-30 | 2028-03-31 | A14770 | 22d | 0d |
| A14790 |  | Inspection of G5 Materials Arrival | 4d | 2028-04-03 | 2028-04-06 | A14780 | 22d | 0d |
| A14820 |  | Side ditch | 2d | 2028-04-03 | 2028-04-04 | A14780 | 30d | 8d |
| A14800 |  | Compaction and Rounding of G5 Surface Layer | 2d | 2028-04-07 | 2028-04-10 | A14790 | 22d | 0d |
| A14810 |  | G5 surface layer compaction degree test | 2d | 2028-04-11 | 2028-04-12 | A14800 | 22d | 0d |
| A14830 |  | Shoulder trimming | 2d | 2028-04-13 | 2028-04-18 | A14810 | 22d | 0d |
| A14840 |  | Acceptance inspection | 2d | 2028-04-19 | 2028-04-20 | A14830, A14820 | 22d |  |

| ID | WBS | Activity | Duration | Start | Finish | Predecessors | Total float | Free float |
| --- | --- | --- | --- | --- | --- | --- | --- | --- |
|  | 4 | **Block 13-16** |  | 2028-03-01 | 2028-05-02 |  |  |  |
| A14850 |  | Measurement and Alignment | 4d | 2028-03-01 | 2028-03-06 | A11050 | 16d | 0d |
| A14860 |  | Clearing and Obstacle Removal | 4d | 2028-03-07 | 2028-03-10 | A14850 | 16d | 0d |
| A14870 |  | Excavation and Backfilling of Roadbed | 4d | 2028-03-13 | 2028-03-16 | A14860 | 16d | 0d |
| A14880 |  | Compaction of Roadbed | 2d | 2028-03-17 | 2028-03-20 | A14870 | 16d | 0d |
| A14890 |  | Inspection of Compaction Degree of Roadbed | 4d | 2028-03-22 | 2028-03-27 | A14880 | 16d | 0d |
| A14900 |  | Inspection of G6 Materials Arrival | 4d | 2028-03-28 | 2028-03-31 | A14890 | 16d | 0d |
| A14910 |  | Mixing and Compaction of G6 Base Layer | 2d | 2028-04-03 | 2028-04-04 | A14900 | 16d | 0d |
| A14920 |  | Leveling and Compaction of G6 Base Layer | 2d | 2028-04-05 | 2028-04-06 | A14910 | 16d | 0d |
| A14930 |  | Inspection of Compaction Degree of G6 Base Layer | 2d | 2028-04-07 | 2028-04-10 | A14920 | 16d | 0d |
| A14940 |  | Inspection of G5 Materials Arrival | 4d | 2028-04-11 | 2028-04-18 | A14930 | 16d | 0d |
| A14970 |  | Side ditch | 2d | 2028-04-11 | 2028-04-12 | A14930 | 24d | 8d |
| A14950 |  | Compaction and Rounding of G5 Surface Layer | 2d | 2028-04-19 | 2028-04-20 | A14940 | 16d | 0d |
| A14960 |  | G5 surface layer compaction degree test | 2d | 2028-04-21 | 2028-04-24 | A14950 | 16d | 0d |
| A14980 |  | Shoulder trimming | 2d | 2028-04-25 | 2028-04-26 | A14960 | 16d | 0d |
| A14990 |  | Acceptance inspection | 2d | 2028-04-28 | 2028-05-02 | A14980, A14970 | 16d |  |
|  | 5 | **Block 17-19** |  | 2028-03-15 | 2028-05-10 |  |  |  |
| A15000 |  | Measurement and Alignment | 2d | 2028-03-15 | 2028-03-16 | A11130 | 10d | 0d |
| A15010 |  | Clearing and Obstacle Removal | 2d | 2028-03-17 | 2028-03-20 | A15000 | 10d | 0d |
| A15020 |  | Excavation and Backfilling of Roadbed | 4d | 2028-03-22 | 2028-03-27 | A15010 | 10d | 0d |
| A15030 |  | Compaction of Roadbed | 2d | 2028-03-28 | 2028-03-29 | A15020 | 10d | 0d |
| A15040 |  | Inspection of Compaction Degree of Roadbed | 4d | 2028-03-30 | 2028-04-04 | A15030 | 10d | 0d |
| A15050 |  | Inspection of G6 Materials Arrival | 4d | 2028-04-05 | 2028-04-10 | A15040 | 10d | 0d |
| A15060 |  | Mixing and Compaction of G6 Base Layer | 2d | 2028-04-11 | 2028-04-12 | A15050 | 10d | 0d |
| A15070 |  | Leveling and Compaction of G6 Base Layer | 2d | 2028-04-13 | 2028-04-18 | A15060 | 10d | 0d |
| A15080 |  | Inspection of Compaction Degree of G6 Base Layer | 2d | 2028-04-19 | 2028-04-20 | A15070 | 10d | 0d |
| A15090 |  | Inspection of G5 Materials Arrival | 4d | 2028-04-21 | 2028-04-26 | A15080 | 10d | 0d |
| A15120 |  | Side ditch | 2d | 2028-04-21 | 2028-04-24 | A15080 | 18d | 8d |
| A15100 |  | Compaction and Rounding of G5 Surface Layer | 2d | 2028-04-28 | 2028-05-02 | A15090 | 10d | 0d |
| A15110 |  | G5 surface layer compaction degree test | 2d | 2028-05-03 | 2028-05-04 | A15100 | 10d | 0d |
| A15130 |  | Shoulder trimming | 2d | 2028-05-05 | 2028-05-08 | A15110 | 10d | 0d |
| A15140 |  | Acceptance inspection | 2d | 2028-05-09 | 2028-05-10 | A15130, A15120 | 10d |  |

| ID | WBS | Activity | Duration | Start | Finish | Predecessors | Total float |
| --- | --- | --- | --- | --- | --- | --- | --- |
|  | 6 | **Block 20-22** |  | 2028-03-30 | 2028-05-24 |  |  |
| A15150 |  | Measurement and Alignment | 2d | 2028-03-30 | 2028-03-31 | A11210 | 0d |
| A15160 |  | Clearing and Obstacle Removal | 2d | 2028-04-03 | 2028-04-04 | A15150 | 0d |
| A15170 |  | Excavation and Backfilling of Roadbed | 4d | 2028-04-05 | 2028-04-10 | A15160 | 0d |
| A15180 |  | Compaction of Roadbed | 2d | 2028-04-11 | 2028-04-12 | A15170 | 0d |
| A15190 |  | Inspection of Compaction Degree of Roadbed | 4d | 2028-04-13 | 2028-04-20 | A15180 | 0d |
| A15200 |  | Inspection of G6 Materials Arrival | 4d | 2028-04-21 | 2028-04-26 | A15190 | 0d |
| A15210 |  | Mixing and Compaction of G6 Base Layer | 2d | 2028-04-28 | 2028-05-02 | A15200 | 0d |
| A15220 |  | Leveling and Compaction of G6 Base Layer | 2d | 2028-05-03 | 2028-05-04 | A15210 | 0d |
| A15230 |  | Inspection of Compaction Degree of G6 Base Layer | 2d | 2028-05-05 | 2028-05-08 | A15220 | 0d |
| A15240 |  | Inspection of G5 Materials Arrival | 4d | 2028-05-09 | 2028-05-12 | A15230 | 0d |
| A15270 |  | Side ditch | 2d | 2028-05-09 | 2028-05-10 | A15230 | 8d |
| A15250 |  | Compaction and Rounding of G5 Surface Layer | 2d | 2028-05-15 | 2028-05-16 | A15240 | 0d |
| A15260 |  | G5 surface layer compaction degree test | 2d | 2028-05-17 | 2028-05-18 | A15250 | 0d |
| A15280 |  | Shoulder trimming | 2d | 2028-05-19 | 2028-05-22 | A15260 | 0d |
| A15290 |  | Acceptance inspection | 2d | 2028-05-23 | 2028-05-24 | A15280, A15270 | 0d |
|  | 7 | **Fencing£¨10.8km)** |  | 2027-02-02 | 2027-12-30 |  |  |
|  | 3 | **North(2.5km£©** |  | 2027-02-02 | 2027-09-22 |  |  |
|  | 1 | **Mechnical Fencing** |  | 2027-02-02 | 2027-05-26 |  |  |
|  | 1 | **Foundation** |  | 2027-02-02 | 2027-05-18 |  |  |
| A7960 |  | Setting Out | 13d | 2027-02-02 | 2027-02-18 | A3910, A15450 SS+15d | 0d |
| A7970 |  | Excavation & Cleaning | 30d | 2027-02-19 | 2027-04-06 | A7960 | 0d |
| A7980 |  | Rod & Shutter installation | 37d | 2027-02-26 | 2027-04-22 | A7970 SS+5d | 0d |
| A7990 |  | Pouring Concrete | 37d | 2027-03-05 | 2027-04-30 | A7980 FF+5d | 0d |
| A8000 |  | Curing | 37d | 2027-03-16 | 2027-05-11 | A7990 FF+7d | 0d |
| A8010 |  | QAQC Inspection | 40d | 2027-03-18 | 2027-05-18 | A8000 FF+5d | 0d |

| ID | WBS | Activity | Duration | Start | Finish | Predecessors | Total float | Free float |
| --- | --- | --- | --- | --- | --- | --- | --- | --- |
|  | 2 | **Installation** |  | 2027-03-12 | 2027-05-26 |  |  |  |
| A8020 |  | Post installation | 35d | 2027-03-12 | 2027-05-05 | A7990 SS+5d | 19d | 0d |
| A8040 |  | Anti-Burrow installation | 35d | 2027-03-12 | 2027-05-05 | A8020 SS | 19d | 0d |
| A8050 |  | Panel installation | 40d | 2027-03-12 | 2027-05-12 | A8040 FF+5d | 19d | 0d |
| A8160 |  | Top Guard installation | 40d | 2027-03-19 | 2027-05-19 | A8050 FF+5d | 19d | 0d |
| A8190 |  | QAQC Inspection | 40d | 2027-03-31 | 2027-05-26 | A8160 SS+5d | 19d | 0d |
|  | 2 | **Electrical Fencing** |  | 2027-05-27 | 2027-09-22 |  |  |  |
| A8060 |  | wiring | 20d | 2027-05-27 | 2027-06-24 | A8190, A3880 | 236d | 0d |
| A8070 |  | Insulator installation | 42d | 2027-06-10 | 2027-08-10 | A8060 SS+10d | 236d | 0d |
| A8080 |  | Electrical wires | 35d | 2027-06-25 | 2027-08-13 | A8070 SS+10d | 258d | 0d |
| A8090 |  | internal connecting | 20d | 2027-08-16 | 2027-09-10 | A8080 | 258d | 0d |
| A8200 |  | energiser installation | 4d | 2027-09-13 | 2027-09-16 | A8090 | 274d | 0d |
| A8210 |  | Earthing | 4d | 2027-09-17 | 2027-09-22 | A8200 | 274d | 55d |
|  | 1 | **East(3.9km)** |  | 2027-02-02 | 2027-11-24 |  |  |  |
|  | 1 | **Mechnical Fencing** |  | 2027-02-02 | 2027-06-22 |  |  |  |
|  | 1 | **Foundation** |  | 2027-02-02 | 2027-06-22 |  |  |  |
| A8220 |  | Setting Out | 19d | 2027-02-02 | 2027-02-26 | A3910, A15450 SS+15d | 0d |  |
| A8230 |  | Excavation & Cleaning | 40d | 2027-03-01 | 2027-04-29 | A8220 | 0d |  |
| A8240 |  | Rod & Shutter installation | 55d | 2027-03-08 | 2027-05-27 | A8230 SS+5d | 0d |  |
| A8250 |  | Pouring Concrete | 55d | 2027-03-15 | 2027-06-03 | A8240 FF+5d | 0d |  |
| A8260 |  | Curing | 55d | 2027-03-25 | 2027-06-14 | A8250 FF+7d | 8d | 0d |
| A8270 |  | QAQC Inspection | 55d | 2027-04-05 | 2027-06-22 | A8260 FF+5d | 8d | 1d |
|  | 2 | **Installation** |  | 2027-03-17 | 2027-06-22 |  |  |  |
| A8340 |  | Panel installation | 60d | 2027-03-17 | 2027-06-14 | A8330 FF+5d | 0d |  |
| A8280 |  | Post installation | 52d | 2027-03-23 | 2027-06-07 | A8250 SS+5d | 0d |  |
| A8330 |  | Anti-Burrow installation | 52d | 2027-03-23 | 2027-06-07 | A8280 SS | 0d |  |
| A8350 |  | Top Guard installation | 26d | 2027-05-17 | 2027-06-22 | A8340 FF+5d | 0d |  |
| A8360 |  | QAQC Inspection | 20d | 2027-05-24 | 2027-06-21 | A8350 SS+5d | 0d |  |

| ID | WBS | Activity | Duration | Start | Finish | Predecessors | Total float | Free float |
| --- | --- | --- | --- | --- | --- | --- | --- | --- |
|  | 2 | **Electrical Fencing** |  | 2027-06-22 | 2027-11-24 |  |  |  |
| A8290 |  | wiring | 30d | 2027-06-22 | 2027-08-02 | A8360 | 0d |  |
| A8300 |  | Insulator installation | 63d | 2027-07-06 | 2027-10-04 | A8290 SS+10d | 0d |  |
| A8310 |  | Electrical wires | 52d | 2027-07-20 | 2027-10-01 | A8300 SS+10d | 11d | 0d |
| A8320 |  | internal connecting | 30d | 2027-10-04 | 2027-11-12 | A8310 | 234d | 0d |
| A8370 |  | energiser installation | 4d | 2027-11-15 | 2027-11-18 | A8320 | 234d | 0d |
| A8380 |  | Earthing | 4d | 2027-11-19 | 2027-11-24 | A8370 | 234d |  |
|  | 2 | **West(2.4km)** |  | 2027-02-19 | 2027-12-15 |  |  |  |
|  | 1 | **Mechnical Fencing** |  | 2027-02-19 | 2027-08-19 |  |  |  |
|  | 1 | **Foundation** |  | 2027-02-19 | 2027-07-14 |  |  |  |
| A8390 |  | Setting Out | 13d | 2027-02-19 | 2027-03-09 | A7960 | 27d | 17d |
| A8400 |  | Excavation & Cleaning | 30d | 2027-04-07 | 2027-05-19 | A8390, A7970 | 10d | 7d |
| A8410 |  | Rod & Shutter installation | 37d | 2027-04-23 | 2027-06-15 | A8400 SS+5d, A7980 | 3d | 0d |
| A8420 |  | Pouring Concrete | 37d | 2027-05-03 | 2027-06-23 | A8410 FF+5d, A7990 | 3d | 0d |
| A8430 |  | Curing | 37d | 2027-05-12 | 2027-07-02 | A8420 FF+7d, A8000 | 3d |  |
| A8440 |  | QAQC Inspection | 40d | 2027-05-19 | 2027-07-14 | A8430 FF+5d, A8010 | 0d |  |
|  | 2 | **Installation** |  | 2027-06-09 | 2027-08-19 |  |  |  |
| A8450 |  | Post installation | 35d | 2027-06-09 | 2027-07-28 | A8420 SS+5d, A8020, A8440 FF+10d | 0d |  |
| A8500 |  | Anti-Burrow installation | 35d | 2027-06-09 | 2027-07-28 | A8450 SS, A8040 | 0d |  |
| A8510 |  | Panel installation | 40d | 2027-06-09 | 2027-08-04 | A8500 FF+5d, A8050 | 0d |  |
| A8520 |  | Top Guard installation | 40d | 2027-06-17 | 2027-08-12 | A8510 FF+5d, A8160 | 0d |  |
| A8530 |  | QAQC Inspection | 40d | 2027-06-24 | 2027-08-19 | A8520 SS+5d, A8190 | 0d |  |
|  | 2 | **Electrical Fencing** |  | 2027-08-20 | 2027-12-15 |  |  |  |
| A8460 |  | wiring | 20d | 2027-08-20 | 2027-09-16 | A8530, A8060 | 219d | 0d |
| A8470 |  | Insulator installation | 42d | 2027-09-03 | 2027-11-02 | A8460 SS+10d, A8070 | 219d | 0d |
| A8480 |  | Electrical wires | 35d | 2027-09-17 | 2027-11-05 | A8470 SS+10d | 219d | 0d |
| A8490 |  | internal connecting | 20d | 2027-11-08 | 2027-12-03 | A8480, A8090 | 219d | 0d |
| A8540 |  | energiser installation | 4d | 2027-12-06 | 2027-12-09 | A8490, A8200 | 219d | 0d |
| A8550 |  | Earthing | 4d | 2027-12-10 | 2027-12-15 | A8540, A8210 | 219d |  |

| ID | WBS | Activity | Duration | Start | Finish | Predecessors | Total float | Free float |
| --- | --- | --- | --- | --- | --- | --- | --- | --- |
|  | 4 | **South(2.0km)** |  | 2027-03-01 | 2027-12-30 |  |  |  |
|  | 1 | **Mechnical Fencing** |  | 2027-03-01 | 2027-09-08 |  |  |  |
|  | 1 | **Foundation** |  | 2027-03-01 | 2027-08-04 |  |  |  |
| A8560 |  | Setting Out | 13d | 2027-03-01 | 2027-03-17 | A8220 | 44d | 27d |
| A8570 |  | Excavation & Cleaning | 26d | 2027-04-30 | 2027-06-04 | A8560, A8230 | 17d | 10d |
| A8580 |  | Rod & Shutter installation | 31d | 2027-05-28 | 2027-07-12 | A8570 FF+15d, A8240 | 7d | 0d |
| A8590 |  | Pouring Concrete | 31d | 2027-06-04 | 2027-07-19 | A8580 FF+5d, A8250 | 7d | 0d |
| A8600 |  | Curing | 31d | 2027-06-15 | 2027-07-28 | A8590 FF+7d | 7d | 0d |
| A8610 |  | QAQC Inspection | 30d | 2027-06-24 | 2027-08-04 | A8600 FF+5d, A8270 | 7d | 0d |
|  | 2 | **Installation** |  | 2027-07-14 | 2027-09-08 |  |  |  |
| A8620 |  | Post installation | 26d | 2027-07-14 | 2027-08-19 | A8590 SS+5d, A8280, A8610 FF+10d | 7d | 0d |
| A8670 |  | Anti-Burrow installation | 26d | 2027-07-14 | 2027-08-19 | A8620 SS, A8330 | 7d | 0d |
| A8680 |  | Panel installation | 31d | 2027-07-14 | 2027-08-26 | A8670 FF+5d, A8340 | 7d | 0d |
| A8690 |  | Top Guard installation | 31d | 2027-07-21 | 2027-09-02 | A8680 FF+5d, A8350 | 7d | 0d |
| A8700 |  | QAQC Inspection | 30d | 2027-07-28 | 2027-09-08 | A8690 SS+5d, A8360 | 7d | 0d |
|  | 2 | **Electrical Fencing** |  | 2027-09-09 | 2027-12-30 |  |  |  |
| A8630 |  | wiring | 16d | 2027-09-09 | 2027-10-01 | A8700, A8290 | 7d |  |
| A8640 |  | Insulator installation | 33d | 2027-10-05 | 2027-11-18 | A8630 SS+10d, A8300 | 0d |  |
| A8650 |  | Electrical wires | 27d | 2027-10-19 | 2027-11-24 | A8640 SS+10d, A8310 | 0d |  |
| A8660 |  | internal connecting | 16d | 2027-11-25 | 2027-12-17 | A8650 | 0d |  |
| A8710 |  | energiser installation | 4d | 2027-12-20 | 2027-12-23 | A8660 | 0d |  |
| A8720 |  | Earthing | 4d | 2027-12-24 | 2027-12-30 | A8710 | 0d |  |
|  | 8 | **Weather Station installation** |  | 2027-09-01 | 2028-03-17 |  |  |  |
|  | 1 | **Block 1-4** |  | 2027-09-01 | 2027-12-01 |  |  |  |
| A18440 |  | Construction of meteorological station mast foundation (concrete foundation) | 15d | 2027-09-01 | 2027-09-21 | A17070, A2420 | 46d | 0d |
| A18450 |  | Installation and fixation of meteorological mast | 10d | 2027-09-22 | 2027-10-06 | A17430, A18440 | 121d | 0d |
| A18460 |  | Installation of meteorological sensors (irradiometer/temperature/wind speed and direction) | 14d | 2027-10-07 | 2027-10-26 | A18450 | 121d | 0d |
| A18470 |  | Installation and wiring of meteorological station data collector | 10d | 2027-10-27 | 2027-11-09 | A18460 | 121d | 0d |
| A18480 |  | Laying and wiring of meteorological station signal lines/power lines | 10d | 2027-10-27 | 2027-11-09 | A18460 | 131d | 10d |
| A18490 |  | Communication connection between the meteorological station and NCU/PVSCADA | 10d | 2027-11-10 | 2027-11-23 | A18470 | 121d | 0d |
| A18500 |  | QAQC inspection and acceptance of the meteorological station construction | 6d | 2027-11-24 | 2027-12-01 | A18490, A18480 | 121d | 75d |

| ID | WBS | Activity | Duration | Start | Finish | Predecessors | Total float | Free float |
| --- | --- | --- | --- | --- | --- | --- | --- | --- |
|  | 2 | **Block 5-8** |  | 2027-09-22 | 2027-12-23 |  |  |  |
| A18510 |  | Construction of meteorological station mast foundation (concrete foundation) | 15d | 2027-09-22 | 2027-10-13 | A18440 | 46d | 0d |
| A18520 |  | Installation and fixation of meteorological mast | 10d | 2027-10-14 | 2027-10-27 | A18510 | 106d | 0d |
| A18530 |  | Installation of meteorological sensors (irradiometer/temperature/wind speed and direction) | 14d | 2027-10-28 | 2027-11-16 | A18520 | 106d | 0d |
| A18540 |  | Installation and wiring of meteorological station data collector | 10d | 2027-11-17 | 2027-11-30 | A18530 | 106d | 0d |
| A18550 |  | Laying and wiring of meteorological station signal lines/power lines | 10d | 2027-11-17 | 2027-11-30 | A18530 | 116d | 10d |
| A18560 |  | Communication connection between the meteorological station and NCU/PVSCADA | 10d | 2027-12-01 | 2027-12-14 | A18540 | 106d | 0d |
| A18570 |  | QAQC inspection and acceptance of the meteorological station construction | 6d | 2027-12-15 | 2027-12-23 | A18560, A18550 | 106d | 60d |
|  | 3 | **Block 9-12** |  | 2027-10-14 | 2028-01-14 |  |  |  |
| A18580 |  | Construction of meteorological station mast foundation (concrete foundation) | 15d | 2027-10-14 | 2027-11-03 | A18510 | 46d | 0d |
| A18590 |  | Installation and fixation of meteorological mast | 10d | 2027-11-04 | 2027-11-17 | A18580 | 91d | 0d |
| A18600 |  | Installation of meteorological sensors (irradiometer/temperature/wind speed and direction) | 14d | 2027-11-18 | 2027-12-07 | A18590 | 91d | 0d |
| A18610 |  | Installation and wiring of meteorological station data collector | 10d | 2027-12-08 | 2027-12-22 | A18600 | 91d | 0d |
| A18620 |  | Laying and wiring of meteorological station signal lines/power lines | 10d | 2027-12-08 | 2027-12-22 | A18600 | 101d | 10d |
| A18630 |  | Communication connection between the meteorological station and NCU/PVSCADA | 10d | 2027-12-23 | 2028-01-06 | A18610 | 91d | 0d |
| A18640 |  | QAQC inspection and acceptance of the meteorological station construction | 6d | 2028-01-07 | 2028-01-14 | A18630, A18620 | 91d | 45d |
|  | 4 | **Block 13-16** |  | 2027-11-04 | 2028-02-04 |  |  |  |
| A18650 |  | Construction of meteorological station mast foundation (concrete foundation) | 15d | 2027-11-04 | 2027-11-24 | A18580 | 46d | 0d |
| A18660 |  | Installation and fixation of meteorological mast | 10d | 2027-11-25 | 2027-12-08 | A18650 | 76d | 0d |
| A18670 |  | Installation of meteorological sensors (irradiometer/temperature/wind speed and direction) | 14d | 2027-12-09 | 2027-12-30 | A18660 | 76d | 0d |
| A18680 |  | Installation and wiring of meteorological station data collector | 10d | 2027-12-31 | 2028-01-13 | A18670 | 76d | 0d |
| A18690 |  | Laying and wiring of meteorological station signal lines/power lines | 10d | 2027-12-31 | 2028-01-13 | A18670 | 86d | 10d |
| A18700 |  | Communication connection between the meteorological station and NCU/PVSCADA | 10d | 2028-01-14 | 2028-01-27 | A18680 | 76d | 0d |
| A18710 |  | QAQC inspection and acceptance of the meteorological station construction | 6d | 2028-01-28 | 2028-02-04 | A18700, A18690 | 76d | 30d |

| ID | WBS | Activity | Duration | Start | Finish | Predecessors | Total float | Free float |
| --- | --- | --- | --- | --- | --- | --- | --- | --- |
|  | 5 | **Block 17-19** |  | 2027-11-25 | 2028-02-25 |  |  |  |
| A18720 |  | Construction of meteorological station mast foundation (concrete foundation) | 15d | 2027-11-25 | 2027-12-15 | A18650 | 46d | 0d |
| A18730 |  | Installation and fixation of meteorological mast | 10d | 2027-12-17 | 2027-12-31 | A18720 | 61d | 0d |
| A18740 |  | Installation of meteorological sensors (irradiometer/temperature/wind speed and direction) | 14d | 2028-01-03 | 2028-01-20 | A18730 | 61d | 0d |
| A18750 |  | Installation and wiring of meteorological station data collector | 10d | 2028-01-21 | 2028-02-03 | A18740 | 61d | 0d |
| A18760 |  | Laying and wiring of meteorological station signal lines/power lines | 10d | 2028-01-21 | 2028-02-03 | A18740 | 71d | 10d |
| A18770 |  | Communication connection between the meteorological station and NCU/PVSCADA | 10d | 2028-02-04 | 2028-02-17 | A18750 | 61d | 0d |
| A18780 |  | QAQC inspection and acceptance of the meteorological station construction | 6d | 2028-02-18 | 2028-02-25 | A18770, A18760 | 61d | 15d |
|  | 6 | **Block 20-22** |  | 2027-12-17 | 2028-03-17 |  |  |  |
| A18790 |  | Construction of meteorological station mast foundation (concrete foundation) | 15d | 2027-12-17 | 2028-01-07 | A18720 | 46d | 0d |
| A18800 |  | Installation and fixation of meteorological mast | 10d | 2028-01-10 | 2028-01-21 | A18790 | 46d | 0d |
| A18810 |  | Installation of meteorological sensors (irradiometer/temperature/wind speed and direction) | 14d | 2028-01-24 | 2028-02-10 | A18800 | 46d | 0d |
| A18820 |  | Installation and wiring of meteorological station data collector | 10d | 2028-02-11 | 2028-02-24 | A18810 | 46d | 0d |
| A18830 |  | Laying and wiring of meteorological station signal lines/power lines | 10d | 2028-02-11 | 2028-02-24 | A18810 | 56d | 10d |
| A18840 |  | Communication connection between the meteorological station and NCU/PVSCADA | 10d | 2028-02-25 | 2028-03-09 | A18820 | 46d | 0d |
| A18850 |  | QAQC inspection and acceptance of the meteorological station construction | 6d | 2028-03-10 | 2028-03-17 | A18840, A18830 | 46d | 0d |
|  | 2 | **Grid Work** |  | 2026-10-14 | 2028-06-12 |  |  |  |
|  | 1 | **IPP Substataion** |  | 2027-02-19 | 2028-05-03 |  |  |  |
|  | 1 | **Civil** |  | 2027-02-19 | 2027-12-06 |  |  |  |
| A11450 |  | Site preparation / laying out / clearing the siteNew Activity | 20d | 2027-02-19 | 2027-03-18 | A9080, A10320 | 0d |  |
| A11460 |  | Excavation / backfilling / compaction of station area earthwork | 40d | 2027-03-19 | 2027-05-19 | A11450 | 0d |  |
| A11470 |  | Foundation of main transformer (including oil pit / oil containment / oil discharge) | 50d | 2027-05-20 | 2027-07-29 | A11460 | 80d | 0d |
| A11480 |  | 132kV equipment foundation (circuit breaker / disconnect switch / CT / PT / lightning arrester) | 40d | 2027-05-20 | 2027-07-15 | A11460 | 114d | 0d |
| A11490 |  | 33kV switch cabinet foundation and cable trench | 30d | 2027-05-20 | 2027-07-01 | A11460 | 80d | 0d |
| A11500 |  | Foundation of control building / switch room | 30d | 2027-05-20 | 2027-07-01 | A11460 | 0d |  |
| A11530 |  | Station roads / hardening | 30d | 2027-05-20 | 2027-07-01 | A11460 | 128d | 0d |
| A11560 |  | Installation of fences / gates | 30d | 2027-05-20 | 2027-07-01 | A10330, A11460 | 316d | 90d |
| A11510 |  | Main structure of control building | 60d | 2027-07-02 | 2027-09-27 | A11500 | 0d |  |
| A11540 |  | Cable trench / tunnel | 30d | 2027-07-02 | 2027-08-13 | A11490 | 80d | 60d |
| A11550 |  | Installation of grounding grid / welding / resistance testing | 30d | 2027-07-16 | 2027-08-27 | A11480, A10320 | 114d | 0d |
| A11520 |  | Roofing / decoration / doors and windows of control building | 30d | 2027-09-28 | 2027-11-08 | A11510 | 0d |  |
| A11570 |  | Completion cleaning / civil engineering acceptance | 20d | 2027-11-09 | 2027-12-06 | A11450, A11460, A11470, A11480, A11490, A11500, A11510, A11520, A11530, A11540, A11550, A11560 | 226d | 3d |

| ID | WBS | Activity | Duration | Start | Finish | Predecessors | Total float | Free float |
| --- | --- | --- | --- | --- | --- | --- | --- | --- |
|  | 2 | **Primary equipment installation** |  | 2027-07-02 | 2028-02-24 |  |  |  |
| A11650 |  | 33kV lightning arrester installation | 8d | 2027-07-02 | 2027-07-13 | A10130, A11490 | 132d | 118d |
| A11690 |  | light installation | 12d | 2027-07-02 | 2027-07-19 | A11530 | 128d | 114d |
| A11590 |  | 132kV circuit breaker installation | 16d | 2027-07-16 | 2027-08-06 | A10080, A11480 | 114d | 14d |
| A11600 |  | 132kV disconnect switch installation | 12d | 2027-07-16 | 2027-08-02 | A11480, A10090 | 118d | 18d |
| A11610 |  | 132kV CT installation | 12d | 2027-07-16 | 2027-08-02 | A10100, A11480 | 118d | 18d |
| A11620 |  | 132kV VT/PT installation | 10d | 2027-07-16 | 2027-07-29 | A11480, A10110 | 120d | 0d |
| A11630 |  | 132kV lightning arrester installation | 8d | 2027-07-16 | 2027-07-27 | A11480, A10130 | 122d | 108d |
| A11660 |  | NECRT station transformer installation | 10d | 2027-07-16 | 2027-07-29 | A11480, A10160, A11480 FF | 120d | 106d |
| A11670 |  | Diesel generator installation | 10d | 2027-07-16 | 2027-07-29 | A11480 | 120d | 106d |
| A11680 |  | 132kV pillar insulator installation | 8d | 2027-07-16 | 2027-07-27 | A11480 | 136d | 22d |
| A11700 |  | 132kV cable laying / termination | 20d | 2027-07-30 | 2027-08-27 | A11620, A10170, A10120 | 130d | 116d |
| A11580 |  | Main transformer installation / assembly / accessory installation | 40d | 2027-08-10 | 2027-10-05 | A11470, A10070 | 74d | 60d |
| A11720 |  | Equipment grounding connection | 16d | 2027-08-30 | 2027-09-20 | A11590, A11600, A11610, A11620, A11680, A11550 | 114d | 100d |
| A11640 |  | 33kV switch cabinet installation | 20d | 2027-11-09 | 2027-12-06 | A11490, A10140, A11520 | 0d |  |
| A11710 |  | 33kV cable laying / termination | 16d | 2027-12-07 | 2027-12-30 | A10180, A11640 | 14d | 0d |
| A11730 |  | Primary equipment testing (insulation/resistance/ratio/withstand voltage) | 30d | 2027-12-31 | 2028-02-10 | A11580, A11590, A11600, A11610, A11620, A11630, A11640, A11660, A11710, A11650, A11670, A11690 | 14d | 0d |
| A11740 |  | Primary installation QAQC acceptance | 10d | 2028-02-11 | 2028-02-24 | A11700, A11710, A11720, A11730 | 14d |  |
|  | 3 | **Secondary Equipment installation** |  | 2027-11-09 | 2028-05-03 |  |  |  |
| A11750 |  | Main transformer protection panel installation/connections | 12d | 2027-11-09 | 2027-11-24 | A11520, A10190, A10150 | 8d |  |
| A11760 |  | 132kV feeder protection installation/connections | 10d | 2027-11-09 | 2027-11-22 | A10200, A11520, A10210 | 10d |  |
| A11770 |  | 33kV protection and control installation | 16d | 2027-11-09 | 2027-11-30 | A11520, A10220 | 4d |  |
| A11780 |  | Boundary metering system installation | 16d | 2027-11-09 | 2027-11-30 | A10260, A11520 | 4d |  |
| A11790 |  | DC system installation (charger + battery + panel) | 16d | 2027-11-09 | 2027-11-30 | A11520, A10270, A10280 | 4d |  |
| A11840 |  | SAS automation system installation | 20d | 2027-11-09 | 2027-12-06 | A10230, A11520 | 0d |  |
| A11850 |  | SCADA system installation (PowerSCADA + server) | 12d | 2027-11-09 | 2027-11-24 | A11520, A10240 | 8d |  |
| A11870 |  | Communication system installation (Moxa/ODF/fiber optic/Kliq) | 16d | 2027-11-09 | 2027-11-30 | A10250, A11520 | 4d |  |
| A11880 |  | Fire protection system installation (gas fire suppression + alarm) | 20d | 2027-11-09 | 2027-12-06 | A11520, A10310 | 90d |  |
| A11890 |  | Secondary cable laying/termination/alignment | 40d | 2027-12-07 | 2028-02-02 | A10300, A11540, A11750, A11760, A11770, A11780, A11790, A11840, A11850, A11870 | 0d |  |
| A11900 |  | Protection device configuration/setting value entry/individual test | 30d | 2028-02-03 | 2028-03-15 | A11750, A11760, A11770, A11890, A10290 | 0d |  |
| A11910 |  | SAS/SCADA/communication configuration/point table verification | 24d | 2028-02-03 | 2028-03-07 | A11840, A11850, A11870, A11890 | 26d |  |
| A11920 |  | Metering device calibration | 10d | 2028-02-03 | 2028-02-16 | A11780, A11890 | 40d |  |
| A11930 |  | Interlock/trigger test | 20d | 2028-03-16 | 2028-04-13 | A11900, A11740 | 0d |  |
| A11940 |  | Secondary installation QAQC acceptance | 10d | 2028-04-18 | 2028-05-03 | A11900, A11910, A11920, A11930, A11880 | 0d |  |

| ID | WBS | Activity | Duration | Start | Finish | Predecessors | Total float | Free float |
| --- | --- | --- | --- | --- | --- | --- | --- | --- |
|  | 4 | **PPC&SCADA Construction** |  | 2027-11-09 | 2028-02-14 |  |  |  |
| A18860 |  | Installation of SCADA cabinets (in the control building) | 10d | 2027-11-09 | 2027-11-22 | A11520, A17530 | 49d | 0d |
| A18870 |  | Installation wiring of servers/workstations/switches | 20d | 2027-11-23 | 2027-12-21 | A18860 | 49d | 0d |
| A18880 |  | Communication connection between PPCSCADA and IPP switch station SCADA | 14d | 2027-12-22 | 2028-01-11 | A18870 | 49d | 0d |
| A18890 |  | Communication connection between PPCSCADA and higher-level dispatching/owner monitoring | 14d | 2028-01-12 | 2028-01-31 | A18880 | 49d | 0d |
| A18900 |  | QAQC inspection and acceptance of PPCSCADA construction | 10d | 2028-02-01 | 2028-02-14 | A18890 | 49d | 0d |
|  | 2 | **Switching Stataion** |  | 2026-10-14 | 2028-01-14 |  |  |  |
|  | 1 | **Civil** |  | 2026-10-14 | 2027-08-30 |  |  |  |
| A11950 |  | Site preparation / line laying | 20d | 2026-10-14 | 2026-11-10 | A9440 | 65d | 0d |
| A11960 |  | Site area earthwork / compaction | 40d | 2026-11-11 | 2027-01-08 | A11950 | 65d | 0d |
| A11970 |  | 132kV equipment foundation | 50d | 2027-01-11 | 2027-03-19 | A11960 | 145d | 0d |
| A11980 |  | Control building foundation | 30d | 2027-01-11 | 2027-02-19 | A11960 | 65d | 0d |
| A12010 |  | Station roads / hardening | 30d | 2027-01-11 | 2027-02-19 | A11960 | 405d | 110d |
| A12020 |  | Cable trench / tunnel | 30d | 2027-01-11 | 2027-02-19 | A11960 | 201d | 136d |
| A12040 |  | Fence / gate installation | 30d | 2027-01-11 | 2027-02-19 | A10590, A11960 | 405d | 110d |
| A11990 |  | Control building main structure | 60d | 2027-02-22 | 2027-05-20 | A11980 | 65d | 0d |
| A12030 |  | Grounding grid laying / testing | 30d | 2027-03-23 | 2027-05-06 | A11970, A10580 | 145d | 60d |
| A12000 |  | Control building roof / decoration | 50d | 2027-05-21 | 2027-07-30 | A11990 | 65d | 0d |
| A12050 |  | Completion cleaning / civil engineering acceptance | 20d | 2027-08-02 | 2027-08-30 | A11970, A12000, A12030, A12040, A12010, A12040 FF | 295d | 72d |
|  | 2 | **Primary equipment installation** |  | 2027-04-07 | 2027-11-16 |  |  |  |
| A12100 |  | Installation of 132kV busbars/mains | 30d | 2027-04-07 | 2027-05-19 | A11970, A10460 | 136d | 0d |
| A12110 |  | Installation of 132kV lightning arresters | 12d | 2027-04-07 | 2027-04-22 | A11970, A10470 | 174d | 98d |
| A12120 |  | Installation of support insulators | 16d | 2027-04-07 | 2027-04-29 | A10460, A11970 | 150d | 74d |
| A12070 |  | Installation of 132kV disconnectors | 30d | 2027-05-20 | 2027-07-01 | A10430, A11970 | 106d | 30d |
| A12080 |  | Installation of 132kV CTs | 20d | 2027-05-20 | 2027-06-17 | A11970, A10440 | 116d | 40d |
| A12090 |  | Installation of 132kV VT/PTs | 30d | 2027-05-20 | 2027-07-01 | A11970, A10450 | 106d | 30d |
| A12130 |  | Cable laying and termination for 132kV | 20d | 2027-05-20 | 2027-06-17 | A12100, A10570 | 136d | 60d |
| A12060 |  | Installation of 132kV circuit breakers | 30d | 2027-07-02 | 2027-08-13 | A11970, A10420 | 76d | 0d |
| A12140 |  | Equipment grounding connection | 20d | 2027-08-16 | 2027-09-10 | A12060, A12070, A12080, A12090, A12120, A12030 | 76d | 0d |
| A12150 |  | Primary equipment testing | 36d | 2027-09-13 | 2027-11-02 | A12060, A12070, A12080, A12090, A12100, A12110, A12130, A12140 | 76d | 0d |
| A12160 |  | Primary installation QAQC acceptance | 10d | 2027-11-03 | 2027-11-16 | A12130, A12140, A12150 | 76d | 11d |

| ID | WBS | Activity | Duration | Start | Finish | Predecessors | Total float | Free float |
| --- | --- | --- | --- | --- | --- | --- | --- | --- |
|  | 3 | **Secondary Equipment installation** |  | 2027-05-20 | 2028-01-14 |  |  |  |
| A12190 |  | Installation of junction boxes (CT/VT/lines/field plug-in boxes) | 26d | 2027-05-20 | 2027-06-25 | A10480, A10490, A11970 | 176d | 111d |
| A12170 |  | Installation/connections of HV feeder protection panels | 20d | 2027-08-02 | 2027-08-30 | A10480, A12000, A10500 | 71d | 6d |
| A12180 |  | Installation of bus tie protection + busbar protection | 12d | 2027-08-02 | 2027-08-18 | A10490, A12000 | 79d | 14d |
| A12200 |  | Installation of metering system | 26d | 2027-08-02 | 2027-09-07 | A10530, A12000 | 65d | 0d |
| A12210 |  | Installation of DC system (charger + battery + panel) | 26d | 2027-08-02 | 2027-09-07 | A10540, A10550, A12000 | 65d | 0d |
| A12220 |  | Installation of communication/ports servers | 15d | 2027-08-02 | 2027-08-23 | A10520, A12000 | 76d | 11d |
| A12230 |  | Cable laying/termination/line connection for secondary circuits | 36d | 2027-09-08 | 2027-10-28 | A10560, A12020, A12170, A12180, A12200, A12210, A12220 | 65d | 0d |
| A12240 |  | Protection configuration/setting/calibration of individual units | 24d | 2027-10-29 | 2027-12-01 | A12170, A12180, A12230 | 65d | 0d |
| A12250 |  | Communication/remote control debugging (NTCSA dispatch) | 16d | 2027-10-29 | 2027-11-19 | A12220, A12230 | 93d | 28d |
| A12260 |  | Meter calibration | 15d | 2027-10-29 | 2027-11-18 | A12200, A12230 | 94d | 29d |
| A12270 |  | Interlock/transmission tests | 20d | 2027-12-02 | 2027-12-31 | A12240, A12160, A12190 | 65d | 0d |
| A12280 |  | Secondary QAQC acceptance | 10d | 2028-01-03 | 2028-01-14 | A12240, A12250, A12260, A12270 | 65d | 0d |
|  | 3 | **OverHead Line** |  | 2027-04-22 | 2028-04-03 |  |  |  |
|  | 1 | **Foundation** |  | 2027-04-22 | 2027-09-06 |  |  |  |
| A8940 |  | Setting Out | 8d | 2027-04-22 | 2027-05-04 | A5740, A9780 | 0d |  |
| A8950 |  | Excavation of the foundation | 35d | 2027-05-05 | 2027-06-23 | A8940 | 0d |  |
| A8960 |  | Cleaning of the layer | 35d | 2027-05-07 | 2027-06-25 | A8950 SS+2d | 0d |  |
| A8970 |  | Rebar installation | 40d | 2027-05-14 | 2027-07-09 | A8960 SS+5d | 0d |  |
| A8980 |  | Embedment installation | 40d | 2027-05-14 | 2027-07-09 | A8970 SS | 0d |  |
| A8990 |  | shuttering | 40d | 2027-05-21 | 2027-07-16 | A8980 SS+5d | 0d |  |
| A9000 |  | Concrete Pouring | 40d | 2027-05-28 | 2027-07-23 | A8990 SS+5d | 0d |  |
| A9001 |  | Curing | 10d | 2027-07-26 | 2027-08-06 | A9000 | 0d |  |
| A9011 |  | QAQC Inspection | 5d | 2027-08-10 | 2027-08-16 | A9001 | 0d |  |
| A9021 |  | Backfilling | 10d | 2027-08-17 | 2027-08-30 | A9011 | 0d |  |
| A9031 |  | Foundation Final Inspection | 5d | 2027-08-31 | 2027-09-06 | A9021 | 0d |  |

| ID | WBS | Activity | Duration | Start | Finish | Predecessors | Total float | Free float |
| --- | --- | --- | --- | --- | --- | --- | --- | --- |
|  | 2 | **Eraction** |  | 2027-07-21 | 2027-11-25 |  |  |  |
| A11320 |  | Pole delivery and inspection | 10d | 2027-07-21 | 2027-08-03 | A10630 | 20d |  |
| A11330 |  | Tower erection (disassembly and assembly / overall hoisting) | 45d | 2027-09-02 | 2027-11-04 | A11320, A9031 SS+2d | 0d |  |
| A11340 |  | Tower position bolt tightening / inspection | 35d | 2027-09-09 | 2027-10-28 | A11330 SS+5d | 0d |  |
| A11350 |  | Grounding lead-down line installation | 5d | 2027-10-29 | 2027-11-04 | A11340 | 0d |  |
| A11360 |  | Tower erection QAQC Inspection | 15d | 2027-11-05 | 2027-11-25 | A11350 SS+5d | 0d |  |
|  | 3 | **Stringing** |  | 2027-11-26 | 2028-04-03 |  |  |  |
| A11370 |  | Line laying preparation / crossing frame erection | 20d | 2027-11-26 | 2027-12-24 | A10600, A10610, A10620, A10650, A10660, A11360 | 0d |  |
| A11380 |  | Conductor laying | 24d | 2027-12-28 | 2028-01-28 | A11370 | 0d |  |
| A11390 |  | Ground wire / OPGW laying | 20d | 2027-12-28 | 2028-01-24 | A11370 | 4d | 0d |
| A11430 |  | OPGW fusion splicing / testing | 16d | 2028-01-25 | 2028-02-15 | A11390 | 28d |  |
| A11400 |  | Tensioning / sag observation | 20d | 2028-01-31 | 2028-02-25 | A11380, A11390, A10640 | 0d |  |
| A11410 |  | Accessory installation (hanging / tension clamp) | 20d | 2028-02-28 | 2028-03-27 | A11400, A10650 | 0d |  |
| A11420 |  | Anti-vibration wire / spacer installation | 16d | 2028-02-28 | 2028-03-20 | A11400 | 4d |  |
| A11440 |  | Line cleaning / channel acceptance | 5d | 2028-03-28 | 2028-04-03 | A11410, A11420, A11430 | 0d |  |
|  | 4 | **Hera MTS** |  | 2026-12-24 | 2028-06-12 |  |  |  |
|  | 1 | **Civil** |  | 2026-12-24 | 2027-07-16 |  |  |  |
| A12290 |  | Construction permit / Power outage window application / Safety measures | 30d | 2026-12-24 | 2027-02-05 | A9991 | 49d | 0d |
| A12300 |  | Site preparation / Setting | 20d | 2027-02-08 | 2027-03-05 | A12290 | 49d | 0d |
| A12310 |  | 800MVA main transformer foundation (including oil pit / accident oil tank / fire wall) | 60d | 2027-03-08 | 2027-06-03 | A12300 | 143d | 10d |
| A12320 |  | 275kV equipment foundation (main transformer 3 + bus tie B) | 40d | 2027-03-08 | 2027-05-06 | A12300 | 133d | 0d |
| A12330 |  | 400kV equipment foundation (3 incoming lines of main transformer) | 40d | 2027-03-08 | 2027-05-06 | A12300 | 133d | 0d |
| A12340 |  | 50kA upgrade equipment foundation renovation | 30d | 2027-03-08 | 2027-04-21 | A12300, A12290 | 173d | 0d |
| A12350 |  | Cable trench / tunnel | 30d | 2027-03-08 | 2027-04-21 | A12300 | 213d | 80d |
| A12370 |  | Station roads / hardening | 20d | 2027-03-08 | 2027-04-07 | A12300 | 183d | 50d |
| A12360 |  | Grounding grid renovation / testing | 30d | 2027-05-07 | 2027-06-18 | A12320, A12330, A11310 | 133d | 0d |
| A12380 |  | Civil construction acceptance / handover | 20d | 2027-06-21 | 2027-07-16 | A12310, A12320, A12330, A12340, A12360, A12370 | 133d | 0d |

| ID | WBS | Activity | Duration | Start | Finish | Predecessors | Total float | Free float |
| --- | --- | --- | --- | --- | --- | --- | --- | --- |
|  | 2 | **Primary equipment installation** |  | 2027-04-22 | 2028-05-15 |  |  |  |
| A12610 |  | Upgrade to 50kA - Replacement of Grounding Switches | 10d | 2027-04-22 | 2027-05-06 | A12340, A12290, A11230 | 252d |  |
| A12620 |  | Upgrade to 50kA - Replacement of Pillar Insulators | 8d | 2027-04-22 | 2027-05-04 | A12340, A12290, A11240 | 254d |  |
| A12550 |  | Installation of 275/400kV Surge Arresters | 10d | 2027-05-07 | 2027-05-20 | A12320, A12330, A10760, A10770 | 222d |  |
| A12560 |  | Installation of 315kVA Station Transformers | 10d | 2027-05-07 | 2027-05-20 | A12320, A10780 | 222d |  |
| A12570 |  | Installation of 22kV Surge Arresters | 6d | 2027-05-07 | 2027-05-14 | A12320, A10790 | 226d |  |
| A12580 |  | Installation of Pillar Insulators | 12d | 2027-05-07 | 2027-05-24 | A12320, A12330, A10800 | 196d | 94d |
| A12590 |  | Upgrade to 50kA - Replacement of Disconnectors | 50d | 2027-06-01 | 2027-08-11 | A12340, A12290, A10810 | 185d |  |
| A12600 |  | Upgrade to 50kA - Replacement of CTs | 30d | 2027-06-01 | 2027-07-13 | A12340, A12290, A10820 | 205d |  |
| A12540 |  | Installation of 275/400kV Grounding Switches | 10d | 2027-06-21 | 2027-07-02 | A12320, A12330, A10740, A10750 | 192d |  |
| A12500 |  | Installation of 275kV Disconnectors | 20d | 2027-08-02 | 2027-08-30 | A12320, A10700 | 128d | 26d |
| A12510 |  | Installation of 400kV Disconnectors | 16d | 2027-08-02 | 2027-08-24 | A12330, A10710 | 132d | 30d |
| A12520 |  | Installation of 275kV CTs | 12d | 2027-08-02 | 2027-08-18 | A12320, A10720 | 136d | 34d |
| A12530 |  | Installation of 400kV CTs | 10d | 2027-08-02 | 2027-08-16 | A12330, A10730 | 138d | 36d |
| A12480 |  | Installation of 275kV Circuit Breakers | 16d | 2027-09-14 | 2027-10-06 | A12320, A10680 | 102d | 0d |
| A12490 |  | Installation of 400kV Circuit Breakers | 16d | 2027-09-14 | 2027-10-06 | A10690 | 102d | 0d |
| A12630 |  | Primary Cables/Earth Connections | 24d | 2027-10-07 | 2027-11-09 | A12480, A12490, A12500, A12510, A12520, A12530, A12580, A12360, A11290 | 102d |  |
| A12470 |  | Installation/Assembly of 800MVA Main Transformer/Accessories | 40d | 2028-01-18 | 2028-03-13 | A12310, A10670 | 0d |  |
| A12640 |  | Main transformer hot oil circulation/vacuum oil injection | 15d | 2028-03-14 | 2028-04-04 | A12470 | 0d |  |
| A12830 |  | Primary equipment test | 20d | 2028-04-05 | 2028-05-08 | A12480, A12490, A12500, A12510, A12520, A12530, A12630, A12640, A12540, A12550, A12560, A12570 | 0d |  |
| A12840 |  | Primary installation QAQC acceptance | 5d | 2028-05-09 | 2028-05-15 | A12630, A12650, A12590, A12600, A12610, A12620, A12830 | 0d |  |
|  | 3 | **Secondary Equipment installation** |  | 2027-05-07 | 2028-06-12 |  |  |  |
| A12660 |  | Installation of junction boxes (switchgear/main transformer/field plug-in box/TDB) | 16d | 2027-05-07 | 2027-05-28 | A11260, A12320, A12330 | 241d |  |
| A12650 |  | Installation of main transformer protection scheme/connections | 16d | 2027-07-19 | 2027-08-10 | A11250, A12380 | 137d | 4d |
| A12670 |  | Installation of communication system | 20d | 2027-07-19 | 2027-08-16 | A11270, A12380 | 133d | 0d |
| A12680 |  | Installation of remote control system | 20d | 2027-07-19 | 2027-08-16 | A11280, A12380 | 133d | 0d |
| A12690 |  | Secondary cable laying/termination | 30d | 2027-08-17 | 2027-09-28 | A11300, A12350, A12650, A12670, A12680 | 133d | 0d |
| A12700 |  | Protection configuration/setting/single unit testing | 24d | 2027-09-29 | 2027-11-01 | A12650, A12690 | 133d |  |
| A12710 |  | Remote control/communication debugging (NTCSA dispatch interface) | 24d | 2027-09-29 | 2027-11-01 | A12670, A12680, A12690 | 148d |  |
| A12720 |  | Interlock/transmission test | 15d | 2028-05-16 | 2028-06-05 | A12700, A12660, A12840 | 0d |  |
| A12730 |  | Secondary QAQC acceptance | 5d | 2028-06-06 | 2028-06-12 | A12700, A12710, A12720 | 0d |  |

| ID | WBS | Activity | Duration | Start | Finish | Predecessors | Total float | Free float |
| --- | --- | --- | --- | --- | --- | --- | --- | --- |
|  | 6 | **Ngwedi MTS** |  | 2027-04-22 | 2028-01-27 |  |  |  |
|  | 1 | **Civil** |  | 2027-04-22 | 2027-07-19 |  |  |  |
| A20410 |  | Setting Out | 3d | 2027-04-22 | 2027-04-26 | A5740 | 16d | 0d |
| A20420 |  | Site Clearance & Excavation | 10d | 2027-04-28 | 2027-05-11 | A20410 | 16d | 0d |
| A20430 |  | Equipment Foundations | 25d | 2027-05-12 | 2027-06-15 | A20420 | 16d | 0d |
| A20440 |  | Gantry Foundation & Erection | 20d | 2027-06-17 | 2027-07-14 | A20430 | 327d |  |
| A20450 |  | Cable Trench Construction | 15d | 2027-06-17 | 2027-07-07 | A20430 | 332d |  |
| A20460 |  | Earthing Grid Installation | 15d | 2027-06-17 | 2027-07-07 | A20430 | 324d | 0d |
| A20470 |  | Earthing Resistance Testing | 3d | 2027-07-08 | 2027-07-12 | A20460 | 324d | 0d |
| A20480 |  | Civil Completion & Acceptance | 5d | 2027-07-13 | 2027-07-19 | A20470 | 324d |  |
|  | 2 | **Primary** |  | 2027-06-17 | 2027-10-12 |  |  |  |
| A20490 |  | Post Insulator Installation | 10d | 2027-06-17 | 2027-06-30 | A20430, A20320 | 16d | 0d |
| A20500 |  | Disconnector Installation | 15d | 2027-07-01 | 2027-07-21 | A20490, A20270 | 16d | 0d |
| A20510 |  | Earth Switch Installation | 5d | 2027-07-22 | 2027-07-28 | A20500, A20280 | 38d | 0d |
| A20520 |  | Circuit Breaker Installation | 15d | 2027-07-22 | 2027-08-12 | A20500, A20260 | 16d | 0d |
| A20530 |  | CT/PT Installation | 10d | 2027-07-29 | 2027-08-12 | A20510, A20290, A20300 | 38d | 22d |
| A20540 |  | Surge Arrester Installation | 7d | 2027-07-29 | 2027-08-06 | A20510, A20310 | 41d | 25d |
| A20550 |  | Busbar & Dropper Installation | 15d | 2027-08-13 | 2027-09-02 | A20520, A20330 | 16d | 0d |
| A20560 |  | Equipment Grounding Connection | 7d | 2027-09-03 | 2027-09-13 | A20550 | 16d | 0d |
| A20570 |  | Primary Equipment Testing | 15d | 2027-09-14 | 2027-10-05 | A20560, A20530, A20540 | 16d | 0d |
| A20580 |  | Primary Installation Acceptance | 5d | 2027-10-06 | 2027-10-12 | A20570 | 265d |  |
|  | 3 | **Secondary** |  | 2027-10-06 | 2028-01-27 |  |  |  |
| A20590 |  | Protection Panel Installation | 7d | 2027-10-06 | 2027-10-14 | A20350, A20570 | 16d | 0d |
| A20600 |  | Junction Box Installation | 5d | 2027-10-15 | 2027-10-21 | A20590, A20380 | 16d | 0d |
| A20610 |  | Control Cable Laying | 15d | 2027-10-22 | 2027-11-11 | A20600, A20360 | 16d | 0d |
| A20620 |  | Secondary Wiring & Checking | 20d | 2027-11-12 | 2027-12-09 | A20610 | 16d | 0d |
| A20630 |  | Cable Termination | 10d | 2027-11-12 | 2027-11-25 | A20610, A20370 | 46d | 30d |
| A20640 |  | Protection Setting | 10d | 2027-12-10 | 2027-12-24 | A20620 | 16d | 0d |
| A20650 |  | Telecontrol & HMI Update | 10d | 2027-12-28 | 2028-01-10 | A20640 | 16d | 0d |
| A20660 |  | Labelling Installation | 5d | 2027-12-28 | 2028-01-03 | A20640 | 21d | 5d |
| A20670 |  | Cold & Hot Commissioning | 10d | 2028-01-11 | 2028-01-24 | A20650, A20630, A20660 | 16d | 0d |
| A20680 |  | Bay Acceptance | 3d | 2028-01-25 | 2028-01-27 | A20670 | 16d | 0d |

| ID | WBS | Activity | Type | Duration | Start | Finish | Predecessors | Total float | Free float | Constraint |
| --- | --- | --- | --- | --- | --- | --- | --- | --- | --- | --- |
|  | 6 | **Commissioning** |  |  | 2028-01-17 | 2028-10-03 |  |  |  |  |
|  | 1 | **Cold-Commissioning** |  |  | 2028-01-17 | 2028-08-01 |  |  |  |  |
|  | 1 | **PV Field** |  |  | 2028-05-02 | 2028-07-27 |  |  |  |  |
| A13470 |  | Commissioning Team on board | milestone | 0d | 2028-05-02 | 2028-05-02 | A7350, A7360 | 0d |  | start on or after 2028-05-01 |
|  | 1 | **Block 1-4 Cold-commissioning** |  |  | 2028-05-02 | 2028-05-15 |  |  |  |  |
| A13110 |  | Array insulation test |  | 2d | 2028-05-02 | 2028-05-03 | A13160, A13470 SS | 0d |  |  |
| A13120 |  | Transformer inspection |  | 2d | 2028-05-04 | 2028-05-05 | A13110, A13110 FF | 0d |  |  |
| A13130 |  | Inverter pre-commissioning |  | 3d | 2028-05-08 | 2028-05-10 | A13120, A13120 FF | 0d |  |  |
| A13140 |  | Earthing & communication test |  | 2d | 2028-05-11 | 2028-05-12 | A13130, A13130 FF | 0d |  |  |
| A13150 |  | Cold commissioning acceptance |  | 0.5d | 2028-05-15 | 2028-05-15 | A13140 | 0d |  |  |
|  | 2 | **Block 5-8 Cold-commissioning** |  |  | 2028-05-15 | 2028-05-26 |  |  |  |  |
| A13220 |  | Array insulation test |  | 2d | 2028-05-15 | 2028-05-17 | A13170, A13470 SS, A13150 | 0d |  |  |
| A13230 |  | Transformer inspection |  | 2d | 2028-05-17 | 2028-05-19 | A13220, A13220 FF | 0d |  |  |
| A13240 |  | Inverter pre-commissioning |  | 3d | 2028-05-19 | 2028-05-24 | A13230, A13230 FF | 0d |  |  |
| A13250 |  | Earthing & communication test |  | 2d | 2028-05-24 | 2028-05-26 | A13240, A13240 FF | 0d |  |  |
| A13260 |  | Cold commissioning acceptance |  | 0.5d | 2028-05-26 | 2028-05-26 | A13250 | 0d |  |  |
|  | 3 | **Block 9-12 Cold-commissioning** |  |  | 2028-05-29 | 2028-06-09 |  |  |  |  |
| A13270 |  | Array insulation test |  | 2d | 2028-05-29 | 2028-05-30 | A13180, A13470 SS, A13260 | 0d |  |  |
| A13280 |  | Transformer inspection |  | 2d | 2028-05-31 | 2028-06-01 | A13270, A13270 FF | 0d |  |  |
| A13290 |  | Inverter pre-commissioning |  | 3d | 2028-06-02 | 2028-06-06 | A13280, A13280 FF | 0d |  |  |
| A13300 |  | Earthing & communication test |  | 2d | 2028-06-07 | 2028-06-08 | A13290, A13290 FF | 0d |  |  |
| A13310 |  | Cold commissioning acceptance |  | 0.5d | 2028-06-09 | 2028-06-09 | A13300 | 0d |  |  |
|  | 4 | **Block 13-16 Cold-commissioning** |  |  | 2028-06-09 | 2028-06-23 |  |  |  |  |
| A13320 |  | Array insulation test |  | 2d | 2028-06-09 | 2028-06-13 | A13190, A13470 SS, A13310 | 4.5d | 0d |  |
| A13330 |  | Transformer inspection |  | 2d | 2028-06-13 | 2028-06-15 | A13320, A13320 FF | 4.5d | 0d |  |
| A13340 |  | Inverter pre-commissioning |  | 3d | 2028-06-15 | 2028-06-21 | A13330, A13330 FF | 4.5d | 0d |  |
| A13350 |  | Earthing & communication test |  | 2d | 2028-06-21 | 2028-06-23 | A13340, A13340 FF | 4.5d | 0d |  |
| A13360 |  | Cold commissioning acceptance |  | 0.5d | 2028-06-23 | 2028-06-23 | A13350 | 4.5d | 0d |  |

| ID | WBS | Activity | Duration | Start | Finish | Predecessors | Total float | Free float |
| --- | --- | --- | --- | --- | --- | --- | --- | --- |
|  | 5 | **Block 17-19 Cold-commissioning** |  | 2028-06-26 | 2028-07-07 |  |  |  |
| A13370 |  | Array insulation test | 2d | 2028-06-26 | 2028-06-27 | A13200, A13470 SS, A13360 | 4.5d | 0d |
| A13380 |  | Transformer inspection | 2d | 2028-06-28 | 2028-06-29 | A13370, A13370 FF | 4.5d | 0d |
| A13390 |  | Inverter pre-commissioning | 3d | 2028-06-30 | 2028-07-04 | A13380, A13380 FF | 4.5d | 0d |
| A13400 |  | Earthing & communication test | 2d | 2028-07-05 | 2028-07-06 | A13390, A13390 FF | 4.5d | 0d |
| A13410 |  | Cold commissioning acceptance | 0.5d | 2028-07-07 | 2028-07-07 | A13400 | 4.5d |  |
|  | 6 | **Block 20-22 Cold-commissioning** |  | 2028-07-14 | 2028-07-27 |  |  |  |
| A13420 |  | Array insulation test | 2d | 2028-07-14 | 2028-07-17 | A13210, A13470 SS, A13410 | 0d |  |
| A13430 |  | Transformer inspection | 2d | 2028-07-18 | 2028-07-19 | A13420, A13420 FF | 0d |  |
| A13440 |  | Inverter pre-commissioning | 3d | 2028-07-20 | 2028-07-24 | A13430, A13430 FF | 0d |  |
| A13450 |  | Earthing & communication test | 2d | 2028-07-25 | 2028-07-26 | A13440, A13440 FF | 0d |  |
| A13460 |  | Cold commissioning acceptance | 0.5d | 2028-07-27 | 2028-07-27 | A13450 | 0d |  |
|  | 2 | **Grid Work** |  | 2028-01-17 | 2028-08-01 |  |  |  |
|  | 1 | **IPP Station** |  | 2028-05-04 | 2028-07-03 |  |  |  |
| A12860 |  | Cold commissioning (without electrical interlock/operation/logic) | 15d | 2028-05-04 | 2028-05-24 | A11940 | 7d | 0d |
| A12870 |  | Approval of power receiving plan | 10d | 2028-05-04 | 2028-05-17 | A12860 SS | 12d |  |
| A12880 |  | First energization/shock closing | 5d | 2028-06-05 | 2028-06-09 | A12860, A12870, A12960, A12990 | 0d |  |
| A12910 |  | Remote control/measurement joint debugging (Eskom) | 10d | 2028-06-05 | 2028-06-19 | A12880 SS | 7.4d | 5d |
| A12890 |  | Load testing | 5d | 2028-06-12 | 2028-06-19 | A12880 | 2.4d | 0d |
| A12900 |  | Load-carrying protection calibration | 5d | 2028-06-20 | 2028-06-26 | A12890 | 2.4d | 0d |
| A12920 |  | IPP station handover and acceptance inspection | 5d | 2028-06-27 | 2028-07-03 | A12890, A12900, A12910 | 2.4d | 0d |
|  | 2 | **Switching Station** |  | 2028-01-17 | 2028-06-02 |  |  |  |
| A12940 |  | Cold Commissioning | 10d | 2028-01-17 | 2028-01-28 | A12280 | 65d | 0d |
| A12950 |  | Power supply scheme/scheduling approval | 10d | 2028-01-17 | 2028-01-28 | A12940 SS | 65d |  |
| A12960 |  | First energization/shock test | 5d | 2028-05-08 | 2028-05-12 | A12940, A12950, A13030 | 0d |  |
| A12980 |  | Remote control/ metering joint debugging | 8d | 2028-05-08 | 2028-05-17 | A12960 SS | 7d |  |
| A12970 |  | Load-carrying test/ protection calibration | 10d | 2028-05-15 | 2028-05-26 | A12960 | 0d |  |
| A12990 |  | SWS handover and acceptance inspection | 5d | 2028-05-29 | 2028-06-02 | A12970, A12980 | 0d |  |

| ID | WBS | Activity | Duration | Start | Finish | Predecessors | Total float | Free float |
| --- | --- | --- | --- | --- | --- | --- | --- | --- |
|  | 3 | **Overhead Line** |  | 2028-01-25 | 2028-05-05 |  |  |  |
| A13020 |  | Grounding resistance testing | 6d | 2028-01-25 | 2028-02-01 | A11390 | 53d |  |
| A13000 |  | Line parameter testing | 10d | 2028-04-04 | 2028-04-19 | A11440 | 0d |  |
| A13010 |  | Insulation resistance testing | 6d | 2028-04-04 | 2028-04-11 | A11440 | 4d |  |
| A13030 |  | OHL completion acceptance/transfer | 10d | 2028-04-20 | 2028-05-05 | A13000, A13010, A13020, A20750 | 0d |  |
|  | 4 | **MTS Station** |  | 2028-06-13 | 2028-08-01 |  |  |  |
| A13050 |  | Cold Comm (without power, interlock/logic/transmission) | 15d | 2028-06-13 | 2028-07-04 | A12730 | 0d |  |
| A13060 |  | Powering-in scheme/operation permission/power outage window | 10d | 2028-06-13 | 2028-06-27 | A13050 SS | 5d |  |
| A13070 |  | 800MVA main transformer energization | 5d | 2028-07-05 | 2028-07-11 | A13050, A13060 | 0d |  |
| A13090 |  | Remote control/measurement coordination (NTCSA) | 10d | 2028-07-05 | 2028-07-18 | A13070 SS | 5d |  |
| A13080 |  | Load testing/protection calibration | 10d | 2028-07-12 | 2028-07-25 | A13070 | 0d |  |
| A13100 |  | Hera MTS expansion handover | 5d | 2028-07-26 | 2028-08-01 | A13080, A13090 | 0d |  |
|  | 5 | **Ngwedi MTS** |  | 2028-01-28 | 2028-03-24 |  |  |  |
| A20690 |  | Cold Comm (without power, interlock/logic/transmission) | 21d | 2028-01-28 | 2028-02-25 | A20680 | 16d | 0d |
| A20700 |  | Powering-in scheme/operation permission/power outage window | 10d | 2028-01-28 | 2028-02-10 | A20690 SS | 16d | 0d |
| A20720 |  | Remote control/measurement coordination (NTCSA) | 10d | 2028-02-11 | 2028-02-24 | A20700 | 16d | 0d |
| A20730 |  | Load testing/protection calibration | 15d | 2028-02-25 | 2028-03-16 | A20720 | 16d | 0d |
| A20750 |  | Ngwedi MTS expansion handover | 5d | 2028-03-17 | 2028-03-24 | A20720, A20730 | 16d |  |
|  | 3 | **PPC&SCADA Commissioning** |  | 2028-02-15 | 2028-07-19 |  |  |  |
|  | 1 | **NCU Commissioning** |  | 2028-03-14 | 2028-05-22 |  |  |  |
| A18910 |  | NCU communication parameter configuration (IP address / protocol / baud rate) | 7d | 2028-03-14 | 2028-03-23 | A18370, A17620, A17770, A17920, A18070, A18220 | 31d | 0d |
| A18920 |  | NCU communication test with inverter (data acquisition verification) | 15d | 2028-03-24 | 2028-04-13 | A18910 | 31d | 0d |
| A18930 |  | NCU communication test with transformer box (data acquisition verification) | 10d | 2028-03-24 | 2028-04-06 | A18910 | 36d | 5d |
| A18940 |  | NCU data acquisition and storage function test | 7d | 2028-04-18 | 2028-04-26 | A18920, A18930 | 31d | 0d |
| A18950 |  | NCU joint debugging with PVSCADA (data upload verification) | 10d | 2028-04-28 | 2028-05-12 | A18940 | 31d | 0d |
| A18960 |  | NCU function test report preparation | 3d | 2028-05-15 | 2028-05-17 | A18950 | 31d | 0d |
| A18970 |  | NCU function test approval by the Client | 3d | 2028-05-18 | 2028-05-22 | A18960 | 31d | 0d |

| ID | WBS | Activity | Duration | Start | Finish | Predecessors | Total float | Free float |
| --- | --- | --- | --- | --- | --- | --- | --- | --- |
|  | 2 | **TCU Commissioning** |  | 2028-04-20 | 2028-06-26 |  |  |  |
| A18980 |  | TCU Control Parameter Configuration (Angle/Time/Threshold) | 7d | 2028-04-20 | 2028-05-02 | A18430, A17680, A17830, A17980, A18130, A18280 | 17d | 0d |
| A18990 |  | TCU Tracker Control Function Test (Angle Control/Feedback) | 15d | 2028-05-03 | 2028-05-23 | A18980 | 17d | 0d |
| A19000 |  | TCU Box Transformer Monitoring Function Test (Status/Alarm/Control) | 10d | 2028-05-03 | 2028-05-16 | A18980 | 22d | 5d |
| A19010 |  | TCU Communication Test with NCU (Data Upload Verification) | 7d | 2028-05-24 | 2028-06-01 | A18990, A19000 | 17d | 0d |
| A19020 |  | TCU and PPCSCADA Interoperation (Remote Control/Remote Signal Verification) | 10d | 2028-06-02 | 2028-06-15 | A19010 | 17d | 0d |
| A19030 |  | TCU Function Test Report Preparation | 3d | 2028-06-19 | 2028-06-21 | A19020 | 17d | 0d |
| A19040 |  | TCU Function Test Approved by Owner | 3d | 2028-06-22 | 2028-06-26 | A19030 | 17d | 0d |
|  | 3 | **Weather Station Commissioning** |  | 2028-03-20 | 2028-05-17 |  |  |  |
| A19050 |  | Parameter configuration of the meteorological data collector | 5d | 2028-03-20 | 2028-03-27 | A18850, A18500, A18570, A18640, A18710, A18780 | 46d | 0d |
| A19060 |  | Data calibration of meteorological sensors (irradiometer/temperature/wind speed and direction) | 10d | 2028-03-28 | 2028-04-10 | A19050 | 46d | 0d |
| A19070 |  | Test of data collection and storage functions of the meteorological station | 5d | 2028-04-11 | 2028-04-19 | A19060 | 46d | 0d |
| A19080 |  | Communication test between the meteorological station and NCU (data upload verification) | 5d | 2028-04-20 | 2028-04-26 | A19070 | 46d | 0d |
| A19090 |  | Joint debugging of the meteorological station with PPCSCADA (verification of meteorological data display) | 7d | 2028-04-28 | 2028-05-09 | A19080 | 46d | 0d |
| A19100 |  | Compilation of the function test report of the meteorological station | 3d | 2028-05-10 | 2028-05-12 | A19090 | 46d | 0d |
| A19110 |  | Approval of the function test by the owner of the meteorological station | 3d | 2028-05-15 | 2028-05-17 | A19100 | 46d | 13d |
|  | 4 | **PPC&SCADA configuration** |  | 2028-02-15 | 2028-07-19 |  |  |  |
| A19120 |  | Installation and initialization of SCADA software | 7d | 2028-02-15 | 2028-02-23 | A18900 | 49d | 0d |
| A19130 |  | Configuration of SCADA point tables and generation of real-time/historical databases | 15d | 2028-02-24 | 2028-03-15 | A19120 | 49d | 0d |
| A19140 |  | Configuration of HMI screens and functional testing | 15d | 2028-03-16 | 2028-04-06 | A19130 | 49d | 0d |
| A19150 |  | Testing of alarm/historical data/reporting functions | 10d | 2028-04-07 | 2028-04-24 | A19140 | 49d | 18d |
| A19160 |  | Integration with NCU system (data access verification) | 10d | 2028-05-23 | 2028-06-05 | A19150, A18950, A18970 | 31d | 0d |
| A19180 |  | Integration with meteorological station (meteorological data verification) | 5d | 2028-06-06 | 2028-06-12 | A19160, A19090, A19110 | 33d | 16d |
| A19170 |  | Integration with TCU system (control function verification) | 7d | 2028-06-27 | 2028-07-05 | A19160, A19020, A19040 | 17d | 0d |
| A19190 |  | Integration with superior dispatch/owner monitoring system | 10d | 2028-07-06 | 2028-07-19 | A19170, A19180 | 17d |  |

| ID | WBS | Activity | Duration | Start | Finish | Predecessors | Total float | Free float |
| --- | --- | --- | --- | --- | --- | --- | --- | --- |
|  | 2 | **Hot Commissioning** |  | 2028-07-04 | 2028-08-01 |  |  |  |
|  | 1 | **Block 1-4** |  | 2028-07-04 | 2028-07-07 |  |  |  |
| A13480 |  | PV array string connection | 0.5d | 2028-07-04 | 2028-07-04 | A13150, A13150 FF, A12920 | 2.4d | 0d |
| A13490 |  | Inverter Ramp up | 1d | 2028-07-04 | 2028-07-05 | A13480 | 2.4d | 0d |
| A13500 |  | MPPT & power quality test | 0.6d | 2028-07-05 | 2028-07-06 | A13490 | 2.4d | 0d |
| A13510 |  | Transformer & temperature rise test | 0.5d | 2028-07-06 | 2028-07-06 | A13500 | 2.4d | 0d |
| A13520 |  | Hot commissioning Complete | 0.5d | 2028-07-06 | 2028-07-07 | A13510 | 2.4d | 0d |
|  | 2 | **Block 5-8** |  | 2028-07-07 | 2028-07-12 |  |  |  |
| A13530 |  | PV array string connection | 0.5d | 2028-07-07 | 2028-07-07 | A13520, A13260 | 2.4d | 0d |
| A13540 |  | Inverter Ramp up | 1d | 2028-07-07 | 2028-07-10 | A13530 | 2.4d | 0d |
| A13550 |  | MPPT & power quality test | 0.6d | 2028-07-10 | 2028-07-11 | A13540 | 2.4d | 0d |
| A13560 |  | Transformer & temperature rise test | 0.5d | 2028-07-11 | 2028-07-11 | A13550 | 2.4d | 0d |
| A13570 |  | Hot commissioning Complete | 0.5d | 2028-07-11 | 2028-07-12 | A13560 | 2.4d | 0d |
|  | 3 | **Block 9-12** |  | 2028-07-12 | 2028-07-17 |  |  |  |
| A13580 |  | PV array string connection | 0.5d | 2028-07-12 | 2028-07-12 | A13570, A13310 | 2.4d | 0d |
| A13590 |  | Inverter Ramp up | 1d | 2028-07-12 | 2028-07-13 | A13580 | 2.4d | 0d |
| A13600 |  | MPPT & power quality test | 0.6d | 2028-07-13 | 2028-07-14 | A13590 | 2.4d | 0d |
| A13610 |  | Transformer & temperature rise test | 0.5d | 2028-07-14 | 2028-07-14 | A13600 | 2.4d | 0d |
| A13620 |  | Hot commissioning Complete | 0.5d | 2028-07-14 | 2028-07-17 | A13610 | 2.4d | 0d |
|  | 4 | **Block 13-16** |  | 2028-07-17 | 2028-07-20 |  |  |  |
| A13630 |  | PV array string connection | 0.5d | 2028-07-17 | 2028-07-17 | A13620, A13360 | 2.4d | 0d |
| A13640 |  | Inverter Ramp up | 1d | 2028-07-17 | 2028-07-18 | A13630 | 2.4d | 0d |
| A13650 |  | MPPT & power quality test | 0.6d | 2028-07-18 | 2028-07-19 | A13640 | 2.4d | 0d |
| A13660 |  | Transformer & temperature rise test | 0.5d | 2028-07-19 | 2028-07-19 | A13650 | 2.4d | 0d |
| A13670 |  | Hot commissioning Complete | 0.5d | 2028-07-19 | 2028-07-20 | A13660 | 2.4d | 0d |

| ID | WBS | Activity | Type | Duration | Start | Finish | Predecessors | Total float | Free float |
| --- | --- | --- | --- | --- | --- | --- | --- | --- | --- |
|  | 5 | **Block 17-19** |  |  | 2028-07-20 | 2028-07-25 |  |  |  |
| A13680 |  | PV array string connection |  | 0.5d | 2028-07-20 | 2028-07-20 | A13670, A13410 | 2.4d | 0d |
| A13690 |  | Inverter Ramp up |  | 1d | 2028-07-20 | 2028-07-21 | A13680 | 2.4d | 0d |
| A13700 |  | MPPT & power quality test |  | 0.6d | 2028-07-21 | 2028-07-24 | A13690 | 2.4d | 0d |
| A13710 |  | Transformer & temperature rise test |  | 0.5d | 2028-07-24 | 2028-07-24 | A13700 | 2.4d | 0d |
| A13720 |  | Hot commissioning Complete |  | 0.5d | 2028-07-25 | 2028-07-25 | A13710 | 2.4d | 2d |
|  | 6 | **Block 20-22** |  |  | 2028-07-27 | 2028-08-01 |  |  |  |
| A13730 |  | PV array string connection |  | 0.5d | 2028-07-27 | 2028-07-27 | A13720, A13460 | 0.4d | 0d |
| A13740 |  | Inverter Ramp up |  | 1d | 2028-07-28 | 2028-07-28 | A13730 | 0.4d | 0d |
| A13750 |  | MPPT & power quality test |  | 0.6d | 2028-07-31 | 2028-07-31 | A13740 | 0.4d | 0d |
| A13760 |  | Transformer & temperature rise test |  | 0.5d | 2028-07-31 | 2028-08-01 | A13750 | 0.4d | 0d |
| A13770 |  | Hot commissioning Complete |  | 0.5d | 2028-08-01 | 2028-08-01 | A13760 | 0.4d |  |
|  | 3 | **Grid Code Compliance** |  |  | 2028-08-02 | 2028-10-03 |  |  |  |
| 688 |  | Dry Run Test | resource dependent | 2d | 2028-08-02 | 2028-08-03 | A13770, A13100, A12920 | 0d |  |
| 689 |  | Dry Run Report | resource dependent | 3d | 2028-08-04 | 2028-08-08 | 688 | 0d |  |
| 690 |  | Dry Run Report Approval | resource dependent | 3d | 2028-08-10 | 2028-08-14 | 689 | 0d |  |
| 691 |  | Scada Functionality Test | resource dependent | 2d | 2028-08-15 | 2028-08-16 | 690, A19190 | 0d |  |
| 692 |  | Scada Functionality Report | resource dependent | 2d | 2028-08-17 | 2028-08-18 | 691 | 0d |  |
| 693 |  | Scada Functionality approval | resource dependent | 3d | 2028-08-21 | 2028-08-23 | 692 | 0d |  |
| 694 |  | Notice to Retec for Grid Code Test | resource dependent | 3d | 2028-08-24 | 2028-08-28 | 693 | 0d |  |
| 695 |  | Retec - Grid Code Test | resource dependent | 2d | 2028-08-29 | 2028-08-30 | 694 | 0d |  |
| 696 |  | Grid Code Test Report | resource dependent | 5d | 2028-08-31 | 2028-09-06 | 695 | 0d |  |
| 697 |  | Retec Grid Code Test Report Approval | resource dependent | 5d | 2028-09-07 | 2028-09-13 | 696 | 0d |  |
| 698 |  | IE Report | resource dependent | 5d | 2028-09-14 | 2028-09-20 | 697 | 0d |  |
| 699 |  | Eskom Approval of IE Report | resource dependent | 5d | 2028-09-21 | 2028-09-28 | 698 | 0d |  |
| 700 |  | Grid Complaince & Operations Certificate | resource dependent | 2d | 2028-09-29 | 2028-10-02 | 699 | 0d |  |
| 701 |  | Commercial Operation Date | resource dependent | 0d | 2028-10-03 | 2028-10-03 | 700 | 0d |  |

| ID | WBS | Activity | Type | Duration | Start | Finish | Predecessors | Total float |
| --- | --- | --- | --- | --- | --- | --- | --- | --- |
|  | 7 | **Taking Over** |  |  | 2028-10-03 | 2028-10-31 |  |  |
| A15680 |  | Punch Item close |  | 21d | 2028-10-03 | 2028-10-31 | 701 | 0d |
| A15690 |  | Handover certificate | milestone | 0d | 2028-10-31 | 2028-10-31 | A15680 | 0d |
